# NITRIC ACID COMPLEX - Rev-03 (Updated)

Schedule from Primavera P6, 2016-09-29 to 2018-10-31, data date 2018-01-01, costs in INR, A marks actual dates.

## Calendars

- Standard 5 Day Workweek w/ Basic Holidays: Mon-Fri 09:00-13:00, 14:00-18:00; Sat-Sun off. Exceptions (off unless hours are given): 2017-03-04 08:00-16:00, 2017-08-15, 2018-01-26.
- Monsoon: Mon-Fri 09:00-13:00, 14:00-18:00; Sat-Sun off. Exceptions (off unless hours are given): 2017-06-01 to 2017-06-02, 2017-06-05 08:00-16:00, 2017-06-06, 2017-06-07 08:00-16:00, 2017-06-08, 2017-06-09 08:00-16:00, 2017-06-12 to 2017-06-16, 2017-06-19 08:00-16:00, 2017-06-20, 2017-06-21 08:00-16:00, 2017-06-22, 2017-06-23 08:00-16:00, 2017-06-26 to 2017-06-30, 2017-07-03 to 2017-07-07, 2017-07-10 08:00-16:00, 2017-07-11, 2017-07-12 08:00-16:00, 2017-07-13, 2017-07-14 08:00-16:00, 2017-07-17 to 2017-07-21, 2017-07-24 08:00-16:00, 2017-07-25, 2017-07-26 08:00-16:00, 2017-07-27, 2017-07-28 08:00-16:00, 2017-07-31 to 2017-08-04, 2017-08-07 to 2017-08-11 08:00-16:00, 2017-08-14 to 2017-08-18, 2017-08-21 to 2017-08-25 08:00-16:00, 2017-08-28 to 2017-08-31 08:00-16:00.

## Resources

| Resource | Group | Rate |
| --- | --- | --- |
| MH-Wtg | labor | 450 |

## Schedule

| ID | WBS | Activity | Type | Duration | Start | Finish | Predecessors | Complete | Planned start | Planned finish | Total float | Free float |
| --- | --- | --- | --- | --- | --- | --- | --- | --- | --- | --- | --- | --- |
| 000001 |  | Effective Date of Contract (EDOC) | milestone | 0d | 2016-09-29 A | 2016-09-29 A |  | 100% |  |  |  |  |
|  | 5 | **Key Milestones (Deleted)** |  |  | 2016-10-25 | 2018-04-18 |  |  |  |  |  |  |
| 000005 |  | Enquiry for Soil testing (Bore hole locations & BOQ) | milestone | 0d | 2016-10-25 A | 2016-10-25 A | 103249 | 100% |  |  |  |  |
| 000004 |  | Drgs/Docs for obtaining NOC/CTE | milestone | 0d | 2016-11-21 A | 2016-11-21 A | 100430 | 100% |  |  |  |  |
| 000006 |  | Ordering of Soil testing | milestone | 0d | 2016-11-29 A | 2016-11-29 A | 113106 | 100% |  |  |  |  |
| 000002 |  | Finalisation of Plot plan | milestone | 0d | 2017-01-10 A | 2017-01-10 A | 103410 | 100% |  |  |  |  |
| 000007 |  | Availability of Soil test reports | milestone | 0d | 2017-01-21 A | 2017-01-21 A | 100030 | 100% | 2017-01-20 | 2017-01-20 |  |  |
| 000030 |  | Enquiry for 220KV Switchyard | milestone | 0d | 2017-01-23 A | 2017-01-23 A |  | 100% |  |  |  |  |
| 000020 |  | Enquiry for Boiler package | milestone | 0d | 2017-01-25 A | 2017-01-25 A |  | 100% |  |  |  |  |
| 000018 |  | Enquiry for Long delivery static equipments | milestone | 0d | 2017-01-27 A | 2017-01-27 A | 103360 SS+20d | 100% |  |  |  |  |
| 000008 |  | Tender for Piling work | milestone | 0d | 2017-01-30 A | 2017-01-30 A | 103250 | 100% |  |  |  |  |
| 000013 |  | Commencement of Piling work | milestone | 0d | 2018-01-01 | 2018-01-01 | A112920 SS |  |  |  | 217d |  |
| 000014 |  | Commencement of Civil & Structural work | milestone | 0d | 2018-01-01 | 2018-01-01 | A125490 SS |  |  |  | 217d |  |
| 000029 |  | Commencement of Fire water piping | milestone | 0d | 2018-01-01 | 2018-01-01 |  |  |  |  | 217d |  |
| 000032 |  | Commencement of Switchyard erection | milestone | 0d | 2018-01-01 | 2018-01-01 |  |  |  |  | 217d |  |
| 000036 |  | Commencement of Pre-Commissioning activities | milestone | 0d | 2018-01-01 | 2018-01-01 |  |  |  |  | 217d |  |
| 000003 |  | Obtaining consent for 220KV Power (Deleted) | milestone | 0d | 2018-01-01 | 2018-01-01 | 000001 FS+23d |  |  |  | 217d |  |
| 000008.1 |  | Tender for Civil work (Part-1) | milestone | 0d | 2018-01-01 | 2018-01-01 |  |  |  |  | 182d | 0d |
| 000008.3 |  | Ordering of PEB structure | milestone | 0d | 2018-01-01 | 2018-01-01 | 113112 |  |  |  | 207d | 0d |
| 000008.5 |  | Availability of PEB foundation bolts | milestone | 0d | 2018-01-01 | 2018-01-01 | A125490 SS+5d |  |  |  | 217d |  |
| 000009 |  | Ordering of Piling work | milestone | 0d | 2018-01-01 | 2018-01-01 | 113110 |  |  |  | 217d |  |
| 000019 |  | Ordering of Long delivery static equipments | milestone | 0d | 2018-01-01 | 2018-01-01 | 113170 SS+10d |  |  |  | 217d |  |
| 000021 |  | Ordering of Boiler package | milestone | 0d | 2018-01-01 | 2018-01-01 | 112870 |  |  |  | 217d |  |
| 000023 |  | Enquiry for Cooling tower package | milestone | 0d | 2018-01-01 | 2018-01-01 | 100160 |  |  |  | 217d |  |
| 000024 |  | Ordering of Cooling tower package | milestone | 0d | 2018-01-01 | 2018-01-01 | 112850 |  |  |  | 217d |  |
| 000026 |  | Enquiry for Fire water network | milestone | 0d | 2018-01-01 | 2018-01-01 | 100140 |  |  |  | 217d |  |
| 000027 |  | Ordering of Fire water network | milestone | 0d | 2018-01-01 | 2018-01-01 | 112830 |  |  |  | 217d |  |
| 000031 |  | Ordering of 220KV Switchyard | milestone | 0d | 2018-01-01 | 2018-01-01 |  |  |  |  | 217d |  |
| 000033 |  | Charging of electrical substation | milestone | 0d | 2018-01-01 | 2018-01-01 |  |  |  |  | 197d | 0d |
| 000035 |  | Installation Completion | milestone | 0d | 2018-01-01 | 2018-01-01 |  |  |  |  | 217d |  |
| 000037 |  | Achievement of Mechanical Completion | milestone | 0d | 2018-01-01 | 2018-01-01 |  |  |  |  | 217d |  |
| 000008.4 |  | Deisgn approval of PEB structure | milestone | 0d | 2018-01-15 | 2018-01-15 | 000008.3 FS+10d |  |  |  | 207d |  |
| 000013.1 |  | Completion of piling Work | milestone | 0d | 2018-01-29 | 2018-01-29 | A112920, A113400, A117550 |  |  |  | 197d |  |
| 000034 |  | Commissioning of Utilities | milestone | 0d | 2018-01-30 | 2018-01-30 | 000033 FS+20d |  |  |  | 197d |  |
| 000017 |  | Completion of WNA equipment refurbishment | milestone | 0d | 2018-01-31 | 2018-01-31 | A112821 |  |  |  | 195d |  |
| 000015 |  | Commencement of Mechanical erection & Piping | milestone | 0d | 2018-02-08 | 2018-02-08 | A113920 SS |  |  |  | 190d |  |
| 000008.2 |  | Ordering of Civil work (Part-1) | milestone | 0d | 2018-02-20 | 2018-02-20 | 000008.1 FS+35d |  |  |  | 182d |  |
| 000028 |  | Completion of WBM roads | milestone | 0d | 2018-02-26 | 2018-02-26 | A100010 |  |  |  | 177d |  |
| 000022 |  | Commencement of Boiler erection | milestone | 0d | 2018-03-06 | 2018-03-06 | A117580 SS |  |  |  | 172d |  |
| 000025 |  | Commencement of civil work for Cooling tower | milestone | 0d | 2018-03-20 | 2018-03-20 | A119640 SS |  |  |  | 162d |  |
| 000010 |  | NOC/CTE for site work | milestone | 0d | 2018-03-26 | 2018-03-26 | 100040 |  |  |  | 157d |  |
| 000016 |  | Commencement of E & I installation | milestone | 0d | 2018-04-02 | 2018-04-02 | A113510 SS |  |  |  | 153d |  |
| 000011 |  | Plot levelling and grading | milestone | 0d | 2018-04-18 | 2018-04-18 | 100041 |  |  |  | 140d |  |
| 000012 |  | Construction Power, water & other facilities at site | milestone | 0d | 2018-04-18 | 2018-04-18 | 100042 |  |  |  | 140d |  |

Notes:
- 000008.2: Basis & Assumptions: 15 days offer receipt / 10 days TR preparation / 10 days ordering

| ID | WBS | Activity | Duration | Start | Finish | Predecessors | Complete | Remaining | Planned start | Planned finish | Total float | Free float | Constraint | Resources | Cost | Actual cost | UNIT DESCRIPTION |
| --- | --- | --- | --- | --- | --- | --- | --- | --- | --- | --- | --- | --- | --- | --- | --- | --- | --- |
|  | 1 | **General Obligations (Deleted)** |  | 2016-09-30 | 2018-04-18 |  |  |  |  |  |  |  |  |  |  |  |  |
| 100020 |  | Drgs & Docs for existing ISBL Plants | 93d | 2016-09-30 A | 2017-02-07 A | 000001 | 100% |  |  |  |  |  |  |  |  |  |  |
| 100040 |  | Obtaining NOC/CTE | 111d | 2016-11-22 A | 2018-03-26 | 100430 | 46% | 60d | 2016-11-22 | 2017-04-25 | 140d | 0d |  |  |  |  |  |
| 100030 |  | Soil testing and report | 39d | 2016-11-29 A | 2017-01-21 A | 113106 | 100% |  | 2016-11-29 | 2017-01-20 |  |  |  |  |  |  |  |
| 100041 |  | Plot levelling and grading | 17d | 2018-03-27 | 2018-04-18 | 100040 |  |  |  |  | 140d | 0d |  |  |  |  |  |
| 100042 |  | Construction Power, water & other facilities at site | 15d | 2018-03-29 | 2018-04-18 | 100041 FF |  |  |  |  | 140d | 0d |  |  |  |  |  |
|  | 2 | **Engineering & Proc. Assistance** |  | 2016-10-06 | 2018-05-18 |  |  |  |  |  |  |  |  |  |  |  |  |
|  | 1 | **Engineering** |  | 2016-10-06 | 2018-04-24 |  |  |  |  |  |  |  |  |  |  |  |  |
|  | 1 | **Process** |  | 2016-10-28 | 2018-01-19 |  |  |  |  |  |  |  |  |  |  |  |  |
|  | 1 | **Basic Documents** |  | 2016-10-28 | 2017-04-07 |  |  |  |  |  |  |  |  |  |  |  |  |
| 100050 |  | Process design basis | 86d | 2016-10-28 A | 2017-02-24 A | 000001 | 100% |  |  |  |  |  | start on 2016-10-28 | MH-Wtg [81.52 h] | 36,684 | 36,684 | 003 |
| 100050.1 |  | Utility concept notes | 76d | 2016-12-05 A | 2017-03-17 A |  | 100% |  |  |  |  |  | start on 2016-12-05 | MH-Wtg [81.52 h] | 36,684 | 36,684 | 003 |
| 100060 |  | Equipment list for WNA Plant | 55d | 2016-12-15 A | 2017-03-01 A | 100080 FF | 100% |  |  |  |  |  | start on 2016-12-15 | MH-Wtg [61.14 h] | 27,513 | 27,513 | 001 |
| 100061 |  | Equipment list for CNA Plants | 52d | 2016-12-15 A | 2017-02-24 A | 100081 | 100% |  |  |  |  |  | start on 2016-12-15 | MH-Wtg [24.46 h] | 11,007 | 11,007 | 002 |
| 100070 |  | Utility consumer list for WNA Plant | 34d | 2017-01-23 A | 2017-03-08 A | 100060 FF | 100% |  |  |  |  |  | start on 2017-01-23 | MH-Wtg [81.52 h] | 36,684 | 36,684 | 001 |
| 100051 |  | Preparation of PFD/UFD for Offsites & Utilities | 37d | 2017-01-27 A | 2017-03-17 A | 100050.1 FF | 100% |  |  |  |  |  | start on 2017-01-27 | MH-Wtg [326.08 h] | 146,736 | 146,736 | 003 |
| 100190 |  | Utility consumer list for CNA Plants | 30d | 2017-01-27 A | 2017-03-08 A | 100061, 100070 FF | 100% |  |  |  |  |  | start on 2017-01-27 | MH-Wtg [32.61 h] | 14,675 | 14,675 | 002 |
| 100050.2 |  | Concept note for ammonia tanker unloading | 42d | 2017-02-10 A | 2017-04-07 A |  | 100% |  |  |  |  |  | start on 2017-02-10 | MH-Wtg [40.76 h] | 18,342 | 18,342 | 003 |
| 100062 |  | Equipment list for Offsites & Utilites | 2d | 2017-02-28 A | 2017-03-01 A | 100051 FF | 100% |  |  |  |  |  |  | MH-Wtg [36.68 h] | 16,506 | 16,506 | 003 |
| 100191 |  | Utility consumer list for Offistes & Utilities | 17d | 2017-03-07 A | 2017-03-29 A | 100062 | 100% |  |  |  |  |  |  | MH-Wtg [48.91 h] | 22,010 | 22,010 | 003 |
|  | 2 | **Detail Documents** |  | 2016-12-23 | 2018-01-12 |  |  |  |  |  |  |  |  |  |  |  |  |
| 100081 |  | Updating P&IDs for CNA Plants | 51d | 2016-12-23 A | 2017-03-03 A |  | 100% |  |  |  |  |  | start on 2016-12-23 | MH-Wtg [61.14 h] | 27,513 | 27,513 | 002 |
| 100080 |  | Updating P&IDs for WNA Plant | 154d | 2016-12-29 A | 2017-07-31 A |  | 100% |  |  |  |  |  | start on 2016-12-29 | MH-Wtg [61.14 h] | 27,513 | 27,513 | 001 |
| 100130 |  | Hydraulic calculations for WNA Plant | 18d | 2016-12-29 A | 2017-01-23 A | 100080 | 100% |  |  |  |  |  |  | MH-Wtg [146.74 h] | 66,033 | 66,033 | 003 |
| 100091 |  | Datasheets for Offsite fabricated equipments | 125d | 2017-02-28 A | 2017-08-21 A | 100060 SS-3d | 100% |  |  |  |  |  |  | MH-Wtg [489.12 h] | 220,104 | 220,104 | 003 |
| 100090 |  | Preparation of P&IDs for Offsite & Utilities | 76d | 2017-03-17 A | 2017-06-30 A | 100051 FS-15d, 100050.2 FF | 100% |  |  |  |  |  |  | MH-Wtg [855.96 h] | 385,182 | 385,182 | 003 |
| 101350 |  | Hydarulic calculations for Offsites & Utilities | 3d | 2017-03-17 A | 2017-03-21 A | 100090 FF | 100% |  |  |  |  |  |  | MH-Wtg [97.82 h] | 44,019 | 44,019 | 003 |
| 100110 |  | Preparation of Process interlock list | 66d | 2017-03-29 A | 2017-06-28 A | 100080, 100081, 100090 FF | 100% |  |  |  |  |  |  | MH-Wtg [244.56 h] | 110,052 | 110,052 | 003 |
| 100120 |  | Line list for WNA Plant | 74d | 2017-04-01 A | 2017-07-13 A | 100121 FF | 100% |  | 2017-04-03 | 2017-07-13 |  |  |  | MH-Wtg [73.37 h] | 33,017 | 33,017 | 001 |
| 100121 |  | Line list for CNA Plants | 65d | 2017-04-01 A | 2017-06-30 A | 100081 | 100% |  | 2017-04-03 | 2017-06-30 |  |  |  | MH-Wtg [48.91 h] | 22,010 | 22,010 | 002 |
| 100100 |  | Datasheet for WNA Plant fabricated equipments | 106d | 2017-04-13 A | 2017-09-08 A |  | 100% |  |  |  |  |  |  | MH-Wtg [122.28 h] | 55,026 | 55,026 | 001 |
| 100122 |  | Line list for Offsites & Utilities | 1d | 2017-06-30 A | 2017-06-30 A | 100090 FF | 100% |  |  |  |  |  |  | MH-Wtg [122.28 h] | 55,026 | 55,026 | 003 |
| 101350.1 |  | Hazop study | 9d | 2017-09-26 A | 2017-10-06 A | 100080, 100081, 100090 | 100% |  |  |  |  |  | start on or after 2017-09-25 | MH-Wtg [48.91 h] | 22,010 | 22,010 | 003 |
| 100100.1 |  | ESS & ESD for additional scope (MOM-078) equipments | 1d | 2017-12-05 A | 2017-12-05 A |  | 100% |  |  |  |  |  |  |  |  |  | 003 |
| 101350.2 |  | Hazardous material handling procedure (Deleted) | 10d | 2018-01-01 | 2018-01-12 | 100340 |  |  |  |  | 207d |  | finish on or after 2017-09-15 | MH-Wtg |  |  | 003 |
| 101350.3 |  | Coal handling procedure (Deleted) | 9d | 2018-01-01 | 2018-01-11 | 100340 |  |  |  |  | 208d |  | finish on or after 2017-08-16 | MH-Wtg |  |  | 003 |

| ID | WBS | Activity | Duration | Start | Finish | Predecessors | Complete | Planned start | Planned finish | Total float | Constraint | Resources | Cost | Actual cost | UNIT DESCRIPTION |
| --- | --- | --- | --- | --- | --- | --- | --- | --- | --- | --- | --- | --- | --- | --- | --- |
|  | 3 | **Enquiry/Tenders** |  | 2016-12-02 | 2018-01-19 |  |  |  |  |  |  |  |  |  |  |
| 100180 |  | Enquiry for Boiler package (Deleted) | 39d | 2016-12-02 A | 2017-01-25 A |  | 100% | 2017-03-01 | 2017-04-24 |  | start on 2016-12-02 | MH-Wtg |  |  | 003 |
| 100160 |  | Enquiry for Cooling tower package | 58d | 2016-12-09 A | 2017-02-28 A |  | 100% |  |  |  | start on 2016-12-09 | MH-Wtg [390.52 h] | 175,734 | 175,734 | 003 |
| 100150 |  | Enquiry for Raw water treatment plant | 19d | 2016-12-28 A | 2017-01-23 A |  | 100% |  |  |  | start on 2016-12-28 | MH-Wtg [390.52 h] | 175,734 | 175,734 | 003 |
| 100320 |  | Enquiry for Chiller unit | 19d | 2016-12-28 A | 2017-01-23 A |  | 100% |  |  |  | start on 2016-12-28 | MH-Wtg [146.44 h] | 65,898 | 65,898 | 003 |
| 100290 |  | Enquiry for Agitators | 12d | 2017-01-16 A | 2017-01-31 A | 100280 | 100% |  |  |  |  | MH-Wtg [25 h] | 11,250 | 11,250 | 002 |
| 100241 |  | Enquiry for API pumps- CNA Plants | 44d | 2017-01-27 A | 2017-03-28 A | 100240 SS | 100% |  |  |  |  | MH-Wtg [97.63 h] | 43,934 | 43,934 | 002 |
| 100170 |  | Enquiry for DM plant | 24d | 2017-02-02 A | 2017-03-06 A | 100300 | 100% |  |  |  | start on 2017-02-02 | MH-Wtg [146.44 h] | 65,898 | 65,898 | 003 |
| 100140 |  | Enquiry for Fire fighting package | 8d | 2017-02-13 A | 2017-02-22 A | 103410 | 100% |  |  |  |  | MH-Wtg [488.15 h] | 219,668 | 219,668 | 003 |
| 100410.1 |  | Enquiry for Ejectors | 49d | 2017-02-13 A | 2017-04-19 A |  | 100% |  |  |  | finish on or after 2017-02-13 | MH-Wtg [122.04 h] | 54,918 | 54,918 | 002 |
| 100270 |  | Enquiry for Metering pumps | 136d | 2017-02-15 A | 2017-08-23 A | 100290 | 100% |  |  |  |  | MH-Wtg [97.63 h] | 43,934 | 43,934 | 003 |
| 100300 |  | Enquiry for Air compressor | 43d | 2017-02-28 A | 2017-04-26 A | 100150 | 100% |  |  |  | finish on or after 2017-02-28 | MH-Wtg [146.44 h] | 65,898 | 65,898 | 003 |
| 100310 |  | Enquiry for Air drier | 43d | 2017-02-28 A | 2017-04-26 A | 100300 FF | 100% |  |  |  |  | MH-Wtg [97.63 h] | 43,934 | 43,934 | 003 |
| 100260 |  | Enquiry for Cooling water pumps | 47d | 2017-03-21 A | 2017-05-24 A | 100160 | 100% |  |  |  |  | MH-Wtg [244.07 h] | 109,832 | 109,832 | 003 |
| 100240 |  | Enquiry for Non-API pumps- WNA Plant | 22d | 2017-03-30 A | 2017-04-28 A | 100130 SS | 100% |  |  |  |  | MH-Wtg [195 h] | 87,750 | 87,750 | 001 |
| 100181 |  | Enquiry CPP Package (By DFPCL) | 80d | 2017-04-07 A | 2017-07-27 A |  | 100% |  |  |  |  |  |  |  | 003 |
| 100200 |  | Enquiry for ETP package | 15d | 2017-04-18 A | 2017-05-08 A | 100170 FS-4d | 100% |  |  |  |  | MH-Wtg [390.52 h] | 175,734 | 175,734 | 003 |
| 100410.7 |  | Enquiry for Deareator | 14d | 2017-04-28 A | 2017-05-17 A |  | 100% |  |  |  | finish on or after 2017-05-08 |  |  |  | 001 |
| 100410.4 |  | Enquiry for Filters | 18d | 2017-05-06 A | 2017-05-31 A |  | 100% | 2017-05-08 | 2017-05-31 |  | finish on or after 2017-04-28 |  |  |  | 001 |
| 100410.3 |  | Enquiry for Inlet air filter | 4d | 2017-05-17 A | 2017-05-22 A |  | 100% |  |  |  | finish on or after 2017-04-25 |  |  |  | 001 |
| 100250 |  | Enquiry for Non-API pumps | 1d | 2017-05-30 A | 2017-05-30 A | 101350 SS | 100% |  |  |  |  | MH-Wtg [586 h] | 263,700 | 263,700 | 003 |
| 100220 |  | Enquiry for Side stream filter package | 7d | 2017-06-01 A | 2017-06-09 A | 100260 | 100% |  |  |  | finish on or after 2017-04-12 | MH-Wtg [73.22 h] | 32,949 | 32,949 | 003 |
| 100411 |  | Enquiry for De-alkalizer | 7d | 2017-06-01 A | 2017-06-09 A |  | 100% |  |  |  | finish on or after 2017-05-15 |  |  |  | 003 |
| 100411.1 |  | Enquiry for Ammonia compressor | 30d | 2017-06-23 A | 2017-08-03 A | 100050.2 | 100% |  |  |  | finish on or after 2017-06-15 |  |  |  | 003 |
| 100230 |  | Enquiry for Chlorination package | 16d | 2017-07-07 A | 2017-07-28 A | 100220 | 100% |  |  |  |  | MH-Wtg [24 h] | 10,800 | 10,800 | 003 |
| 100410.2 |  | Enquiry for Ammonia scrubber | 6d | 2017-07-28 A | 2017-08-04 A | 100050.2 | 100% |  |  |  | finish on or after 2017-06-20 | MH-Wtg [122.04 h] | 54,918 | 54,918 | 003 |
| 100280 |  | Enquiry for Extended shaft pumps | 22d | 2017-08-02 A | 2017-09-01 A | 100250 | 100% |  |  |  | finish on or after 2017-07-15 | MH-Wtg [75 h] | 33,750 | 33,750 | 003 |
| 100410.6 |  | Enquiry for Mist separator | 3d | 2017-08-08 A | 2017-08-10 A |  | 100% |  |  |  | finish on or after 2017-07-25 |  |  |  | 001 |
| 100411.4 |  | Enquiry for PFA lined pumps | 2d | 2017-08-08 A | 2017-08-09 A |  | 100% |  |  |  | finish on or after 2017-08-04 |  |  |  | 003 |
| 100340 |  | Enquiry for Non-metallic tanks | 1d | 2017-08-10 A | 2017-08-10 A | 100350 FS-2d | 100% |  |  |  | finish on or after 2017-11-01 | MH-Wtg [10 h] | 4,500 | 4,500 | 003 |
| 100350 |  | Enquiry for Safety shower/Eye wash | 1d | 2017-08-10 A | 2017-08-10 A | 100410 | 100% |  |  |  | finish on or after 2017-10-01 | MH-Wtg [10 h] | 4,500 | 4,500 | 001 |
| 100411.2 |  | Enquiry for Packing/Internals | 2d | 2017-08-14 A | 2017-08-16 A | A113460.1 FS-150d | 100% |  |  |  |  |  |  |  | 002 |
| 100360 |  | Enquiry for Loading arms | 1d | 2017-08-18 A | 2017-08-18 A | 100370 | 100% |  |  |  |  | MH-Wtg [15 h] | 6,750 | 6,750 | 003 |
| 100370 |  | Enquiry for Desuperheater | 11d | 2017-08-18 A | 2017-09-02 A | 100290 | 100% | 2017-08-18 | 2017-09-01 |  | finish on or after 2017-07-20 | MH-Wtg [20 h] | 9,000 | 9,000 | 003 |
| 100411.9.1 |  | Enquiry for Platinum filter (Internals) | 5d | 2017-08-18 A | 2017-08-24 A |  | 100% |  |  |  | finish on or after 2017-08-16 |  |  |  | 001 |
| 100410.8 |  | Enquiry for Vacuum jet | 6d | 2017-08-21 A | 2017-08-28 A |  | 100% |  |  |  | finish on or after 2017-06-23 |  |  |  | 001 |
| 100411.9.2 |  | Enquiry for Rotary vane pumps | 11d | 2017-08-23 A | 2017-09-06 A | 100411.1 FF | 100% |  |  |  |  |  |  |  | 003 |
| 100411.9.3 |  | Enquiry for Ammonia transfer pumps | 23d | 2017-08-23 A | 2017-09-22 A | 100411.9.2 FF | 100% |  |  |  |  |  |  |  | 003 |
| 100410 |  | Enquiry for EOT Cranes | 1d | 2017-08-28 A | 2017-08-28 A | 100370 | 100% |  |  |  |  | MH-Wtg [24.41 h] | 10,985 | 10,985 | 001 |
| 100411.3 |  | Enquiry for Surface condenser pump | 6d | 2017-08-29 A | 2017-09-05 A |  | 100% |  |  |  | finish on or after 2017-08-21 |  |  |  | 001 |
| 100411.7 |  | Enquiry for Inlet air silencer | 1d | 2017-08-29 A | 2017-08-29 A |  | 100% |  |  |  |  |  |  |  | 001 |
| 100411.8 |  | Enquiry for Lift (CNA) | 1d | 2017-08-29 A | 2017-08-29 A |  | 100% |  |  |  | finish on or after 2017-08-25 |  |  |  | 002 |
| 100411.5 |  | Enquiry for Lube oil pumps | 1d | 2017-08-30 A | 2017-08-30 A |  | 100% |  |  |  |  |  |  |  | 001 |
| 100411.9 |  | Enquiry for Chemical skids | 1d | 2017-08-31 A | 2017-08-31 A |  | 100% |  |  |  |  |  |  |  | 001 |
| 100411.6 |  | Enquiry for Lube filters | 1d | 2017-09-01 A | 2017-09-02 A |  | 100% | 2017-09-01 | 2017-09-01 |  |  |  |  |  | 001 |
| 100411.9.4 |  | Enquiry for Silica gel | 1d | 2017-09-02 A | 2017-09-02 A |  | 100% | 2017-09-04 | 2017-09-04 |  | finish on or after 2017-11-01 |  |  |  | 003 |
| 100411.9.5 |  | Enquiry for Condensate transfer pumps | 1d | 2017-09-05 A | 2017-09-05 A |  | 100% |  |  |  | finish on or after 2017-09-05 |  |  |  | 003 |
| 100210 |  | Enquiry for HVAC package | 2d | 2017-09-15 A | 2017-09-18 A | 100320, 102300 FS-22d | 100% |  |  |  | finish on or after 2017-07-10 | MH-Wtg [75 h] | 33,750 | 33,750 | 003 |
| 100410.5 |  | Enquiry for Mixer | 4d | 2017-09-18 A | 2017-09-22 A |  | 100% | 2017-09-18 | 2017-09-21 |  |  |  |  |  | 001 |
| 100411.9.6 |  | Enquiry for Ammonia effluent transfer pumps (Mobile) | 1d | 2017-11-10 A | 2017-11-10 A |  | 100% |  |  |  | finish on or after 2017-11-10 |  |  |  | 003 |
| 100242 |  | Enquiry for API pumps- Offsite & Utilities (Deleted) | 12d | 2018-01-01 | 2018-01-16 | 101350 SS |  |  |  | 205d |  | MH-Wtg |  |  | 003 |
| 100330 |  | Enuiry for Plate type exchangers (Deleted) | 15d | 2018-01-01 | 2018-01-19 | 100080 FF |  |  |  | 202d |  | MH-Wtg |  |  | 003 |
| 100380 |  | Enquiry for Flame arrestors (Deleted) | 10d | 2018-01-01 | 2018-01-12 |  |  |  |  | 207d |  | MH-Wtg |  |  | 003 |
| 100390 |  | Enquiry for Breather valves (Deleted) | 10d | 2018-01-01 | 2018-01-12 |  |  |  |  | 207d |  | MH-Wtg |  |  | 003 |
| 100400 |  | Enquiry for NG station (Deleted) | 10d | 2018-01-01 | 2018-01-12 | 100370 |  |  |  | 207d |  | MH-Wtg |  |  | 003 |
| 100410.9 |  | Enquiry for Roof vent fan (Deleted) | 5d | 2018-01-01 | 2018-01-05 | 100410 |  |  |  | 212d |  |  |  |  | 001 |

Notes:
- 100290: Explanation: Along with MGN Solution tank

| ID | WBS | Activity | Duration | Start | Finish | Predecessors | Complete | Remaining | Planned start | Planned finish | Total float | Free float | Constraint | Resources | Cost | Actual cost | UNIT DESCRIPTION |
| --- | --- | --- | --- | --- | --- | --- | --- | --- | --- | --- | --- | --- | --- | --- | --- | --- | --- |
|  | 2 | **Civil & Structural** |  | 2016-10-17 | 2018-03-20 |  |  |  |  |  |  |  |  |  |  |  |  |
|  | 1 | **Basic Documents** |  | 2016-10-17 | 2017-11-07 |  |  |  |  |  |  |  |  |  |  |  |  |
| 100420 |  | Design basis | 1d | 2016-10-17 A | 2016-10-17 A | 000001 | 100% |  |  |  |  |  | start on 2016-10-17 | MH-Wtg [58.23 h] | 26,204 | 26,204 | 003 |
| 100430 |  | Drawings for statutory approval | 59d | 2016-11-21 A | 2017-02-09 A | 103410 | 100% |  |  |  |  |  | start on 2016-11-21 | MH-Wtg [310.55 h] | 139,748 | 139,748 | 003 |
| 100440 |  | Standard drawings | 56d | 2017-08-22 A | 2017-11-07 A | 100500 FF | 100% |  |  |  |  |  |  | MH-Wtg [38.82 h] | 17,469 | 17,469 | 003 |
|  | 2 | **Detail Documents** |  | 2016-12-02 | 2018-03-20 |  |  |  |  |  |  |  |  |  |  |  |  |
|  | 1 | **B101- WNA Plant** |  | 2017-05-30 | 2018-01-31 |  |  |  |  |  |  |  |  |  |  |  |  |
|  | 1 | **Civil Concrete Drawings (CCD)** |  | 2017-05-30 | 2018-01-31 |  |  |  |  |  |  |  |  |  |  |  |  |
| 100450 |  | Piling details | 17d | 2017-05-30 A | 2017-06-21 A | 103440 SS, 100030 | 100% |  |  |  |  |  | finish on or after 2017-05-26 | MH-Wtg [105.89 h] | 47,651 | 47,651 | 001 |
| 100460 |  | Foundation & column details | 152d | 2017-06-30 A | 2018-01-31 | 100450 | 86% | 22d |  |  | 195d | 0d |  | MH-Wtg [63.53 h] | 28,589 | 24,451 | 001 |
| 100470 |  | Plinth beam details | 2d | 2017-06-30 A | 2017-07-03 A | 100460 | 100% |  |  |  |  |  |  | MH-Wtg [42.35 h] | 19,058 | 19,058 | 001 |
| 100490 |  | Equipment foundation details | 150d | 2017-06-30 A | 2018-01-29 | 100470, 112930 FF+15d, 113100.4 FF+15d | 87% | 20d |  |  | 197d | 0d |  | MH-Wtg [127.06 h] | 57,177 | 49,553 | 001 |
| 100480 |  | Grade slab details | 42d | 2017-11-30 A | 2018-01-29 | 100490 FF | 52% | 20d |  |  | 197d |  |  | MH-Wtg [84.71 h] | 38,120 | 19,967 | 001 |
|  | 2 | **Civil Structural Drawings (CSD)** |  | 2017-06-03 | 2018-01-31 |  |  |  |  |  |  |  |  |  |  |  |  |
| 100500 |  | Steel framing plan | 171d | 2017-06-03 A | 2018-01-31 | 100460 FF, 100490 FF | 91% | 15d | 2017-06-05 | 2018-01-31 | 195d | 0d |  | MH-Wtg [112.95 h] | 50,828 | 46,369 | 001 |
| 100510 |  | Elevation & section details | 171d | 2017-06-03 A | 2018-01-31 | 100500 FF | 91% | 15d | 2017-06-05 | 2018-01-31 | 195d |  |  | MH-Wtg [84.71 h] | 38,120 | 34,776 | 001 |
| 100520 |  | Staircase details | 50d | 2017-06-03 A | 2017-08-12 A | 100510 | 100% |  | 2017-06-05 | 2017-08-11 |  |  |  | MH-Wtg [56.47 h] | 25,412 | 25,412 | 001 |
| 100530 |  | Roof details | 10d | 2017-06-03 A | 2017-06-03 A | 100520 | 100% |  | 2017-06-05 | 2017-06-16 |  |  |  | MH-Wtg [28.24 h] | 12,708 | 12,708 | 001 |
|  | 2 | **B102A- CNA Plant-1** |  | 2017-02-28 | 2017-11-23 |  |  |  |  |  |  |  |  |  |  |  |  |
|  | 1 | **Civil Concrete Drawings (CCD)** |  | 2017-02-28 | 2017-11-23 |  |  |  |  |  |  |  |  |  |  |  |  |
| 100540 |  | Piling details | 60d | 2017-02-28 A | 2017-05-19 A | 100030 | 100% |  |  |  |  |  |  | MH-Wtg [83.93 h] | 37,769 | 37,769 | 002 |
| 100550 |  | Foundation & column details | 120d | 2017-02-28 A | 2017-08-12 A | 100540 | 100% |  | 2017-02-28 | 2017-08-11 |  |  |  | MH-Wtg [52.46 h] | 23,607 | 23,607 | 002 |
| 100560 |  | Plinth beam details | 90d | 2017-02-28 A | 2017-06-30 A | 100550 | 100% |  |  |  |  |  |  | MH-Wtg [31.47 h] | 14,162 | 14,162 | 002 |
| 100580 |  | Equipment foundation details | 120d | 2017-06-08 A | 2017-11-23 A | 100560, 112931 FF+15d | 100% |  |  |  |  |  |  | MH-Wtg [20.98 h] | 9,441 | 9,441 | 002 |
| 100570 |  | Grade slab details | 16d | 2017-07-21 A | 2017-08-12 A | 100580 | 100% |  | 2017-07-21 | 2017-08-11 |  |  |  | MH-Wtg [20.98 h] | 9,441 | 9,441 | 002 |

Notes:
- 100450: Explanation: Revised layout for Converter cone and Vertical gas / heater from Weatherly is expected with in 2 weeks after 6.Apr.17

| ID | WBS | Activity | Duration | Start | Finish | Predecessors | Complete | Remaining | Planned start | Planned finish | Total float | Resources | Cost | Actual cost | UNIT DESCRIPTION |
| --- | --- | --- | --- | --- | --- | --- | --- | --- | --- | --- | --- | --- | --- | --- | --- |
|  | 2 | **Civil Structural Drawings (CSD)** |  | 2017-03-01 | 2017-09-11 |  |  |  |  |  |  |  |  |  |  |
| 100610 |  | Updating staircase details | 112d | 2017-03-01 A | 2017-08-02 A | 100600 | 100% |  |  |  |  | MH-Wtg [27.98 h] | 12,591 | 12,591 | 002 |
| 100590 |  | Updating steel framing plan | 81d | 2017-05-19 A | 2017-09-11 A | 100560 | 100% |  |  |  |  | MH-Wtg [55.96 h] | 25,182 | 25,182 | 002 |
| 100600 |  | Updating elevation & section details | 81d | 2017-05-19 A | 2017-09-11 A | 100590 | 100% |  |  |  |  | MH-Wtg [41.97 h] | 18,887 | 18,887 | 002 |
| 100620 |  | Updating roof details | 81d | 2017-05-19 A | 2017-09-11 A | 100610 | 100% |  |  |  |  | MH-Wtg [13.99 h] | 6,296 | 6,296 | 002 |
|  | 3 | **B102B- CNA Plant-2** |  | 2017-02-28 | 2017-11-23 |  |  |  |  |  |  |  |  |  |  |
|  | 1 | **Civil Concrete Drawings (CCD)** |  | 2017-02-28 | 2017-11-23 |  |  |  |  |  |  |  |  |  |  |
| 100630 |  | Piling details | 60d | 2017-02-28 A | 2017-05-19 A | 100540 SS | 100% |  |  |  |  | MH-Wtg [83.93 h] | 37,769 | 37,769 | 002 |
| 100640 |  | Foundation & column details | 120d | 2017-02-28 A | 2017-08-12 A | 100630 | 100% |  | 2017-02-28 | 2017-08-11 |  | MH-Wtg [52.46 h] | 23,607 | 23,607 | 002 |
| 100650 |  | Plinth beam details | 90d | 2017-02-28 A | 2017-06-30 A | 100640 | 100% |  |  |  |  | MH-Wtg [31.47 h] | 14,162 | 14,162 | 002 |
| 100670 |  | Equipment foundation details | 120d | 2017-06-08 A | 2017-11-23 A | 100650 | 100% |  |  |  |  | MH-Wtg [20.98 h] | 9,441 | 9,441 | 002 |
| 100660 |  | Grade slab details | 29d | 2017-07-21 A | 2017-08-31 A | 100670 | 100% |  |  |  |  | MH-Wtg [20.98 h] | 9,441 | 9,441 | 002 |
|  | 2 | **Civil Structural Drawings (CSD)** |  | 2017-03-01 | 2017-09-11 |  |  |  |  |  |  |  |  |  |  |
| 100700 |  | Updating staircase details | 112d | 2017-03-01 A | 2017-08-02 A | 100690 | 100% |  |  |  |  | MH-Wtg [27.98 h] | 12,591 | 12,591 | 002 |
| 100680 |  | Updating steel framing plan | 81d | 2017-05-19 A | 2017-09-11 A | 100590 SS | 100% |  |  |  |  | MH-Wtg [55.96 h] | 25,182 | 25,182 | 002 |
| 100690 |  | Updating elevation & section details | 81d | 2017-05-19 A | 2017-09-11 A | 100680 | 100% |  |  |  |  | MH-Wtg [41.97 h] | 18,887 | 18,887 | 002 |
| 100710 |  | Updating roof details | 81d | 2017-05-19 A | 2017-09-11 A | 100700 | 100% |  |  |  |  | MH-Wtg [13.99 h] | 6,296 | 6,296 | 002 |
|  | 4 | **B103A- WNA Storage Tanks** |  | 2017-05-04 | 2018-01-19 |  |  |  |  |  |  |  |  |  |  |
|  | 1 | **Civil Concrete Drawings (CCD)** |  | 2017-05-04 | 2018-01-19 |  |  |  |  |  |  |  |  |  |  |
| 100720 |  | Equipment foundation details | 1d | 2017-05-04 A | 2017-05-04 A | 103660, 100030 | 100% |  |  |  |  | MH-Wtg [115.41 h] | 51,935 | 51,935 | 003 |
| 100740 |  | Grade slab & dyke wall details | 186d | 2017-05-04 A | 2018-01-19 | 100730, 112940 FF+15d | 92% | 15d |  |  | 202d | MH-Wtg [57.7 h] | 25,965 | 23,871 | 003 |
| 100730 |  | Foundation & column details | 2d | 2017-10-31 A | 2017-11-01 A | 100720 | 100% |  |  |  |  | MH-Wtg [19.23 h] | 8,654 | 8,654 | 003 |
|  | 2 | **Civil Structural Drawings (CSD)** |  | 2017-10-31 | 2017-11-01 |  |  |  |  |  |  |  |  |  |  |
| 100750 |  | Steel framing plan | 2d | 2017-10-31 A | 2017-11-01 A | 100730 | 100% |  |  |  |  | MH-Wtg [12.82 h] | 5,769 | 5,769 | 003 |
| 100760 |  | Elevation & section details | 2d | 2017-10-31 A | 2017-11-01 A | 100750 | 100% |  |  |  |  | MH-Wtg [6.41 h] | 2,885 | 2,885 | 003 |
| 100770 |  | Staircase details | 2d | 2017-10-31 A | 2017-11-01 A | 100760 | 100% |  |  |  |  | MH-Wtg [2.14 h] | 963 | 963 | 003 |

| ID | WBS | Activity | Duration | Start | Finish | Predecessors | Complete | Remaining | Total float | Constraint | Resources | Cost | Actual cost | UNIT DESCRIPTION |
| --- | --- | --- | --- | --- | --- | --- | --- | --- | --- | --- | --- | --- | --- | --- |
|  | 41 | **B103B- CNA Storage Tanks** |  | 2017-05-04 | 2018-01-19 |  |  |  |  |  |  |  |  |  |
|  | 1 | **Civil Concrete Drawings (CCD)** |  | 2017-05-12 | 2018-01-19 |  |  |  |  |  |  |  |  |  |
| 101550 |  | Equipment foundation details | 1d | 2017-05-12 A | 2017-05-12 A | 105240, 100030 | 100% |  |  |  | MH-Wtg [115.41 h] | 51,935 | 51,935 | 003 |
| 101560 |  | Foundation & column details | 1d | 2017-05-12 A | 2017-05-12 A | 101550 | 100% |  |  |  | MH-Wtg [19.23 h] | 8,654 | 8,654 | 003 |
| 101570 |  | Grade slab & dyke wall details | 180d | 2017-05-12 A | 2018-01-19 | 101560, 113101.4 FF+15d | 92% | 15d | 202d |  | MH-Wtg [57.7 h] | 25,965 | 23,801 | 003 |
|  | 2 | **Civil Structural Drawings (CSD)** |  | 2017-05-04 | 2017-05-04 |  |  |  |  |  |  |  |  |  |
| 101580 |  | Steel framing plan | 1d | 2017-05-04 A | 2017-05-04 A | 101560 | 100% |  |  |  | MH-Wtg [50 h] | 22,500 | 22,500 | 003 |
| 101590 |  | Elevation & section details | 1d | 2017-05-04 A | 2017-05-04 A | 101580 | 100% |  |  |  | MH-Wtg [20 h] | 9,000 | 9,000 | 003 |
| 101600 |  | Staircase details | 1d | 2017-05-04 A | 2017-05-04 A | 101590 | 100% |  |  |  | MH-Wtg [15 h] | 6,750 | 6,750 | 003 |
| 101980 |  | Roof details | 1d | 2017-05-04 A | 2017-05-04 A | 101600 | 100% |  |  |  |  |  |  | 003 |
|  | 46 | **B103C- WWS Storage Tanks** |  | 2017-05-10 | 2018-01-19 |  |  |  |  |  |  |  |  |  |
|  | 1 | **Civil Concrete Drawings (CCD)** |  | 2017-05-10 | 2018-01-19 |  |  |  |  |  |  |  |  |  |
| 101850 |  | Equipment foundation details | 1d | 2017-05-10 A | 2017-05-10 A | 105510, 100030 | 100% |  |  |  | MH-Wtg [38.47 h] | 17,312 | 17,312 | 003 |
| 101860 |  | Foundation & column details | 1d | 2017-05-10 A | 2017-05-10 A | 101850 | 100% |  |  |  | MH-Wtg [6.41 h] | 2,885 | 2,885 | 003 |
| 102180 |  | Grade slab & dyke wall details | 181d | 2017-05-11 A | 2018-01-19 | 101860, 112940 FF+15d | 92% | 15d | 202d |  | MH-Wtg [19.23 h] | 8,654 | 7,936 | 003 |
|  | 2 | **Civil Structural Drawings (CSD)** |  | 2017-07-25 | 2017-07-25 |  |  |  |  |  |  |  |  |  |
| 102190 |  | Steel framing plan | 1d | 2017-07-25 A | 2017-07-25 A | 101860 | 100% |  |  | start on or after 2017-06-25 | MH-Wtg [4.27 h] | 1,922 | 1,922 | 003 |
| 102200 |  | Elevation & section details | 1d | 2017-07-25 A | 2017-07-25 A | 102190 | 100% |  |  |  | MH-Wtg [2.14 h] | 963 | 963 | 003 |
| 102210 |  | Staircase details | 1d | 2017-07-25 A | 2017-07-25 A | 102200 | 100% |  |  |  | MH-Wtg [0.71 h] | 320 | 320 | 003 |
|  | 5 | **B103D- WNA Tanker Loading Bays** |  | 2017-08-23 | 2018-01-10 |  |  |  |  |  |  |  |  |  |
|  | 1 | **Civil Concrete Drawings (CCD)** |  | 2017-08-23 | 2018-01-10 |  |  |  |  |  |  |  |  |  |
| 100780 |  | Foundation & column details | 1d | 2017-08-23 A | 2017-08-23 A | 103860, 100740 | 100% |  |  |  | MH-Wtg [32 h] | 14,400 | 14,400 | 003 |
| 100800 |  | Grade slab details | 1d | 2017-08-23 A | 2017-08-23 A |  | 100% |  |  |  | MH-Wtg [3.63 h] | 1,634 | 1,634 | 003 |
| 100790 |  | Plinth beam details (Deleted) | 8d | 2018-01-01 | 2018-01-10 | 100780 |  |  | 209d |  | MH-Wtg |  |  | 003 |

| ID | WBS | Activity | Duration | Start | Finish | Predecessors | Complete | Remaining | Total float | Resources | Cost | Actual cost | UNIT DESCRIPTION |
| --- | --- | --- | --- | --- | --- | --- | --- | --- | --- | --- | --- | --- | --- |
|  | 2 | **Civil Structural Drawings (CSD)** |  | 2017-08-23 | 2017-08-23 |  |  |  |  |  |  |  |  |
| 100810 |  | Steel framing plan | 1d | 2017-08-23 A | 2017-08-23 A |  | 100% |  |  | MH-Wtg [7.77 h] | 3,497 | 3,497 | 003 |
| 100820 |  | Elevation & section details | 1d | 2017-08-23 A | 2017-08-23 A | 100810 | 100% |  |  | MH-Wtg [3.89 h] | 1,751 | 1,751 | 003 |
| 100830 |  | Staircase details | 1d | 2017-08-23 A | 2017-08-23 A | 100820 | 100% |  |  | MH-Wtg [1.55 h] | 698 | 698 | 003 |
| 100840 |  | Roof details | 1d | 2017-08-23 A | 2017-08-23 A | 100830 | 100% |  |  | MH-Wtg [2.33 h] | 1,049 | 1,049 | 003 |
|  | 49 | **B103E- CNA Tanker Loading Bays** |  | 2017-08-23 | 2018-01-10 |  |  |  |  |  |  |  |  |
|  | 1 | **Civil Concrete Drawings (CCD)** |  | 2017-08-23 | 2018-01-10 |  |  |  |  |  |  |  |  |
| 102220 |  | Foundation & column details | 1d | 2017-08-23 A | 2017-08-23 A | 106500, 101570 | 100% |  |  | MH-Wtg [32 h] | 14,400 | 14,400 | 003 |
| 102240 |  | Grade slab details | 1d | 2017-08-23 A | 2017-08-23 A |  | 100% |  |  | MH-Wtg [3.63 h] | 1,634 | 1,634 | 003 |
| 102230 |  | Plinth beam details (Deleted) | 8d | 2018-01-01 | 2018-01-10 | 102220 |  |  | 209d | MH-Wtg |  |  | 003 |
|  | 2 | **Civil Structural Drawings (CSD)** |  | 2017-08-23 | 2017-08-23 |  |  |  |  |  |  |  |  |
| 102250 |  | Steel framing plan | 1d | 2017-08-23 A | 2017-08-23 A |  | 100% |  |  | MH-Wtg [7.77 h] | 3,497 | 3,497 | 003 |
| 102260 |  | Elevation & section details | 1d | 2017-08-23 A | 2017-08-23 A | 102250 | 100% |  |  | MH-Wtg [3.89 h] | 1,751 | 1,751 | 003 |
| 102270 |  | Staircase details | 1d | 2017-08-23 A | 2017-08-23 A | 102260 | 100% |  |  | MH-Wtg [1.55 h] | 698 | 698 | 003 |
| 102280 |  | Roof details | 1d | 2017-08-23 A | 2017-08-23 A | 102270 | 100% |  |  | MH-Wtg [2.33 h] | 1,049 | 1,049 | 003 |
|  | 6 | **B104A- Caustic, Sulphuric Storage** |  | 2017-05-10 | 2018-01-19 |  |  |  |  |  |  |  |  |
|  | 1 | **Civil Concrete Drawings (CCD)** |  | 2017-05-10 | 2018-01-19 |  |  |  |  |  |  |  |  |
| 100850 |  | Equipment foundation details | 1d | 2017-05-10 A | 2017-05-10 A | 104040, 100030 | 100% |  |  | MH-Wtg [99.73 h] | 44,879 | 44,879 | 003 |
| 100860 |  | Grade slab & dyke wall details | 181d | 2017-05-11 A | 2018-01-19 | 100850, 112940 FF+15d | 92% | 15d | 202d | MH-Wtg [42.74 h] | 19,233 | 17,639 | 003 |
| 101990 |  | Staircase details | 1d | 2017-07-25 A | 2017-07-25 A |  | 100% |  |  |  |  |  | 003 |
|  | 7 | **B104B- HSD Storage (Deleted)** |  | 2018-01-01 | 2018-01-19 |  |  |  |  |  |  |  |  |
|  | 1 | **Civil Concrete Drawings (CCD)** |  | 2018-01-01 | 2018-01-19 |  |  |  |  |  |  |  |  |
| 100870 |  | Equipment foundation details (Deleted) | 15d | 2018-01-01 | 2018-01-19 | 100030 |  |  | 202d | MH-Wtg |  |  | 003 |
| 100880 |  | Grade slab & dyke wall details (Deleted) | 10d | 2018-01-01 | 2018-01-12 |  |  |  | 207d | MH-Wtg |  |  | 003 |

| ID | WBS | Activity | Duration | Start | Finish | Predecessors | Complete | Remaining | Planned start | Planned finish | Total float | Free float | Resources | Cost | Actual cost | UNIT DESCRIPTION |
| --- | --- | --- | --- | --- | --- | --- | --- | --- | --- | --- | --- | --- | --- | --- | --- | --- |
|  | 8 | **B404C-Liquid NH3 Storage** |  | 2017-06-01 | 2018-01-12 |  |  |  |  |  |  |  |  |  |  |  |
|  | 1 | **Civil Concrete Drawings (CCD)** |  | 2017-06-01 | 2017-10-10 |  |  |  |  |  |  |  |  |  |  |  |
| 100890 |  | Equipment foundation details | 93d | 2017-06-01 A | 2017-10-10 A | 104400, 100030, 113101.1 FF+20d | 100% |  |  |  |  |  | MH-Wtg [63.47 h] | 28,562 | 28,562 | 003 |
| 100891 |  | Foundation & column details | 93d | 2017-06-01 A | 2017-10-10 A | 100890 FF | 100% |  |  |  |  |  |  |  |  | 003 |
| 100900 |  | Grade slab & dyke wall details | 93d | 2017-06-01 A | 2017-10-10 A | 100890 | 100% |  |  |  |  |  | MH-Wtg [27.2 h] | 12,240 | 12,240 | 003 |
|  | 2 | **Civil Structural Drawings (CSD)** |  | 2017-06-01 | 2018-01-12 |  |  |  |  |  |  |  |  |  |  |  |
| 112880 |  | Roof details (Deleted) | 8d | 2017-06-01 A | 2018-01-05 | 112520 | 38% | 5d | 2017-08-08 | 2017-08-18 | 212d |  | MH-Wtg |  |  | 003 |
| 111570 |  | Steel framing plan | 5d | 2018-01-01 | 2018-01-05 | 100900 |  |  |  |  | 207d | 0d | MH-Wtg [20 h] | 9,000 |  | 003 |
| 112490 |  | Elevation & section details | 5d | 2018-01-01 | 2018-01-05 | 111570 FF |  |  |  |  | 207d | 0d | MH-Wtg [10 h] | 4,500 |  | 003 |
| 112520 |  | Staircase details | 5d | 2018-01-08 | 2018-01-12 | 112490 |  |  |  |  | 207d |  | MH-Wtg [15 h] | 6,750 |  | 003 |
|  | 50 | **B104D- Caustic, Sulphuric Tanker Loading Bays** |  | 2017-09-11 | 2017-09-11 |  |  |  |  |  |  |  |  |  |  |  |
|  | 1 | **Civil Concrete Drawings (CCD)** |  | 2017-09-11 | 2017-09-11 |  |  |  |  |  |  |  |  |  |  |  |
| 102930 |  | Grade slab details | 1d | 2017-09-11 A | 2017-09-11 A | 100860 | 100% |  |  |  |  |  | MH-Wtg [19.43 h] | 8,744 | 8,744 | 003 |
|  | 17 | **B104E- SNA** |  | 2017-05-10 | 2018-01-19 |  |  |  |  |  |  |  |  |  |  |  |
|  | 1 | **Civil Concrete Drawings (CCD)** |  | 2017-05-10 | 2018-01-19 |  |  |  |  |  |  |  |  |  |  |  |
| 101910 |  | Equipment foundation details | 1d | 2017-05-10 A | 2017-05-10 A | 113750 | 100% |  |  |  |  |  | MH-Wtg [38.47 h] | 17,312 | 17,312 | 003 |
| 101970 |  | Foundation & column details | 1d | 2017-05-10 A | 2017-05-10 A | 101910 | 100% |  |  |  |  |  | MH-Wtg [6.41 h] | 2,885 | 2,885 | 003 |
| 109200 |  | Grade slab & dyke wall details | 182d | 2017-05-10 A | 2018-01-19 | 101970, 112940 FF+15d | 92% | 15d |  |  | 202d |  | MH-Wtg [19.23 h] | 8,654 | 7,940 | 003 |
|  | 2 | **Civil Structural Drawings (CSD)** |  | 2017-10-11 | 2017-10-11 |  |  |  |  |  |  |  |  |  |  |  |
| 109760 |  | Steel framing plan | 1d | 2017-10-11 A | 2017-10-11 A | 109200 | 100% |  |  |  |  |  | MH-Wtg [4.27 h] | 1,922 | 1,922 | 003 |
| 110040 |  | Elevation & section details | 1d | 2017-10-11 A | 2017-10-11 A | 109760 | 100% |  |  |  |  |  | MH-Wtg [2.14 h] | 963 | 963 | 003 |
| 111550 |  | Staircase details | 1d | 2017-10-11 A | 2017-10-11 A | 110040 | 100% |  |  |  |  |  | MH-Wtg [0.71 h] | 320 | 320 | 003 |
|  | 27 | **B104F- SNA Tanker Unloading** |  | 2017-08-23 | 2018-01-10 |  |  |  |  |  |  |  |  |  |  |  |
|  | 3 | **Civil Concrete Drawings (CCD)** |  | 2017-08-23 | 2018-01-10 |  |  |  |  |  |  |  |  |  |  |  |
| 101370 |  | Foundation & column details | 1d | 2017-08-23 A | 2017-08-23 A | 109200, 113980 | 100% |  |  |  |  |  | MH-Wtg [32 h] | 14,400 | 14,400 | 003 |
| 101390 |  | Grade slab details | 1d | 2017-08-23 A | 2017-08-23 A |  | 100% |  |  |  |  |  | MH-Wtg [3.63 h] | 1,634 | 1,634 | 003 |
| 101380 |  | Plinth beam details (Deleted) | 8d | 2018-01-01 | 2018-01-10 | 101370 |  |  |  |  | 209d |  | MH-Wtg [7.25 h] | 3,263 |  | 003 |

| ID | WBS | Activity | Duration | Start | Finish | Predecessors | Complete | Remaining | Total float | Free float | Resources | Cost | Actual cost | UNIT DESCRIPTION |
| --- | --- | --- | --- | --- | --- | --- | --- | --- | --- | --- | --- | --- | --- | --- |
|  | 2 | **Civil Structural Drawings (CSD)** |  | 2017-08-23 | 2017-08-23 |  |  |  |  |  |  |  |  |  |
| 101400 |  | Steel framing plan | 1d | 2017-08-23 A | 2017-08-23 A |  | 100% |  |  |  | MH-Wtg [7.77 h] | 3,497 | 3,497 | 003 |
| 101410 |  | Elevation & section details | 1d | 2017-08-23 A | 2017-08-23 A | 101400 | 100% |  |  |  | MH-Wtg [3.89 h] | 1,751 | 1,751 | 003 |
| 101420 |  | Staircase details | 1d | 2017-08-23 A | 2017-08-23 A | 101410 | 100% |  |  |  | MH-Wtg [1.55 h] | 698 | 698 | 003 |
| 101430 |  | Roof details | 1d | 2017-08-23 A | 2017-08-23 A | 101420 | 100% |  |  |  | MH-Wtg [2.33 h] | 1,049 | 1,049 | 003 |
|  | 51 | **B104G- Ammonia Tanker Unloading** |  | 2017-10-30 | 2018-01-18 |  |  |  |  |  |  |  |  |  |
|  | 1 | **Civil Concrete Drawings (CCD)** |  | 2017-10-30 | 2018-01-18 |  |  |  |  |  |  |  |  |  |
| 111559.1 |  | Foundation and column details | 59d | 2017-10-30 A | 2018-01-18 | 100891 FF, 113101.1 FF+15d, 113101.9.2 FF+15d, 113101.9.3 FF+15d | 80% | 12d | 97d | 0d |  |  |  | 003 |
| 111560 |  | Grade slab details | 59d | 2017-10-30 A | 2018-01-18 | 111559.1 FF | 95% | 3d | 97d | 20d | MH-Wtg [5 h] | 2,250 | 2,136 | 003 |
| 111560.1 |  | Structrual details for platforms and shed | 59d | 2017-10-30 A | 2018-01-18 | 111559.1 FF | 83% | 10d | 203d |  |  |  |  | 003 |
|  | 9 | **B105A- Air Compressor** |  | 2017-09-11 | 2018-01-12 |  |  |  |  |  |  |  |  |  |
|  | 1 | **Civil Concrete Drawings (CCD)** |  | 2017-09-18 | 2018-01-12 |  |  |  |  |  |  |  |  |  |
| 100910 |  | Foundation & column details | 1d | 2017-09-18 A | 2017-09-18 A | 104590, 100030 | 100% |  |  |  | MH-Wtg [75 h] | 33,750 | 33,750 | 003 |
| 100930 |  | Grade slab details | 1d | 2017-09-18 A | 2017-09-18 A | 100940 | 100% |  |  |  | MH-Wtg [14.96 h] | 6,732 | 6,732 | 003 |
| 100940 |  | Equipment foundation details | 1d | 2017-09-18 A | 2017-09-18 A | 100910 FF | 100% |  |  |  | MH-Wtg [59.84 h] | 26,928 | 26,928 | 003 |
| 100920 |  | Plinth beam details (Deleted) | 10d | 2018-01-01 | 2018-01-12 | 100910 |  |  | 207d |  | MH-Wtg |  |  | 003 |
|  | 2 | **Civil Structural Drawings (CSD)** |  | 2017-09-11 | 2017-09-11 |  |  |  |  |  |  |  |  |  |
| 100950 |  | Steel framing plan | 1d | 2017-09-11 A | 2017-09-11 A |  | 100% |  |  |  | MH-Wtg [32.06 h] | 14,427 | 14,427 | 003 |
| 100960 |  | Elevation & section details | 1d | 2017-09-11 A | 2017-09-11 A | 100950 | 100% |  |  |  | MH-Wtg [19.23 h] | 8,654 | 8,654 | 003 |
| 100970 |  | Roof details | 1d | 2017-09-11 A | 2017-09-11 A | 100960 | 100% |  |  |  | MH-Wtg [12.82 h] | 5,769 | 5,769 | 003 |
|  | 10 | **B105B- Air Drier** |  | 2017-09-11 | 2018-01-10 |  |  |  |  |  |  |  |  |  |
|  | 1 | **Civil Concrete Drawings (CCD)** |  | 2017-09-18 | 2018-01-10 |  |  |  |  |  |  |  |  |  |
| 100980 |  | Foundation & column details | 1d | 2017-09-18 A | 2017-09-18 A | 104750, 100030 | 100% |  |  |  | MH-Wtg [25 h] | 11,250 | 11,250 | 003 |
| 101000 |  | Grade slab details | 1d | 2017-09-18 A | 2017-09-18 A | 101010 | 100% |  |  |  | MH-Wtg [4.99 h] | 2,246 | 2,246 | 003 |
| 101010 |  | Equipment foundation details | 1d | 2017-09-29 A | 2017-09-29 A | 100980 FF | 100% |  |  |  | MH-Wtg [19.95 h] | 8,978 | 8,978 | 003 |
| 100990 |  | Plinth beam details (Deleted) | 8d | 2018-01-01 | 2018-01-10 | 100980 |  |  | 209d |  | MH-Wtg |  |  | 003 |

| ID | WBS | Activity | Duration | Start | Finish | Predecessors | Complete | Total float | Resources | Cost | Actual cost | UNIT DESCRIPTION |
| --- | --- | --- | --- | --- | --- | --- | --- | --- | --- | --- | --- | --- |
|  | 2 | **Civil Structural Drawings (CSD)** |  | 2017-09-11 | 2017-09-11 |  |  |  |  |  |  |  |
| 101020 |  | Steel framing plan | 1d | 2017-09-11 A | 2017-09-11 A |  | 100% |  | MH-Wtg [10.69 h] | 4,811 | 4,811 | 003 |
| 101030 |  | Elevation & section details | 1d | 2017-09-11 A | 2017-09-11 A | 101020 | 100% |  | MH-Wtg [6.41 h] | 2,885 | 2,885 | 003 |
| 101040 |  | Roof details | 1d | 2017-09-11 A | 2017-09-11 A | 101030 | 100% |  | MH-Wtg [4.27 h] | 1,922 | 1,922 | 003 |
|  | 11 | **B105C- VAM Unit** |  | 2017-09-19 | 2018-01-10 |  |  |  |  |  |  |  |
|  | 1 | **Civil Concrete Drawings (CCD)** |  | 2017-09-19 | 2018-01-10 |  |  |  |  |  |  |  |
| 101050 |  | Foundation & column details | 1d | 2017-09-19 A | 2017-09-19 A | 100030 | 100% |  | MH-Wtg [25 h] | 11,250 | 11,250 | 003 |
| 101070 |  | Grade slab details | 1d | 2017-09-19 A | 2017-09-19 A | 101080 | 100% |  | MH-Wtg [4.99 h] | 2,246 | 2,246 | 003 |
| 101080 |  | Equipment foundation details | 1d | 2017-09-19 A | 2017-09-19 A | 101050 FF | 100% |  | MH-Wtg [19.95 h] | 8,978 | 8,978 | 003 |
| 101060 |  | Plinth beam details (Deleted) | 8d | 2018-01-01 | 2018-01-10 | 101050 |  | 209d | MH-Wtg |  |  | 003 |
|  | 2 | **Civil Structural Drawings (CSD)** |  | 2017-09-19 | 2017-09-19 |  |  |  |  |  |  |  |
| 101090 |  | Steel framing plan | 1d | 2017-09-19 A | 2017-09-19 A |  | 100% |  | MH-Wtg [10.69 h] | 4,811 | 4,811 | 003 |
| 101100 |  | Elevation & section details | 1d | 2017-09-19 A | 2017-09-19 A | 101090 | 100% |  | MH-Wtg [6.41 h] | 2,885 | 2,885 | 003 |
| 101110 |  | Roof details | 1d | 2017-09-19 A | 2017-09-19 A | 101100 | 100% |  | MH-Wtg [4.27 h] | 1,922 | 1,922 | 003 |
|  | 12 | **B105D- Hot Well/Cold Well, Pumps** |  | 2017-09-19 | 2018-01-12 |  |  |  |  |  |  |  |
|  | 1 | **Civil Concrete Drawings (CCD)** |  | 2017-09-19 | 2018-01-12 |  |  |  |  |  |  |  |
| 101120 |  | Foundation & details for tanks | 1d | 2017-09-19 A | 2017-09-19 A | 100030 | 100% |  | MH-Wtg [28.5 h] | 12,825 | 12,825 | 003 |
| 101140 |  | Grade slab details | 1d | 2017-09-19 A | 2017-09-19 A | 101141 | 100% |  | MH-Wtg [10.69 h] | 4,811 | 4,811 | 003 |
| 101141 |  | Equipment foundation details | 1d | 2017-09-19 A | 2017-09-19 A | 112940 FS+10d | 100% |  | MH-Wtg [17.81 h] | 8,015 | 8,015 | 003 |
| 101130 |  | Beam & slab details (Deleted) | 10d | 2018-01-01 | 2018-01-12 | 101120 |  | 207d | MH-Wtg |  |  | 003 |
|  | 13 | **B106A-Coal Storage (Deleted)** |  | 2018-01-01 | 2018-01-19 |  |  |  |  |  |  |  |
|  | 1 | **Civil Concrete Drawings (CCD)** |  | 2018-01-01 | 2018-01-19 |  |  |  |  |  |  |  |
| 101150 |  | Foundation & column details (Deleted) | 15d | 2018-01-01 | 2018-01-19 |  |  | 202d | MH-Wtg |  |  | 003 |
| 101160 |  | Plinth beam details (Deleted) | 10d | 2018-01-01 | 2018-01-12 |  |  | 207d | MH-Wtg |  |  | 003 |
| 101170 |  | Grade slab details (Deleted) | 10d | 2018-01-01 | 2018-01-12 |  |  | 207d | MH-Wtg |  |  | 003 |

| ID | WBS | Activity | Duration | Start | Finish | Predecessors | Complete | Remaining | Total float | Free float | Resources | Cost | Actual cost | UNIT DESCRIPTION |
| --- | --- | --- | --- | --- | --- | --- | --- | --- | --- | --- | --- | --- | --- | --- |
|  | 2 | **Civil Structural Drawings (CSD)** |  | 2018-01-01 | 2018-01-12 |  |  |  |  |  |  |  |  |  |
| 101180 |  | Steel framing plan (Deleted) | 10d | 2018-01-01 | 2018-01-12 |  |  |  | 207d |  | MH-Wtg |  |  | 003 |
| 101190 |  | Elevation & section details (Deleted) | 8d | 2018-01-01 | 2018-01-10 |  |  |  | 209d |  | MH-Wtg |  |  | 003 |
| 101200 |  | Roof details (Deleted) | 5d | 2018-01-01 | 2018-01-05 |  |  |  | 212d |  | MH-Wtg |  |  | 003 |
|  | 14 | **B106B- CPP Package** |  | 2017-10-27 | 2018-02-14 |  |  |  |  |  |  |  |  |  |
|  | 1 | **Civil Concrete Drawings (CCD)** |  | 2017-10-27 | 2018-02-14 |  |  |  |  |  |  |  |  |  |
| 101210 |  | Piling details for boiler | 1d | 2017-10-27 A | 2017-10-27 A | 112870.1 FF+20d, 112870 FS+20d | 100% |  |  |  | MH-Wtg [80 h] | 36,000 | 36,000 | 003 |
| 101240.1 |  | Piling details for TG Hall & STG | 10d | 2017-11-30 A | 2017-12-13 A | 101210 | 100% |  |  |  |  |  |  | 003 |
| 101210.1 |  | Foundation & column details boiler | 1d | 2017-12-21 A | 2017-12-21 A | 101210 | 100% |  |  |  |  |  |  | 003 |
| 101220 |  | Plinth beam details boiler | 1d | 2017-12-21 A | 2017-12-21 A | 101210.1 | 100% |  |  |  | MH-Wtg [20 h] | 9,000 | 9,000 | 003 |
| 101240.3 |  | Foundation and column detail for TG Hall & STG | 9d | 2017-12-21 A | 2018-01-02 A | 101240.2 | 100% |  |  |  |  |  |  | 003 |
| 101240.9 |  | Equipment foundation details for STG | 39d | 2017-12-21 A | 2018-02-14 | 101240.1, 101230 FF | 49% | 20d | 185d |  |  |  |  | 003 |
| 101240.2 |  | Architectural layout for TG Hall | 10d | 2018-01-01 | 2018-01-12 | 101240.1 |  |  | 207d |  |  |  |  | 003 |
| 101240.5 |  | Beam and slab details for TG Hall | 15d | 2018-01-01 | 2018-01-19 | 101240.3 |  |  | 202d | 0d |  |  |  | 003 |
| 101240.6 |  | Grade slab details | 8d | 2018-01-01 | 2018-01-10 | 101240.4 |  |  | 209d |  |  |  |  | 003 |
| 101240.8 |  | Equipment foundation details for boiler | 22d | 2018-01-01 | 2018-01-31 | 101240.1 |  |  | 19d | 0d | MH-Wtg [48 h] | 21,600 |  | 003 |
| 101240.4 |  | Plinth beam details for TG Hall | 1d | 2018-01-02 A | 2018-01-02 A | 101240.3 FF | 100% |  |  |  |  |  |  | 003 |
| 101240.7 |  | Staircase details | 10d | 2018-01-08 | 2018-01-19 | 101240.5 FF |  |  | 202d |  |  |  |  | 003 |
| 101230 |  | Beam & slab details boiler | 10d | 2018-02-01 | 2018-02-14 | 101240.8 |  |  | 185d | 0d | MH-Wtg [40 h] | 18,000 |  | 003 |
|  | 42 | **B106C- Boiler 20T (HOLD)** |  | 2018-01-01 | 2018-03-02 |  |  |  |  |  |  |  |  |  |
|  | 1 | **Civil Concrete Drawings (CCD)** |  | 2018-01-01 | 2018-03-02 |  |  |  |  |  |  |  |  |  |
| 109480 |  | Foundation & column details (Hold) | 15d | 2018-01-01 | 2018-01-19 | 101210 SS |  |  | 173d | 0d | MH-Wtg |  |  | 003 |
| 109680 |  | Plinth beam details (Hold) | 9d | 2018-01-22 | 2018-02-02 | 109480 |  |  | 173d | 0d | MH-Wtg |  |  | 003 |
| 110880 |  | Equipment foundation details (Hold) | 10d | 2018-02-05 | 2018-02-16 | 109680 |  |  | 173d | 0d | MH-Wtg |  |  | 003 |
| 110870 |  | Grade slab details (Hold) | 10d | 2018-02-19 | 2018-03-02 | 110880 |  |  | 173d |  | MH-Wtg |  |  | 003 |

| ID | WBS | Activity | Duration | Start | Finish | Predecessors | Complete | Remaining | Planned start | Planned finish | Total float | Resources | Cost | Actual cost | UNIT DESCRIPTION |
| --- | --- | --- | --- | --- | --- | --- | --- | --- | --- | --- | --- | --- | --- | --- | --- |
|  | 15 | **B106D- Condensate Storage, Pumps** |  | 2017-10-26 | 2018-02-19 |  |  |  |  |  |  |  |  |  |  |
|  | 1 | **Civil Concrete Drawings (CCD)** |  | 2017-10-26 | 2018-02-19 |  |  |  |  |  |  |  |  |  |  |
| 101280 |  | Equipment foundation details | 1d | 2017-10-26 A | 2017-10-26 A | 101240.8 | 100% |  |  |  |  | MH-Wtg [42.74 h] | 19,233 | 19,233 | 003 |
| 101310 |  | Grade slab & dyke wall details | 82d | 2017-10-26 A | 2018-02-19 | 113101.9.5 FF+15d | 94% | 5d |  |  | 182d | MH-Wtg [21.37 h] | 9,617 | 9,030 | 003 |
| 101290 |  | Foundation & column details (Deleted) | 10d | 2018-01-01 | 2018-01-12 | 101280 |  |  |  |  | 207d | MH-Wtg |  |  | 003 |
|  | 16 | **B107A- Raw Water Storage** |  | 2017-04-21 | 2017-09-12 |  |  |  |  |  |  |  |  |  |  |
|  | 1 | **Civil Concrete Drawings (CCD)** |  | 2017-04-21 | 2017-09-12 |  |  |  |  |  |  |  |  |  |  |
| 101360 |  | Foundation & details for tanks | 102d | 2017-04-21 A | 2017-09-12 A | 105410, 100030 | 100% |  |  |  |  | MH-Wtg [142.48 h] | 64,116 | 64,116 | 003 |
|  | 53 | **B107B- Raw Water Treatment Plant** |  | 2017-09-15 | 2018-01-19 |  |  |  |  |  |  |  |  |  |  |
|  | 1 | **Civil Concrete Drawings (CCD)** |  | 2017-09-15 | 2018-01-19 |  |  |  |  |  |  |  |  |  |  |
| A126080 |  | Foundation and column details | 6d | 2017-09-15 A | 2017-09-23 A | A126070 FF | 100% |  | 2017-09-15 | 2017-09-22 |  |  |  |  | 003 |
| A126060 |  | Foundation & details for Clarified water tank | 1d | 2017-09-22 A | 2017-09-23 A | 112840 FS+10d | 100% |  | 2017-09-22 | 2017-09-22 |  |  |  |  | 003 |
| A126090 |  | Equipment foundations | 86d | 2017-09-22 A | 2018-01-19 | A126070 | 83% | 15d |  |  | 202d |  |  |  | 003 |
| A126100 |  | Grade slab details | 1d | 2017-09-22 A | 2017-09-23 A | A126090 | 100% |  | 2017-09-22 | 2017-09-22 |  |  |  |  | 003 |
| A126110 |  | Staircase & platform details | 1d | 2017-09-22 A | 2017-09-23 A | A126090 FF | 100% |  | 2017-09-22 | 2017-09-22 |  |  |  |  | 003 |
| A126070 |  | Foundation & details for Static mixing tank | 1d | 2017-09-22 A | 2017-09-23 A | A126060 | 100% |  | 2017-09-22 | 2017-09-22 |  |  |  |  | 003 |
|  | 48 | **B107C- Pump House** |  | 2017-09-12 | 2018-01-10 |  |  |  |  |  |  |  |  |  |  |
|  | 1 | **Civil Concrete Drawings (CCD)** |  | 2017-09-12 | 2018-01-10 |  |  |  |  |  |  |  |  |  |  |
| 101250 |  | Foundation & column details | 1d | 2017-09-12 A | 2017-09-12 A | 107810, 100030 | 100% |  |  |  |  | MH-Wtg [39.89 h] | 17,951 | 17,951 | 003 |
| 101260 |  | Plinth beam details | 1d | 2017-09-12 A | 2017-09-12 A | 101250 | 100% |  |  |  |  | MH-Wtg [19.95 h] | 8,978 | 8,978 | 003 |
| 101270 |  | Grade slab details | 87d | 2017-09-12 A | 2018-01-10 | 101300 | 91% | 8d |  |  | 209d | MH-Wtg [9.97 h] | 4,487 | 4,074 | 003 |
| 101300 |  | Equipment foundation details | 1d | 2017-11-23 A | 2017-11-23 A | 101260, 112940 FS+10d | 100% |  |  |  |  | MH-Wtg [29.92 h] | 13,464 | 13,464 | 003 |
|  | 2 | **Civil Structural Drawings (CSD)** |  | 2017-09-12 | 2017-11-23 |  |  |  |  |  |  |  |  |  |  |
| 101320 |  | Steel framing plan | 53d | 2017-09-12 A | 2017-11-23 A | 101260 | 100% |  |  |  |  | MH-Wtg [21.37 h] | 9,617 | 9,617 | 003 |
| 101330 |  | Elevation & section details | 53d | 2017-09-12 A | 2017-11-23 A | 101320 | 100% |  |  |  |  | MH-Wtg [12.82 h] | 5,769 | 5,769 | 003 |
| 101340 |  | Roof details | 1d | 2017-09-12 A | 2017-09-12 A | 101330 | 100% |  |  |  |  | MH-Wtg [8.55 h] | 3,848 | 3,848 | 003 |

| ID | WBS | Activity | Duration | Start | Finish | Predecessors | Complete | Remaining | Planned start | Planned finish | Total float | Resources | Cost | Actual cost | UNIT DESCRIPTION |
| --- | --- | --- | --- | --- | --- | --- | --- | --- | --- | --- | --- | --- | --- | --- | --- |
|  | 18 | **B108A- Fire Water Storage** |  | 2017-04-21 | 2018-01-05 |  |  |  |  |  |  |  |  |  |  |
|  | 1 | **Civil Concrete Drawings (CCD)** |  | 2017-04-21 | 2018-01-05 |  |  |  |  |  |  |  |  |  |  |
| 101440 |  | Foundation & details for tanks | 102d | 2017-04-21 A | 2017-09-12 A | 101360 FF | 100% |  |  |  |  | MH-Wtg [99.73 h] | 44,879 | 44,879 | 003 |
| 101450 |  | Beam & slab details (Deleted) | 10d | 2017-04-21 A | 2018-01-05 | 101440 | 50% | 5d | 2017-05-01 | 2017-05-12 | 212d | MH-Wtg |  |  | 003 |
| 101450.1 |  | Structural details for tank roof | 1d | 2017-09-12 A | 2017-09-12 A |  | 100% |  |  |  |  | MH-Wtg [30 h] | 13,500 | 13,500 | 003 |
|  | 19 | **B108B- Treated Water Storage** |  | 2017-04-21 | 2018-01-05 |  |  |  |  |  |  |  |  |  |  |
|  | 1 | **Civil Concrete Drawings (CCD)** |  | 2017-04-21 | 2018-01-05 |  |  |  |  |  |  |  |  |  |  |
| 101460 |  | Foundation & details for tanks | 102d | 2017-04-21 A | 2017-09-12 A | 101440 FF | 100% |  |  |  |  | MH-Wtg [99.73 h] | 44,879 | 44,879 | 003 |
| 101470 |  | Beam & slab details (Deleted) | 10d | 2017-04-21 A | 2018-01-05 | 101460 | 50% | 5d | 2017-05-01 | 2017-05-12 | 212d | MH-Wtg |  |  | 003 |
| 101470.1 |  | Structural details for tank roof | 1d | 2017-09-12 A | 2017-09-12 A |  | 100% |  |  |  |  |  |  |  | 003 |
|  | 20 | **B108C- DM plant** |  | 2017-09-14 | 2018-01-05 |  |  |  |  |  |  |  |  |  |  |
|  | 1 | **Civil Concrete Drawings (CCD)** |  | 2017-09-14 | 2018-01-05 |  |  |  |  |  |  |  |  |  |  |
| 101480 |  | Foundation & column details | 1d | 2017-09-14 A | 2017-09-14 A | 112860 FS+10d | 100% |  |  |  |  | MH-Wtg [51 h] | 22,950 | 22,950 | 003 |
| 101500 |  | Grade slab details | 1d | 2017-09-18 A | 2017-09-18 A | 101510 | 100% |  |  |  |  | MH-Wtg [26 h] | 11,700 | 11,700 | 003 |
| 101510 |  | Equipment foundation details | 80d | 2017-09-18 A | 2018-01-05 | 112860 FS+22d | 94% | 5d |  |  | 212d | MH-Wtg [51 h] | 22,950 | 21,516 | 003 |
| 101490 |  | Plinth beam details (Deleted) | 5d | 2018-01-01 | 2018-01-05 | 101480 |  |  |  |  | 212d | MH-Wtg |  |  | 003 |
|  | 2 | **Civil Structural Drawings (CSD)** |  | 2017-09-14 | 2017-09-14 |  |  |  |  |  |  |  |  |  |  |
| 101520 |  | Steel framing plan | 1d | 2017-09-14 A | 2017-09-14 A |  | 100% |  |  |  |  | MH-Wtg [7 h] | 3,150 | 3,150 | 003 |
| 101530 |  | Elevation & section details | 1d | 2017-09-14 A | 2017-09-14 A | 101520 | 100% |  |  |  |  | MH-Wtg [4 h] | 1,800 | 1,800 | 003 |
| 101540 |  | Roof details | 1d | 2017-09-14 A | 2017-09-14 A | 101530 | 100% |  |  |  |  | MH-Wtg [3 h] | 1,350 | 1,350 | 003 |
|  | 21 | **B108F- DM Storage** |  | 2017-06-29 | 2018-01-19 |  |  |  |  |  |  |  |  |  |  |
|  | 1 | **Civil Concrete Drawings (CCD)** |  | 2017-06-29 | 2018-01-19 |  |  |  |  |  |  |  |  |  |  |
| 102290 |  | Equipment foundation details | 1d | 2017-06-29 A | 2017-06-29 A | 109510, 100030 | 100% |  |  |  |  | MH-Wtg [38.47 h] | 17,312 | 17,312 | 003 |
| 111400 |  | Foundation & column details | 1d | 2017-06-29 A | 2017-06-29 A | 102290 | 100% |  |  |  |  | MH-Wtg [6.41 h] | 2,885 | 2,885 | 003 |
| 111410 |  | Grade slab & dyke wall details | 146d | 2017-06-29 A | 2018-01-19 | 111400, 112940 FF+15d | 90% | 15d |  |  | 202d | MH-Wtg [19.23 h] | 8,654 | 7,764 | 003 |

| ID | WBS | Activity | Duration | Start | Finish | Predecessors | Complete | Remaining | Total float | Free float | Resources | Cost | Actual cost | UNIT DESCRIPTION |
| --- | --- | --- | --- | --- | --- | --- | --- | --- | --- | --- | --- | --- | --- | --- |
|  | 2 | **Civil Structural Drawings (CSD)** |  | 2018-01-01 | 2018-01-19 |  |  |  |  |  |  |  |  |  |
| 111420 |  | Steel framing plan (Deleted) | 15d | 2018-01-01 | 2018-01-19 | 111400 |  |  | 202d |  | MH-Wtg |  |  | 003 |
| 119740 |  | Elevation & section details (Deleted) | 10d | 2018-01-01 | 2018-01-12 |  |  |  | 207d |  | MH-Wtg |  |  | 003 |
| 119750 |  | Staircase details (Deleted) | 8d | 2018-01-01 | 2018-01-10 |  |  |  | 209d |  | MH-Wtg |  |  | 003 |
|  | 22 | **B109- Cooling Tower with Pumps** |  | 2017-09-22 | 2018-01-29 |  |  |  |  |  |  |  |  |  |
|  | 1 | **Civil Concrete Drawings (CCD)** |  | 2017-09-22 | 2018-01-29 |  |  |  |  |  |  |  |  |  |
| 101620 |  | Foundation & column details | 81d | 2017-09-22 A | 2018-01-12 | 100030, 105640 | 88% | 10d | 207d |  | MH-Wtg [171 h] | 76,950 | 67,450 | 003 |
| 101631 |  | RCC basin detail | 8d | 2017-09-22 A | 2017-10-03 A |  | 100% |  |  |  | MH-Wtg [56.99 h] | 25,646 | 25,646 | 003 |
| 101610 |  | Piling details (Deleted) | 15d | 2018-01-01 | 2018-01-19 | 105640, 100030 |  |  | 202d |  | MH-Wtg |  |  | 003 |
| 101630 |  | Plinth beam details (Deleted) | 8d | 2018-01-01 | 2018-01-10 |  |  |  | 209d |  | MH-Wtg |  |  | 003 |
| 101650 |  | Equipment foundation details | 10d | 2018-01-01 | 2018-01-12 | 112950 FS+22d, 101631 |  |  | 177d | 0d | MH-Wtg [28.5 h] | 12,825 |  | 003 |
| 101640 |  | Grade slab details | 10d | 2018-01-15 | 2018-01-29 | 101650 |  |  | 177d | 35d | MH-Wtg [28.5 h] | 12,825 |  | 003 |
|  | 26 | **B110A- Metering room (Deleted)** |  | 2018-01-01 | 2018-01-12 |  |  |  |  |  |  |  |  |  |
|  | 1 | **Civil Architectural Drawings (CAD)** |  | 2018-01-01 | 2018-01-12 |  |  |  |  |  |  |  |  |  |
| 101870 |  | Floor plan details (Deleted) | 10d | 2018-01-01 | 2018-01-12 | 101660 |  |  | 207d |  | MH-Wtg |  |  | 003 |
| 101880 |  | Elevation & section details (Deleted) | 8d | 2018-01-01 | 2018-01-10 |  |  |  | 209d |  | MH-Wtg |  |  | 003 |
| 101890 |  | Door & window details (Deleted) | 5d | 2018-01-01 | 2018-01-05 |  |  |  | 212d |  | MH-Wtg |  |  | 003 |
| 101900 |  | Flooring and ceiling details (Deleted) | 5d | 2018-01-01 | 2018-01-05 |  |  |  | 212d |  | MH-Wtg |  |  | 003 |
|  | 2 | **Civil Concrete Drawings (CCD)** |  | 2018-01-01 | 2018-01-10 |  |  |  |  |  |  |  |  |  |
| 101920 |  | Foundation & column details (Deleted) | 8d | 2018-01-01 | 2018-01-10 |  |  |  | 209d |  | MH-Wtg |  |  | 003 |
| 101930 |  | Plinth beam details (Deleted) | 5d | 2018-01-01 | 2018-01-05 |  |  |  | 212d |  | MH-Wtg |  |  | 003 |
| 101940 |  | Grade slab details (Deleted) | 3d | 2018-01-01 | 2018-01-03 |  |  |  | 214d |  | MH-Wtg |  |  | 003 |
| 101950 |  | Lintel level details (Deleted) | 5d | 2018-01-01 | 2018-01-05 |  |  |  | 212d |  | MH-Wtg |  |  | 003 |
| 101960 |  | Beam & slab details (Deleted) | 8d | 2018-01-01 | 2018-01-10 |  |  |  | 209d |  | MH-Wtg |  |  | 003 |

| ID | WBS | Activity | Duration | Start | Finish | Predecessors | Complete | Total float | Free float | Resources | Cost | Actual cost | UNIT DESCRIPTION |
| --- | --- | --- | --- | --- | --- | --- | --- | --- | --- | --- | --- | --- | --- |
|  | 24 | **B110B- DG Room** |  | 2018-01-01 | 2018-03-20 |  |  |  |  |  |  |  |  |
|  | 1 | **Civil Concrete Drawings (CCD)** |  | 2018-01-01 | 2018-02-22 |  |  |  |  |  |  |  |  |
| 101780 |  | Equipment foundation details | 15d | 2018-01-01 | 2018-01-19 | 113380 FS+10d |  | 56d | 0d | MH-Wtg [29.92 h] | 13,464 |  | 003 |
| 101790 |  | Foundation & column details | 10d | 2018-01-22 | 2018-02-05 | 101780 |  | 143d | 0d | MH-Wtg [9.97 h] | 4,487 |  | 003 |
| 101800 |  | Plinth beam details | 8d | 2018-02-06 | 2018-02-15 | 101790 |  | 143d | 0d | MH-Wtg [4.99 h] | 2,246 |  | 003 |
| 101810 |  | Grade slab details | 5d | 2018-02-16 | 2018-02-22 | 101800 |  | 179d |  | MH-Wtg [4.99 h] | 2,246 |  | 003 |
|  | 2 | **Civil Structural Drawings (CSD)** |  | 2018-02-16 | 2018-03-20 |  |  |  |  |  |  |  |  |
| 101820 |  | Steel framing plan | 10d | 2018-02-16 | 2018-03-01 | 101800 |  | 143d | 0d | MH-Wtg [10.69 h] | 4,811 |  | 003 |
| 101830 |  | Elevation & section details | 8d | 2018-03-02 | 2018-03-13 | 101820 |  | 161d | 0d | MH-Wtg [6.41 h] | 2,885 |  | 003 |
| 101840 |  | Roof details | 5d | 2018-03-14 | 2018-03-20 | 101830 |  | 161d |  | MH-Wtg [4.27 h] | 1,922 |  | 003 |
|  | 23 | **B110A- Process/Utility Sub-station** |  | 2017-06-15 | 2018-01-29 |  |  |  |  |  |  |  |  |
|  | 1 | **Civil Architectural Drawings (CAD)** |  | 2017-06-15 | 2018-01-12 |  |  |  |  |  |  |  |  |
| 101660 |  | Floor plan details | 73d | 2017-06-15 A | 2017-09-26 A | 101730 | 100% |  |  | MH-Wtg [21.37 h] | 9,617 | 9,617 | 003 |
| 101670 |  | Elevation & section details | 73d | 2017-06-15 A | 2017-09-26 A | 101660 | 100% |  |  | MH-Wtg [10.69 h] | 4,811 | 4,811 | 003 |
| 101680 |  | Door & window details | 73d | 2017-06-15 A | 2017-09-26 A | 101700 | 100% |  |  | MH-Wtg [5.34 h] | 2,403 | 2,403 | 003 |
| 101690 |  | Flooring and ceiling details | 1d | 2017-09-26 A | 2017-09-26 A | 101680 | 100% |  |  | MH-Wtg [5.34 h] | 2,403 | 2,403 | 003 |
| 101700 |  | Sanitary details | 10d | 2018-01-01 | 2018-01-12 | 101760 |  | 207d |  | MH-Wtg [10.69 h] | 4,811 |  | 003 |
|  | 2 | **Civil Concrete Drawings (CCD)** |  | 2017-07-03 | 2018-01-29 |  |  |  |  |  |  |  |  |
| 101720 |  | Foundation & column details | 63d | 2017-07-03 A | 2017-09-28 A | 106691 | 100% |  |  | MH-Wtg [56.1 h] | 25,245 | 25,245 | 003 |
| 101730 |  | Plinth beam details | 35d | 2017-08-10 A | 2017-09-28 A | 101720 | 100% |  |  | MH-Wtg [16.03 h] | 7,214 | 7,214 | 003 |
| 101740 |  | Grade slab details | 1d | 2017-09-28 A | 2017-09-28 A | 101730 | 100% |  |  | MH-Wtg [16.03 h] | 7,214 | 7,214 | 003 |
| 101760 |  | Beam & slab details | 14d | 2017-10-13 A | 2017-11-01 A | 101750 FS-10d | 100% |  |  | MH-Wtg [32.06 h] | 14,427 | 14,427 | 003 |
| 101750 |  | Lintel level details | 1d | 2017-11-01 A | 2017-11-01 A | 101740 | 100% |  |  | MH-Wtg [24.04 h] | 10,818 | 10,818 | 003 |
| 101770 |  | Staircase details | 1d | 2017-11-01 A | 2017-11-01 A | 101760 FF | 100% |  |  | MH-Wtg [16.03 h] | 7,214 | 7,214 | 003 |
| 101710 |  | Piling details (Deleted) | 20d | 2018-01-01 | 2018-01-29 |  |  | 197d |  | MH-Wtg |  |  | 003 |

| ID | WBS | Activity | Duration | Start | Finish | Predecessors | Complete | Total float | Free float | Constraint | Resources | Cost | Actual cost | UNIT DESCRIPTION |
| --- | --- | --- | --- | --- | --- | --- | --- | --- | --- | --- | --- | --- | --- | --- |
|  | 54 | **B111- Effluent Treatment Plant** |  | 2018-01-02 | 2018-02-16 |  |  |  |  |  |  |  |  |  |
|  | 1 | **Civil Concrete Drawings (CCD)** |  | 2018-01-02 | 2018-02-13 |  |  |  |  |  |  |  |  |  |
| A126120 |  | Foundation & details for tanks | 15d | 2018-01-02 | 2018-01-22 | 112890 FS+10d |  | 43d | 0d |  |  |  |  | 003 |
| A126130 |  | Equipment foundations | 10d | 2018-01-23 | 2018-02-06 | A126120 |  | 183d | 0d |  |  |  |  | 003 |
| A126140 |  | Foundation & column details | 3d | 2018-02-02 | 2018-02-06 | A126130 FF |  | 183d | 0d |  |  |  |  | 003 |
| A126150 |  | Grade slab details | 5d | 2018-02-07 | 2018-02-13 | A126130 |  | 186d |  |  |  |  |  | 003 |
|  | 2 | **Civil Structural Drawings (CSD)** |  | 2018-02-07 | 2018-02-16 |  |  |  |  |  |  |  |  |  |
| A126160 |  | Steel framing plan | 5d | 2018-02-07 | 2018-02-13 | A126140 |  | 183d | 0d |  |  |  |  | 003 |
| A126170 |  | Elevation & section details | 3d | 2018-02-14 | 2018-02-16 | A126160 |  | 183d |  |  |  |  |  | 003 |
|  | 28 | **B112- Control Room & QC** |  | 2017-06-23 | 2018-01-29 |  |  |  |  |  |  |  |  |  |
|  | 1 | **Civil Architectural Drawings (CAD)** |  | 2017-06-23 | 2017-09-20 |  |  |  |  |  |  |  |  |  |
| 102060 |  | Floor plan details | 63d | 2017-06-23 A | 2017-09-20 A | 102130 | 100% |  |  |  | MH-Wtg [21.37 h] | 9,617 | 9,617 | 003 |
| 102070 |  | Elevation & section details | 63d | 2017-06-23 A | 2017-09-20 A | 102060 | 100% |  |  |  | MH-Wtg [10.69 h] | 4,811 | 4,811 | 003 |
| 102080 |  | Door & window details | 39d | 2017-07-27 A | 2017-09-20 A | 102100 | 100% |  |  |  | MH-Wtg [5.34 h] | 2,403 | 2,403 | 003 |
| 102090 |  | Flooring and ceiling details | 1d | 2017-09-20 A | 2017-09-20 A | 102080 | 100% |  |  |  | MH-Wtg [5.34 h] | 2,403 | 2,403 | 003 |
| 102100 |  | Sanitary details | 1d | 2017-09-20 A | 2017-09-20 A | 102160 | 100% |  |  |  | MH-Wtg [10.69 h] | 4,811 | 4,811 | 003 |
|  | 2 | **Civil Concrete Drawings (CCD)** |  | 2017-09-12 | 2018-01-29 |  |  |  |  |  |  |  |  |  |
| 102120 |  | Foundation & column details | 1d | 2017-09-12 A | 2017-09-12 A | 108441 | 100% |  |  | finish on or after 2017-06-25 | MH-Wtg [56.1 h] | 25,245 | 25,245 | 003 |
| 102130 |  | Plinth beam details | 1d | 2017-09-12 A | 2017-09-12 A | 102120 | 100% |  |  |  | MH-Wtg [16.03 h] | 7,214 | 7,214 | 003 |
| 102140 |  | Grade slab details | 1d | 2017-09-28 A | 2017-09-28 A | 102130 | 100% |  |  |  | MH-Wtg [16.03 h] | 7,214 | 7,214 | 003 |
| 102150 |  | Lintel level details | 1d | 2017-09-29 A | 2017-09-29 A | 102140 | 100% |  |  |  | MH-Wtg [24.04 h] | 10,818 | 10,818 | 003 |
| 102160 |  | Beam & slab details | 1d | 2017-09-29 A | 2017-09-29 A | 102150 FS-10d | 100% |  |  |  | MH-Wtg [32.06 h] | 14,427 | 14,427 | 003 |
| 102110 |  | Piling details (Deleted) | 20d | 2018-01-01 | 2018-01-29 | 108441 |  | 197d |  |  | MH-Wtg |  |  | 003 |
| 102170 |  | Staircase details (Deleted) | 15d | 2018-01-01 | 2018-01-19 | 102160 FF |  | 202d |  |  | MH-Wtg |  |  | 003 |

| ID | WBS | Activity | Duration | Start | Finish | Predecessors | Complete | Planned start | Planned finish | Constraint | Resources | Cost | Actual cost | UNIT DESCRIPTION |
| --- | --- | --- | --- | --- | --- | --- | --- | --- | --- | --- | --- | --- | --- | --- |
|  | 30 | **B113A- Admin Building** |  | 2016-12-02 | 2017-08-28 |  |  |  |  |  |  |  |  |  |
|  | 1 | **Civil Architectural Drawings (CAD)** |  | 2016-12-02 | 2017-08-16 |  |  |  |  |  |  |  |  |  |
| 102300 |  | Floor plan details | 75d | 2016-12-02 A | 2017-03-15 A | 102370 | 100% |  |  | start on 2016-12-02 | MH-Wtg [21.37 h] | 9,617 | 9,617 | 003 |
| 102310 |  | Elevation & section details | 75d | 2016-12-02 A | 2017-03-15 A | 102300 | 100% |  |  | start on 2016-12-02 | MH-Wtg [10.69 h] | 4,811 | 4,811 | 003 |
| 102320 |  | Door & window details | 75d | 2016-12-02 A | 2017-03-15 A | 102340 | 100% |  |  |  | MH-Wtg [5.34 h] | 2,403 | 2,403 | 003 |
| 102340 |  | Sanitary details | 1d | 2017-08-10 A | 2017-08-10 A | 102400 | 100% |  |  |  | MH-Wtg [10.69 h] | 4,811 | 4,811 | 003 |
| 102330 |  | Flooring and ceiling details | 1d | 2017-08-16 A | 2017-08-16 A | 102340 | 100% |  |  |  | MH-Wtg [5.34 h] | 2,403 | 2,403 | 003 |
|  | 2 | **Civil Concrete Drawings (CCD)** |  | 2017-03-08 | 2017-08-28 |  |  |  |  |  |  |  |  |  |
| 102350 |  | Piling details | 1d | 2017-03-08 A | 2017-03-08 A | 100030 | 100% |  |  |  | MH-Wtg [32.06 h] | 14,427 | 14,427 | 003 |
| 102360 |  | Foundation & column details | 45d | 2017-03-31 A | 2017-06-01 A | 102350 | 100% |  |  |  | MH-Wtg [24.04 h] | 10,818 | 10,818 | 003 |
| 102370 |  | Plinth beam details | 1d | 2017-03-31 A | 2017-03-31 A | 102360 | 100% |  |  |  | MH-Wtg [16.03 h] | 7,214 | 7,214 | 003 |
| 102400 |  | Beam & slab details | 32d | 2017-06-08 A | 2017-07-22 A | 102390 FS-10d | 100% | 2017-06-08 | 2017-07-21 |  | MH-Wtg [32.06 h] | 14,427 | 14,427 | 003 |
| 102390 |  | Lintel level details | 32d | 2017-06-08 A | 2017-07-22 A | 102380 | 100% | 2017-06-08 | 2017-07-21 |  | MH-Wtg [24.04 h] | 10,818 | 10,818 | 003 |
| 102410 |  | Staircase details | 1d | 2017-07-03 A | 2017-07-03 A | 102400 FF | 100% |  |  |  | MH-Wtg [16.03 h] | 7,214 | 7,214 | 003 |
| 102380 |  | Grade slab details | 1d | 2017-08-28 A | 2017-08-28 A | 102370 | 100% |  |  |  | MH-Wtg [16.03 h] | 7,214 | 7,214 | 003 |
|  | 31 | **B113A- Canteen** |  | 2016-12-02 | 2017-08-28 |  |  |  |  |  |  |  |  |  |
|  | 1 | **Civil Architectural Drawings (CAD)** |  | 2016-12-02 | 2017-08-16 |  |  |  |  |  |  |  |  |  |
| 102420 |  | Floor plan details | 75d | 2016-12-02 A | 2017-03-15 A | 102490 | 100% |  |  | start on 2016-12-02 | MH-Wtg [14.25 h] | 6,413 | 6,413 | 003 |
| 102430 |  | Elevation & section details | 75d | 2016-12-02 A | 2017-03-15 A | 102420 | 100% |  |  | start on 2016-12-02 | MH-Wtg [7.12 h] | 3,204 | 3,204 | 003 |
| 102440 |  | Door & window details | 75d | 2016-12-02 A | 2017-03-15 A | 102460 | 100% |  |  |  | MH-Wtg [3.56 h] | 1,602 | 1,602 | 003 |
| 102460 |  | Sanitary details | 1d | 2017-08-10 A | 2017-08-10 A | 102340 FF | 100% |  |  |  | MH-Wtg [7.12 h] | 3,204 | 3,204 | 003 |
| 102450 |  | Flooring and ceiling details | 1d | 2017-08-16 A | 2017-08-16 A | 102330 FF | 100% |  |  |  | MH-Wtg [3.56 h] | 1,602 | 1,602 | 003 |
|  | 2 | **Civil Concrete Drawings (CCD)** |  | 2017-03-08 | 2017-08-28 |  |  |  |  |  |  |  |  |  |
| 102470 |  | Piling details | 1d | 2017-03-08 A | 2017-03-08 A | 102350 FF | 100% |  |  |  | MH-Wtg [21.37 h] | 9,617 | 9,617 | 003 |
| 102480 |  | Foundation & column details | 45d | 2017-03-31 A | 2017-06-01 A | 102470 | 100% |  |  |  | MH-Wtg [16.03 h] | 7,214 | 7,214 | 003 |
| 102490 |  | Plinth beam details | 1d | 2017-03-31 A | 2017-03-31 A | 102480 | 100% |  |  |  | MH-Wtg [10.69 h] | 4,811 | 4,811 | 003 |
| 102520 |  | Beam & slab details | 32d | 2017-06-08 A | 2017-07-22 A | 102510 FS-10d | 100% | 2017-06-08 | 2017-07-21 |  | MH-Wtg [21.37 h] | 9,617 | 9,617 | 003 |
| 102510 |  | Lintel level details | 32d | 2017-06-08 A | 2017-07-22 A | 102500 | 100% | 2017-06-08 | 2017-07-21 |  | MH-Wtg [16.03 h] | 7,214 | 7,214 | 003 |
| 102530 |  | Staircase details | 1d | 2017-07-03 A | 2017-07-03 A | 102520 FF | 100% |  |  |  | MH-Wtg [10.69 h] | 4,811 | 4,811 | 003 |
| 102500 |  | Grade slab details | 1d | 2017-08-28 A | 2017-08-28 A | 102490 | 100% |  |  |  | MH-Wtg [10.69 h] | 4,811 | 4,811 | 003 |

| ID | WBS | Activity | Duration | Start | Finish | Predecessors | Complete | Planned start | Planned finish | Total float | Constraint | Resources | Cost | Actual cost | UNIT DESCRIPTION |
| --- | --- | --- | --- | --- | --- | --- | --- | --- | --- | --- | --- | --- | --- | --- | --- |
|  | 37 | **B113B- Security Block, HSE** |  | 2016-12-02 | 2017-10-06 |  |  |  |  |  |  |  |  |  |  |
|  | 1 | **Civil Architectural Drawings (CAD)** |  | 2016-12-02 | 2017-09-29 |  |  |  |  |  |  |  |  |  |  |
| 102940 |  | Floor plan details | 75d | 2016-12-02 A | 2017-03-15 A | 103010 | 100% |  |  |  | start on 2016-12-02 | MH-Wtg [14.25 h] | 6,413 | 6,413 | 003 |
| 102950 |  | Elevation & section details | 75d | 2016-12-02 A | 2017-03-15 A | 102940 | 100% |  |  |  |  | MH-Wtg [7.12 h] | 3,204 | 3,204 | 003 |
| 102960 |  | Door & window details | 75d | 2016-12-02 A | 2017-03-15 A | 102980 | 100% |  |  |  |  | MH-Wtg [3.56 h] | 1,602 | 1,602 | 003 |
| 102980 |  | Sanitary details | 1d | 2017-08-10 A | 2017-08-10 A | 103040, 102460 SS | 100% |  |  |  |  | MH-Wtg [7.12 h] | 3,204 | 3,204 | 003 |
| 102970 |  | Flooring and ceiling details | 1d | 2017-09-29 A | 2017-09-29 A | 102980 | 100% |  |  |  |  | MH-Wtg [3.56 h] | 1,602 | 1,602 | 003 |
|  | 2 | **Civil Concrete Drawings (CCD)** |  | 2017-03-08 | 2017-10-06 |  |  |  |  |  |  |  |  |  |  |
| 102990 |  | Piling details (Deleted) | 12d | 2017-03-08 A | 2017-03-08 A | 102470 FF | 100% | 2017-05-11 | 2017-05-26 |  |  | MH-Wtg |  |  | 003 |
| 103000 |  | Foundation & column details | 1d | 2017-03-31 A | 2017-03-31 A |  | 100% |  |  |  |  | MH-Wtg [38 h] | 17,100 | 17,100 | 003 |
| 103010 |  | Plinth beam details | 1d | 2017-03-31 A | 2017-03-31 A | 103000 | 100% |  |  |  |  | MH-Wtg [10.69 h] | 4,811 | 4,811 | 003 |
| 103030 |  | Lintel level details | 1d | 2017-03-31 A | 2017-03-31 A | 103020 | 100% |  |  |  |  | MH-Wtg [16.03 h] | 7,214 | 7,214 | 003 |
| 103040 |  | Beam & slab details | 1d | 2017-03-31 A | 2017-03-31 A | 103030 | 100% |  |  |  |  | MH-Wtg [32 h] | 14,400 | 14,400 | 003 |
| 103050 |  | Staircase details (Deleted) | 10d | 2017-03-31 A | 2017-03-31 A | 103040 FF | 100% | 2017-06-22 | 2017-07-05 |  |  | MH-Wtg |  |  | 003 |
| 103020 |  | Grade slab details | 1d | 2017-10-06 A | 2017-10-06 A | 103010 | 100% |  |  |  |  | MH-Wtg [10.69 h] | 4,811 | 4,811 | 003 |
|  | 32 | **B114A- Warehouse, Stores** |  | 2016-12-02 | 2018-01-19 |  |  |  |  |  |  |  |  |  |  |
|  | 1 | **Civil Architectural Drawings (CAD)** |  | 2016-12-02 | 2018-01-10 |  |  |  |  |  |  |  |  |  |  |
| 102540 |  | Floor plan details | 43d | 2016-12-02 A | 2017-01-31 A | 102610 | 100% |  |  |  | start on 2016-12-02 | MH-Wtg [2.59 h] | 1,166 | 1,166 | 003 |
| 102550 |  | Elevation & section details | 1d | 2017-01-31 A | 2017-01-31 A | 102540 | 100% |  |  |  |  | MH-Wtg [0.65 h] | 293 | 293 | 003 |
| 102560 |  | Door & window details (Deleted) | 5d | 2018-01-01 | 2018-01-05 |  |  |  |  | 212d |  | MH-Wtg |  |  | 003 |
| 102570 |  | Flooring and ceiling details (Deleted) | 5d | 2018-01-01 | 2018-01-05 |  |  |  |  | 212d |  | MH-Wtg |  |  | 003 |
| 102580 |  | Sanitary details (Deleted) | 8d | 2018-01-01 | 2018-01-10 |  |  |  |  | 209d |  | MH-Wtg |  |  | 003 |
|  | 2 | **Civil Concrete Drawings (CCD)** |  | 2017-07-28 | 2018-01-19 |  |  |  |  |  |  |  |  |  |  |
| 102600 |  | Foundation & column details | 1d | 2017-07-28 A | 2017-07-28 A | 119650, 102540 | 100% |  |  |  |  | MH-Wtg [5.18 h] | 2,331 | 2,331 | 003 |
| 102610 |  | Plinth beam details | 1d | 2017-07-28 A | 2017-07-28 A | 102600 | 100% |  |  |  |  | MH-Wtg [1.3 h] | 585 | 585 | 003 |
| 102590 |  | Piling details (Deleted) | 12d | 2018-01-01 | 2018-01-16 | 102470 |  |  |  | 205d |  | MH-Wtg |  |  | 003 |
| 102620 |  | Grade slab details (Deleted) | 5d | 2018-01-01 | 2018-01-05 | 102610 |  |  |  | 212d |  | MH-Wtg |  |  | 003 |
| 102630 |  | Lintel level details (Deleted) | 10d | 2018-01-01 | 2018-01-12 |  |  |  |  | 207d |  | MH-Wtg |  |  | 003 |
| 102640 |  | Beam & slab details (Deleted) | 15d | 2018-01-01 | 2018-01-19 |  |  |  |  | 202d |  | MH-Wtg |  |  | 003 |
| 102650 |  | Staircase details (Deleted) | 10d | 2018-01-01 | 2018-01-12 |  |  |  |  | 207d |  | MH-Wtg |  |  | 003 |

| ID | WBS | Activity | Duration | Start | Finish | Predecessors | Complete | Planned start | Planned finish | Total float | Free float | Constraint | Resources | Cost | Actual cost | UNIT DESCRIPTION |
| --- | --- | --- | --- | --- | --- | --- | --- | --- | --- | --- | --- | --- | --- | --- | --- | --- |
|  | 3 | **Civil Structural Drawings (CSD)** |  | 2017-07-28 | 2018-01-12 |  |  |  |  |  |  |  |  |  |  |  |
| 102740 |  | Fencing detail | 1d | 2017-07-28 A | 2017-07-28 A | 102610 | 100% |  |  |  |  |  | MH-Wtg [3.24 h] | 1,458 | 1,458 | 003 |
| 102660 |  | Steel framing plan (Deleted) | 10d | 2018-01-01 | 2018-01-12 | 102610 |  |  |  | 207d |  |  | MH-Wtg |  |  | 003 |
| 102670 |  | Elevation & section details (Deleted) | 8d | 2018-01-01 | 2018-01-10 |  |  |  |  | 209d |  |  | MH-Wtg |  |  | 003 |
| 102680 |  | Roof details (Deleted) | 5d | 2018-01-01 | 2018-01-05 |  |  |  |  | 212d |  |  | MH-Wtg |  |  | 003 |
|  | 33 | **B114B- Weighbridge, Logistics** |  | 2016-12-02 | 2018-01-17 |  |  |  |  |  |  |  |  |  |  |  |
|  | 1 | **Civil Architectural Drawings (CAD)** |  | 2016-12-02 | 2018-01-17 |  |  |  |  |  |  |  |  |  |  |  |
| 102690 |  | Floor plan details | 1d | 2016-12-02 A | 2016-12-02 A | 102760 | 100% |  |  |  |  | start on 2016-12-02 | MH-Wtg [9.71 h] | 4,370 | 4,370 | 003 |
| 102710 |  | Door & window details | 1d | 2016-12-02 A | 2016-12-02 A | 102730 | 100% |  |  |  |  |  | MH-Wtg [2.43 h] | 1,094 | 1,094 | 003 |
| 102700 |  | Elevation & section details | 1d | 2017-01-25 A | 2017-01-25 A | 102690 | 100% |  |  |  |  | start on 2017-01-25 | MH-Wtg [4.86 h] | 2,187 | 2,187 | 003 |
| 102730 |  | Sanitary details | 8d | 2018-01-01 | 2018-01-10 | 102790 |  |  |  | 204d | 0d |  | MH-Wtg [4.86 h] | 2,187 |  | 003 |
| 102720 |  | Flooring and ceiling details | 5d | 2018-01-11 | 2018-01-17 | 102730 |  |  |  | 204d |  |  | MH-Wtg [2.43 h] | 1,094 |  | 003 |
|  | 2 | **Civil Concrete Drawings (CCD)** |  | 2017-06-23 | 2018-01-12 |  |  |  |  |  |  |  |  |  |  |  |
| 102750 |  | Foundation & column details | 126d | 2017-06-23 A | 2017-12-18 A | 102610, 113710 FF+20d | 100% |  |  |  |  |  | MH-Wtg [29 h] | 13,050 | 13,050 | 003 |
| 102760 |  | Plinth beam details | 1d | 2017-06-23 A | 2017-06-23 A | 102750 | 100% |  |  |  |  |  | MH-Wtg [10.93 h] | 4,919 | 4,919 | 003 |
| 102780 |  | Lintel level details | 1d | 2017-06-23 A | 2017-06-23 A | 102770 | 100% |  |  |  |  |  | MH-Wtg [10.93 h] | 4,919 | 4,919 | 003 |
| 102790 |  | Beam & slab details | 1d | 2017-06-23 A | 2017-06-23 A | 102780 FS-5d | 100% |  |  |  |  |  | MH-Wtg [14.57 h] | 6,557 | 6,557 | 003 |
| 102770 |  | Grade slab details | 1d | 2017-09-18 A | 2017-09-18 A | 102760 | 100% |  |  |  |  |  | MH-Wtg [7.29 h] | 3,281 | 3,281 | 003 |
| 102800 |  | Staircase details (Deleted) | 10d | 2018-01-01 | 2018-01-12 | 102790 FF |  |  |  | 207d |  |  | MH-Wtg |  |  | 003 |
|  | 25 | **B114C- Weighbridge, Logistics** |  | 2017-07-22 | 2018-01-19 |  |  |  |  |  |  |  |  |  |  |  |
|  | 1 | **Civil Architectural Drawings (CAD)** |  | 2017-07-22 | 2018-01-17 |  |  |  |  |  |  |  |  |  |  |  |
| 111430 |  | Floor plan details | 128d | 2017-07-22 A | 2017-07-22 A | 111500 | 100% | 2017-07-24 | 2018-01-18 |  |  | start on 2016-12-02 | MH-Wtg [9.71 h] | 4,370 | 4,370 | 003 |
| 111440 |  | Elevation & section details | 95d | 2017-07-22 A | 2017-07-22 A | 111430 | 100% | 2017-07-24 | 2017-12-04 |  |  | start on 2017-01-25 | MH-Wtg [4.86 h] | 2,187 | 2,187 | 003 |
| 111450 |  | Door & window details | 5d | 2017-07-22 A | 2017-07-22 A |  | 100% | 2017-07-24 | 2017-07-28 |  |  |  | MH-Wtg [2.43 h] | 1,094 | 1,094 | 003 |
| 111470 |  | Sanitary details (Deleted) | 8d | 2018-01-01 | 2018-01-10 | 111530 |  |  |  | 204d | 0d |  | MH-Wtg |  |  | 003 |
| 111460 |  | Flooring and ceiling details | 5d | 2018-01-11 | 2018-01-17 | 111470 |  |  |  | 204d |  |  | MH-Wtg [2.43 h] | 1,094 |  | 003 |

| ID | WBS | Activity | Duration | Start | Finish | Predecessors | Complete | Remaining | Total float | Free float | Constraint | Resources | Cost | Actual cost | UNIT DESCRIPTION |
| --- | --- | --- | --- | --- | --- | --- | --- | --- | --- | --- | --- | --- | --- | --- | --- |
|  | 2 | **Civil Concrete Drawings (CCD)** |  | 2017-09-22 | 2018-01-19 |  |  |  |  |  |  |  |  |  |  |
| 111490 |  | Foundation & column details | 86d | 2017-09-22 A | 2018-01-19 | 102750 SS, 113710 FF+20d | 83% | 15d | 202d |  |  | MH-Wtg [29 h] | 13,050 | 10,774 | 003 |
| 111500 |  | Plinth beam details | 2d | 2017-09-22 A | 2017-09-25 A | 111490 | 100% |  |  |  |  | MH-Wtg [10.93 h] | 4,919 | 4,919 | 003 |
| 111510 |  | Grade slab details | 2d | 2017-09-22 A | 2017-09-25 A | 111500 | 100% |  |  |  |  | MH-Wtg [7.29 h] | 3,281 | 3,281 | 003 |
| 111520 |  | Lintel level details | 2d | 2017-09-22 A | 2017-09-25 A | 111510 | 100% |  |  |  |  | MH-Wtg [10.93 h] | 4,919 | 4,919 | 003 |
| 111530 |  | Beam & slab details | 2d | 2017-09-22 A | 2017-09-25 A | 111520 FS-5d | 100% |  |  |  |  | MH-Wtg [14.57 h] | 6,557 | 6,557 | 003 |
| 111540 |  | Staircase details (Deleted) | 10d | 2018-01-01 | 2018-01-12 | 111530 FF |  |  | 207d |  |  | MH-Wtg |  |  | 003 |
|  | 34 | **B115A- Car Parking** |  | 2018-02-15 | 2018-03-13 |  |  |  |  |  |  |  |  |  |  |
|  | 1 | **Civil Concrete Drawings (CCD)** |  | 2018-02-15 | 2018-03-01 |  |  |  |  |  |  |  |  |  |  |
| 102810 |  | Foundation & column details | 5d | 2018-02-15 | 2018-02-21 |  |  |  | 87d | 0d | start on or after 2018-02-15 | MH-Wtg [4.66 h] | 2,097 |  | 003 |
| 102820 |  | Plinth beam details | 3d | 2018-02-22 | 2018-02-26 | 102810 |  |  | 166d | 0d |  | MH-Wtg [2.33 h] | 1,049 |  | 003 |
| 102830 |  | Grade slab details | 3d | 2018-02-27 | 2018-03-01 | 102820 |  |  | 174d |  |  | MH-Wtg [0.78 h] | 351 |  | 003 |
|  | 2 | **Civil Structural Drawings (CSD)** |  | 2018-02-27 | 2018-03-13 |  |  |  |  |  |  |  |  |  |  |
| 102840 |  | Steel framing plan | 5d | 2018-02-27 | 2018-03-05 | 102820 |  |  | 166d | 0d |  | MH-Wtg [5.83 h] | 2,624 |  | 003 |
| 102850 |  | Elevation & section details | 3d | 2018-03-06 | 2018-03-08 | 102840 |  |  | 166d | 0d |  | MH-Wtg [3.5 h] | 1,575 |  | 003 |
| 102860 |  | Roof details | 3d | 2018-03-09 | 2018-03-13 | 102850 |  |  | 166d |  |  | MH-Wtg [2.33 h] | 1,049 |  | 003 |
|  | 35 | **B115B- Two Wheeler Parking** |  | 2018-02-15 | 2018-03-13 |  |  |  |  |  |  |  |  |  |  |
|  | 1 | **Civil Concrete Drawings (CCD)** |  | 2018-02-15 | 2018-03-01 |  |  |  |  |  |  |  |  |  |  |
| 102870 |  | Foundation & column details | 5d | 2018-02-15 | 2018-02-21 | 102810 SS |  |  | 104d | 0d |  | MH-Wtg [4.66 h] | 2,097 |  | 003 |
| 102880 |  | Plinth beam details | 3d | 2018-02-22 | 2018-02-26 | 102870 |  |  | 104d | 0d |  | MH-Wtg [2.33 h] | 1,049 |  | 003 |
| 102890 |  | Grade slab details | 3d | 2018-02-27 | 2018-03-01 | 102880 |  |  | 174d |  |  | MH-Wtg [0.78 h] | 351 |  | 003 |
|  | 2 | **Civil Structural Drawings (CSD)** |  | 2018-02-27 | 2018-03-13 |  |  |  |  |  |  |  |  |  |  |
| 102900 |  | Steel framing plan | 5d | 2018-02-27 | 2018-03-05 | 102880 |  |  | 104d | 0d |  | MH-Wtg [5.83 h] | 2,624 |  | 003 |
| 102910 |  | Elevation & section details | 3d | 2018-03-06 | 2018-03-08 | 102900 |  |  | 104d | 0d |  | MH-Wtg [3.5 h] | 1,575 |  | 003 |
| 102920 |  | Roof details | 3d | 2018-03-09 | 2018-03-13 | 102910 |  |  | 104d | 0d |  | MH-Wtg [2.33 h] | 1,049 |  | 003 |

| ID | WBS | Activity | Duration | Start | Finish | Predecessors | Complete | Planned start | Planned finish | Total float | Free float | Constraint | Resources | Cost | Actual cost | UNIT DESCRIPTION |
| --- | --- | --- | --- | --- | --- | --- | --- | --- | --- | --- | --- | --- | --- | --- | --- | --- |
|  | 47 | **B115C- Truck Parking** |  | 2018-03-07 | 2018-03-13 |  |  |  |  |  |  |  |  |  |  |  |
|  | 1 | **Civil Concrete Drawings (CCD)** |  | 2018-03-07 | 2018-03-13 |  |  |  |  |  |  |  |  |  |  |  |
| 102921 |  | Paving details | 5d | 2018-03-07 | 2018-03-13 | 102920 FF |  |  |  | 104d | 100d |  | MH-Wtg [19.43 h] | 8,744 |  | 003 |
|  | 38 | **B116A- Security Guard House** |  | 2016-12-02 | 2018-01-03 |  |  |  |  |  |  |  |  |  |  |  |
|  | 1 | **Civil Architectural Drawings (CAD)** |  | 2016-12-02 | 2018-01-03 |  |  |  |  |  |  |  |  |  |  |  |
| 103060 |  | Floor plan details | 195d | 2016-12-02 A | 2017-08-31 A | 103110 | 100% |  |  |  |  | start on 2016-12-02 | MH-Wtg [2.43 h] | 1,094 | 1,094 | 003 |
| 103070 |  | Elevation & section details | 12d | 2017-08-16 A | 2017-08-31 A | 103060 | 100% |  |  |  |  |  | MH-Wtg [1.46 h] | 657 | 657 | 003 |
| 103080 |  | Door & window details | 12d | 2017-08-16 A | 2017-08-31 A | 103140 | 100% |  |  |  |  |  | MH-Wtg [0.49 h] | 221 | 221 | 003 |
| 103090 |  | Flooring and ceiling details | 3d | 2018-01-01 | 2018-01-03 | 103080 |  |  |  | 214d |  |  | MH-Wtg [0.49 h] | 221 |  | 003 |
|  | 2 | **Civil Concrete Drawings (CCD)** |  | 2017-08-19 | 2017-08-19 |  |  |  |  |  |  |  |  |  |  |  |
| 103100 |  | Foundation & column details | 5d | 2017-08-19 A | 2017-08-19 A |  | 100% | 2017-08-21 | 2017-08-25 |  |  |  | MH-Wtg [4.37 h] | 1,967 | 1,967 | 003 |
| 103110 |  | Plinth beam details | 3d | 2017-08-19 A | 2017-08-19 A | 103100 | 100% | 2017-08-21 | 2017-08-23 |  |  |  | MH-Wtg [2.91 h] | 1,310 | 1,310 | 003 |
| 103120 |  | Grade slab details | 2d | 2017-08-19 A | 2017-08-19 A | 103110 | 100% | 2017-08-21 | 2017-08-22 |  |  |  | MH-Wtg [1.46 h] | 657 | 657 | 003 |
| 103130 |  | Lintel level details | 3d | 2017-08-19 A | 2017-08-19 A | 103120 | 100% | 2017-08-21 | 2017-08-23 |  |  |  | MH-Wtg [2.91 h] | 1,310 | 1,310 | 003 |
| 103140 |  | Beam & slab details | 5d | 2017-08-19 A | 2017-08-19 A | 103130 | 100% | 2017-08-21 | 2017-08-25 |  |  |  | MH-Wtg [2.91 h] | 1,310 | 1,310 | 003 |
|  | 29 | **B116B- Security Guard House** |  | 2016-12-02 | 2018-01-03 |  |  |  |  |  |  |  |  |  |  |  |
|  | 1 | **Civil Architectural Drawings (CAD)** |  | 2016-12-02 | 2018-01-03 |  |  |  |  |  |  |  |  |  |  |  |
| 111580 |  | Floor plan details | 195d | 2016-12-02 A | 2017-08-31 A | 111630 | 100% |  |  |  |  | start on 2016-12-02 | MH-Wtg [2.43 h] | 1,094 | 1,094 | 003 |
| 111590 |  | Elevation & section details | 12d | 2017-08-16 A | 2017-08-31 A | 111580 | 100% |  |  |  |  |  | MH-Wtg [1.46 h] | 657 | 657 | 003 |
| 111600 |  | Door & window details | 12d | 2017-08-16 A | 2017-08-31 A | 111660 | 100% |  |  |  |  |  | MH-Wtg [0.49 h] | 221 | 221 | 003 |
| 111610 |  | Flooring and ceiling details | 3d | 2018-01-01 | 2018-01-03 | 111600 |  |  |  | 214d |  |  | MH-Wtg [0.49 h] | 221 |  | 003 |
|  | 2 | **Civil Concrete Drawings (CCD)** |  | 2017-08-19 | 2017-08-19 |  |  |  |  |  |  |  |  |  |  |  |
| 111620 |  | Foundation & column details | 5d | 2017-08-19 A | 2017-08-19 A | 103100 SS | 100% | 2017-08-21 | 2017-08-25 |  |  |  | MH-Wtg [4.37 h] | 1,967 | 1,967 | 003 |
| 111630 |  | Plinth beam details | 3d | 2017-08-19 A | 2017-08-19 A | 111620 | 100% | 2017-08-21 | 2017-08-23 |  |  |  | MH-Wtg [2.91 h] | 1,310 | 1,310 | 003 |
| 111640 |  | Grade slab details | 2d | 2017-08-19 A | 2017-08-19 A | 111630 | 100% | 2017-08-21 | 2017-08-22 |  |  |  | MH-Wtg [1.46 h] | 657 | 657 | 003 |
| 111650 |  | Lintel level details | 3d | 2017-08-19 A | 2017-08-19 A | 111640 | 100% | 2017-08-21 | 2017-08-23 |  |  |  | MH-Wtg [2.91 h] | 1,310 | 1,310 | 003 |
| 111660 |  | Beam & slab details | 5d | 2017-08-19 A | 2017-08-19 A | 111650 | 100% | 2017-08-21 | 2017-08-25 |  |  |  | MH-Wtg [2.91 h] | 1,310 | 1,310 | 003 |

| ID | WBS | Activity | Duration | Start | Finish | Predecessors | Complete | Total float | Free float | Resources | Cost | Actual cost | UNIT DESCRIPTION |
| --- | --- | --- | --- | --- | --- | --- | --- | --- | --- | --- | --- | --- | --- |
|  | 36 | **B116D- Security Guard House (Deleted)** |  | 2018-01-01 | 2018-01-05 |  |  |  |  |  |  |  |  |
|  | 1 | **Civil Architectural Drawings (CAD)** |  | 2018-01-01 | 2018-01-05 |  |  |  |  |  |  |  |  |
| 111670 |  | Floor plan details (Deleted) | 5d | 2018-01-01 | 2018-01-05 |  |  | 212d |  | MH-Wtg |  |  | 003 |
| 111680 |  | Elevation & section details (Deleted) | 3d | 2018-01-01 | 2018-01-03 |  |  | 214d |  | MH-Wtg |  |  | 003 |
| 112410 |  | Door & window details (Deleted) | 3d | 2018-01-01 | 2018-01-03 |  |  | 214d |  | MH-Wtg |  |  | 003 |
| 112420 |  | Flooring and ceiling details (Deleted) | 3d | 2018-01-01 | 2018-01-03 |  |  | 214d |  | MH-Wtg |  |  | 003 |
|  | 2 | **Civil Concrete Drawings (CCD)** |  | 2018-01-01 | 2018-01-05 |  |  |  |  |  |  |  |  |
| 112430 |  | Foundation & column details (Deleted) | 5d | 2018-01-01 | 2018-01-05 | 111620 SS |  | 212d |  | MH-Wtg |  |  | 003 |
| 112440 |  | Plinth beam details (Deleted) | 3d | 2018-01-01 | 2018-01-03 |  |  | 212d | 0d | MH-Wtg |  |  | 003 |
| 112460 |  | Lintel level details (Deleted) | 2d | 2018-01-01 | 2018-01-02 |  |  | 215d |  | MH-Wtg |  |  | 003 |
| 112470 |  | Beam & slab details (Deleted) | 5d | 2018-01-01 | 2018-01-05 |  |  | 212d |  | MH-Wtg |  |  | 003 |
| 112450 |  | Grade slab details (Deleted) | 2d | 2018-01-04 | 2018-01-05 | 112440 |  | 212d |  | MH-Wtg |  |  | 003 |
|  | 39 | **B117- Piperack** |  | 2017-08-18 | 2018-01-29 |  |  |  |  |  |  |  |  |
|  | 1 | **Civil Concrete Drawings (CCD)** |  | 2017-08-18 | 2018-01-29 |  |  |  |  |  |  |  |  |
| 103160 |  | Foundation & column details | 39d | 2017-08-18 A | 2017-10-11 A | 105790 | 100% |  |  | MH-Wtg [182.63 h] | 82,184 | 82,184 | 003 |
| 103150 |  | Piling details (Deleted) | 20d | 2018-01-01 | 2018-01-29 | 105790 |  | 197d |  | MH-Wtg |  |  | 003 |
|  | 2 | **Civil Structural Drawings (CSD)** |  | 2017-08-24 | 2017-09-25 |  |  |  |  |  |  |  |  |
| 103170 |  | Steel framing plan | 23d | 2017-08-24 A | 2017-09-25 A | 103160 | 100% |  |  | MH-Wtg [85.23 h] | 38,354 | 38,354 | 003 |
| 103180 |  | Elevation & section details | 23d | 2017-08-24 A | 2017-09-25 A | 103170 FS-15d | 100% |  |  | MH-Wtg [36.53 h] | 16,439 | 16,439 | 003 |
|  | 43 | **B120- Gas Metering Station (Deleted)** |  | 2018-01-01 | 2018-01-12 |  |  |  |  |  |  |  |  |
|  | 2 | **Civil Concrete Drawings (CCD)** |  | 2018-01-01 | 2018-01-12 |  |  |  |  |  |  |  |  |
| 112480 |  | Equipment foundation details (Deleted) | 10d | 2018-01-01 | 2018-01-12 |  |  | 207d |  | MH-Wtg |  |  | 003 |
| 112500 |  | Grade slab details (Deleted) | 7d | 2018-01-01 | 2018-01-09 |  |  | 210d |  | MH-Wtg |  |  | 003 |
| 112510 |  | Fencing details (Deleted) | 3d | 2018-01-01 | 2018-01-03 |  |  | 214d |  | MH-Wtg |  |  | 003 |

| ID | WBS | Activity | Duration | Start | Finish | Predecessors | Complete | Planned start | Planned finish | Total float | Free float | Constraint | Resources | Cost | Actual cost | UNIT DESCRIPTION |
| --- | --- | --- | --- | --- | --- | --- | --- | --- | --- | --- | --- | --- | --- | --- | --- | --- |
|  | 44 | **B121- Engineering Store** |  | 2016-12-02 | 2018-02-01 |  |  |  |  |  |  |  |  |  |  |  |
|  | 1 | **Civil Architectural Drawings (CAD)** |  | 2016-12-02 | 2017-09-23 |  |  |  |  |  |  |  |  |  |  |  |
| 112530 |  | Floor plan details | 129d | 2016-12-02 A | 2017-05-30 A | 119510 | 100% |  |  |  |  | start on 2016-12-02 | MH-Wtg [14.25 h] | 6,413 | 6,413 | 003 |
| 112540 |  | Elevation & section details | 87d | 2017-01-31 A | 2017-05-30 A | 112530 | 100% |  |  |  |  | start on 2017-01-31 | MH-Wtg [7.12 h] | 3,204 | 3,204 | 003 |
| 119460 |  | Door & window details | 1d | 2017-08-10 A | 2017-08-10 A | 119480 | 100% |  |  |  |  |  | MH-Wtg [3.56 h] | 1,602 | 1,602 | 003 |
| 119470 |  | Flooring and ceiling details | 1d | 2017-08-10 A | 2017-08-10 A | 119460 | 100% |  |  |  |  |  | MH-Wtg [3.56 h] | 1,602 | 1,602 | 003 |
| 119480 |  | Sanitary details | 8d | 2017-09-23 A | 2017-09-23 A | 119540 | 100% | 2017-09-25 | 2017-10-04 |  |  |  | MH-Wtg [7.12 h] | 3,204 | 3,204 | 003 |
|  | 2 | **Civil Concrete Drawings (CCD)** |  | 2017-05-16 | 2018-01-16 |  |  |  |  |  |  |  |  |  |  |  |
| 119500 |  | Foundation & column details | 4d | 2017-05-16 A | 2017-05-19 A | 113112 FS+10d | 100% |  |  |  |  |  | MH-Wtg [37.4 h] | 16,830 | 16,830 | 003 |
| 119510 |  | Plinth beam details | 4d | 2017-05-16 A | 2017-05-19 A | 119500 | 100% |  |  |  |  |  | MH-Wtg [10.69 h] | 4,811 | 4,811 | 003 |
| 119520 |  | Grade slab details | 4d | 2017-05-16 A | 2017-05-19 A | 119510 | 100% |  |  |  |  |  | MH-Wtg [10.69 h] | 4,811 | 4,811 | 003 |
| 119530 |  | Lintel level details | 43d | 2017-06-01 A | 2017-07-31 A | 119520 | 100% |  |  |  |  |  | MH-Wtg [16.03 h] | 7,214 | 7,214 | 003 |
| 119540 |  | Beam & slab details | 43d | 2017-06-01 A | 2017-07-31 A | 119530 FS-5d | 100% |  |  |  |  |  | MH-Wtg [21.37 h] | 9,617 | 9,617 | 003 |
| 119550 |  | Staircase details | 43d | 2017-06-01 A | 2017-07-31 A | 119540 FF | 100% |  |  |  |  |  | MH-Wtg [10.69 h] | 4,811 | 4,811 | 003 |
| 119490 |  | Piling details (Deleted) | 12d | 2018-01-01 | 2018-01-16 |  |  |  |  | 205d |  |  | MH-Wtg |  |  | 003 |
|  | 3 | **Civil Structural Drawings (CSD)** |  | 2018-01-01 | 2018-02-01 |  |  |  |  |  |  |  |  |  |  |  |
| 119560 |  | Steel framing plan (Vendor scope) | 10d | 2018-01-01 | 2018-01-12 | 119510 |  |  |  | 194d | 0d |  | MH-Wtg |  |  | 003 |
| 119570 |  | Elevation & section details (Vendor scope) | 8d | 2018-01-15 | 2018-01-24 | 119560 |  |  |  | 194d | 0d |  | MH-Wtg |  |  | 003 |
| 119580 |  | Roof details (vendor scope) | 5d | 2018-01-25 | 2018-02-01 | 119570 |  |  |  | 194d |  |  | MH-Wtg |  |  | 003 |
|  | 45 | **B122- Engineering Workshop** |  | 2017-05-16 | 2018-02-15 |  |  |  |  |  |  |  |  |  |  |  |
|  | 2 | **Civil Concrete Drawings (CCD)** |  | 2017-05-16 | 2017-07-31 |  |  |  |  |  |  |  |  |  |  |  |
| 119650 |  | Foundation & column details | 4d | 2017-05-16 A | 2017-05-19 A | 119500 SS | 100% |  |  |  |  |  | MH-Wtg [42.74 h] | 19,233 | 19,233 | 003 |
| 119660 |  | Plinth beam details | 4d | 2017-05-16 A | 2017-05-19 A | 119650 | 100% |  |  |  |  |  | MH-Wtg [28.5 h] | 12,825 | 12,825 | 003 |
| 119670 |  | Grade slab details | 4d | 2017-05-16 A | 2017-05-19 A | 119660 | 100% |  |  |  |  |  | MH-Wtg [14.25 h] | 6,413 | 6,413 | 003 |
| 119680 |  | Lintel level details | 43d | 2017-06-01 A | 2017-07-31 A | 119670 | 100% |  |  |  |  |  | MH-Wtg [28.5 h] | 12,825 | 12,825 | 003 |
| 119690 |  | Beam & slab details | 43d | 2017-06-01 A | 2017-07-31 A | 119680 FS-5d | 100% |  |  |  |  |  | MH-Wtg [28.5 h] | 12,825 | 12,825 | 003 |

| ID | WBS | Activity | Duration | Start | Finish | Predecessors | Complete | Remaining | Total float | Free float | Constraint | Resources | Cost | Actual cost | UNIT DESCRIPTION |
| --- | --- | --- | --- | --- | --- | --- | --- | --- | --- | --- | --- | --- | --- | --- | --- |
|  | 3 | **Civil Structural Drawings (CSD)** |  | 2018-01-01 | 2018-02-15 |  |  |  |  |  |  |  |  |  |  |
| 119710 |  | Steel framing plan (Vendor scope) | 15d | 2018-01-01 | 2018-01-19 | 119660 |  |  | 184d | 0d |  | MH-Wtg |  |  | 003 |
| 119720 |  | Elevation & section details (Vendor scope) | 10d | 2018-01-22 | 2018-02-05 | 119710 |  |  | 184d | 0d |  | MH-Wtg |  |  | 003 |
| 119730 |  | Roof details (vendor scope) | 8d | 2018-02-06 | 2018-02-15 | 119720 |  |  | 184d |  |  | MH-Wtg |  |  | 003 |
|  | 55 | **B123- Ammonia Scrubber** |  | 2018-01-30 | 2018-03-12 |  |  |  |  |  |  |  |  |  |  |
| A126600 |  | Steel framing plan | 10d | 2018-01-30 | 2018-02-12 | 113100.2 FS+10d |  |  | 51d | 0d |  |  |  |  | 003 |
| A126610 |  | Elevation & section details | 8d | 2018-02-01 | 2018-02-12 | A126600 FF |  |  | 51d | 0d |  |  |  |  | 003 |
| A126580 |  | Foundation & column details | 10d | 2018-02-13 | 2018-02-26 | A126610 |  |  | 51d | 0d |  |  |  |  | 003 |
| A126590 |  | Equipment foundations | 5d | 2018-03-06 | 2018-03-12 | A126580 FS+5d |  |  | 66d | 15d |  |  |  |  | 003 |
|  | 40 | **BXXX- Roads & Drains** |  | 2017-03-03 | 2017-06-06 |  |  |  |  |  |  |  |  |  |  |
|  | 1 | **Civil Concrete Drawings (CCD)** |  | 2017-03-03 | 2017-06-06 |  |  |  |  |  |  |  |  |  |  |
| 103190 |  | Road layout details | 57d | 2017-03-03 A | 2017-05-19 A | 103410 | 100% |  |  |  | finish on or after 2017-03-15 | MH-Wtg [42.74 h] | 19,233 | 19,233 | 003 |
| 103200 |  | Road section details | 57d | 2017-03-03 A | 2017-05-19 A | 103190 FF | 100% |  |  |  |  | MH-Wtg [21.37 h] | 9,617 | 9,617 | 003 |
| 103210 |  | Drain layout details | 1d | 2017-06-06 A | 2017-06-06 A | 103190 | 100% |  |  |  |  | MH-Wtg [85.49 h] | 38,471 | 38,471 | 003 |
| 103220 |  | Drain section details | 1d | 2017-06-06 A | 2017-06-06 A | 103210 FF | 100% |  |  |  |  | MH-Wtg [64.12 h] | 28,854 | 28,854 | 003 |
|  | 52 | **BXXX- Construction Power** |  | 2017-06-19 | 2017-08-18 |  |  |  |  |  |  |  |  |  |  |
| A126040 |  | Foundation details for transformer | 4d | 2017-06-19 A | 2017-06-22 A |  | 100% |  |  |  |  |  |  |  | 003 |
| A126050 |  | Foundation detail for ICOG panel | 1d | 2017-06-22 A | 2017-06-22 A |  | 100% |  |  |  |  |  |  |  | 003 |
| A126180 |  | Foundation detail for Compact substation | 6d | 2017-08-10 A | 2017-08-18 A |  | 100% |  |  |  |  |  |  |  | 003 |
|  | 3 | **Material Take Off (MTO)** |  | 2017-05-19 | 2018-01-12 |  |  |  |  |  |  |  |  |  |  |
| 103230 |  | MTO for Cement & reinforcement steel | 170d | 2017-05-19 A | 2018-01-12 | 100480, 100570, 101770, 102410, 100740, 101570, 101240.8 | 94% | 10d | 207d |  |  | MH-Wtg [244.56 h] | 110,052 | 103,578 | 003 |
| 103240 |  | MTO for Structural steel | 110d | 2017-08-11 A | 2018-01-12 | 100530, 100620, 100970 FF, 103180 | 91% | 10d | 207d |  |  | MH-Wtg [163.04 h] | 73,368 | 66,698 | 003 |
|  | 4 | **Enquiry/Tenders** |  | 2016-10-25 | 2017-08-02 |  |  |  |  |  |  |  |  |  |  |
| 103249 |  | Tender for Soil testing | 1d | 2016-10-25 A | 2016-10-25 A | 103410 | 100% |  |  |  | start on 2016-10-25 | MH-Wtg [81.52 h] | 36,684 | 36,684 | 003 |
| 103251 |  | Tender for Boundary wall | 27d | 2016-10-28 A | 2016-12-05 A | 103249 | 100% |  |  |  | start on 2016-10-28 | MH-Wtg [81.52 h] | 36,684 | 36,684 | 003 |
| 103250 |  | Tender for Piling work | 58d | 2016-11-10 A | 2017-01-30 A | 100030 | 100% |  |  |  | start on 2016-11-10 | MH-Wtg [203.8 h] | 91,710 | 91,710 | 003 |
| 103252 |  | Enquiry for Pre-fabricated structure | 3d | 2016-12-29 A | 2017-01-02 A |  | 100% |  |  |  | start on 2016-12-29 | MH-Wtg [40.76 h] | 18,342 | 18,342 | 003 |
| 103252.1 |  | Tender for Civil & structural work (Part-I) | 1d | 2017-03-23 A | 2017-03-23 A |  | 100% |  |  |  | finish on 2017-02-28 | MH-Wtg [81.52 h] | 36,684 | 36,684 | 003 |
| 103261 |  | Tender for Roads & Drains (Covered in Part I & II) | 95d | 2017-03-23 A | 2017-08-02 A | 103190, 103260 FF | 100% |  |  |  | finish on or after 2017-03-30 | MH-Wtg [81.52 h] | 36,684 | 36,684 | 003 |
| 103260 |  | Tender for Civil & structural work (Part-II) | 24d | 2017-06-30 A | 2017-08-02 A | 103660, 105240, 105510, 104040, 104400, 109510, 106691 FF+5d | 100% |  |  |  |  | MH-Wtg [122.28 h] | 55,026 | 55,026 | 003 |
| 103270 |  | Tender for Architectural work (Covered in Part I & II) | 24d | 2017-06-30 A | 2017-08-02 A | 102340 | 100% |  |  |  |  | MH-Wtg [40.76 h] | 18,342 | 18,342 | 003 |
| 103280 |  | Tender for Acid resistant tiling (Covered in Part-II) | 24d | 2017-06-30 A | 2017-08-02 A | 103270 | 100% |  |  |  |  | MH-Wtg [40.76 h] | 18,342 | 18,342 | 003 |
| 103290 |  | Tender for Industrial painting (Covered in Part I & II) | 24d | 2017-06-30 A | 2017-08-02 A | 103280 | 100% |  |  |  |  | MH-Wtg [40.76 h] | 18,342 | 18,342 | 003 |
| 114330 |  | Enquiry for Rolling shutter | 1d | 2017-08-01 A | 2017-08-01 A |  | 100% |  |  |  |  |  |  |  | 003 |

| ID | WBS | Activity | Duration | Start | Finish | Predecessors | Complete | Remaining | Planned start | Planned finish | Total float | Free float | Constraint | Resources | Cost | Actual cost | UNIT DESCRIPTION |
| --- | --- | --- | --- | --- | --- | --- | --- | --- | --- | --- | --- | --- | --- | --- | --- | --- | --- |
|  | 3 | **Mechanical** |  | 2016-10-17 | 2018-01-12 |  |  |  |  |  |  |  |  |  |  |  |  |
|  | 1 | **Basic Documents** |  | 2016-10-17 | 2017-01-30 |  |  |  |  |  |  |  |  |  |  |  |  |
| 103300 |  | Design basis | 1d | 2016-10-17 A | 2016-10-17 A | 100050 SS | 100% |  |  |  |  |  | start on 2016-10-17 | MH-Wtg [275.13 h] | 123,809 | 123,809 | 003 |
| 103310 |  | Standard drawings | 1d | 2017-01-30 A | 2017-01-30 A | 103350 FF | 100% |  |  |  |  |  |  | MH-Wtg [30.57 h] | 13,757 | 13,757 | 003 |
|  | 2 | **Detail Documents** |  | 2016-11-11 | 2018-01-05 |  |  |  |  |  |  |  |  |  |  |  |  |
| 103340 |  | Design calculations for Absorber | 13d | 2016-11-11 A | 2016-11-29 A | 103330 FF | 100% |  |  |  |  |  |  | MH-Wtg [1039.38 h] | 467,721 | 467,721 | 001 |
| 103330 |  | EGD & EDD WNA Plant equipments | 189d | 2016-12-23 A | 2017-09-13 A | 100100 FF+10d | 100% |  |  |  |  |  |  | MH-Wtg [1039.38 h] | 467,721 | 467,721 | 001 |
| 103320 |  | EGD & EDD for OSBL equipments | 154d | 2017-01-30 A | 2017-08-31 A | 100091 FF+15d | 100% |  |  |  |  |  |  | MH-Wtg [3118.15 h] | 1,403,168 | 1,403,168 | 003 |
| 103330.1 |  | EGD & EDD for additional scope (MOM-078) equipments | 15d | 2017-12-18 A | 2018-01-05 |  | 67% | 5d |  |  | 212d |  |  |  |  |  | 003 |
|  | 3 | **Enquiry/Tenders** |  | 2016-12-23 | 2018-01-12 |  |  |  |  |  |  |  |  |  |  |  |  |
| 103360 |  | Enquiry for WNA Plant equipments | 192d | 2016-12-23 A | 2017-09-18 A | 103330 SS | 100% |  |  |  |  |  |  | MH-Wtg [183.42 h] | 82,539 | 82,539 | 001 |
| 103370 |  | Enquiry for CNA Plant equipments | 33d | 2017-01-17 A | 2017-03-02 A | 100020 | 100% |  |  |  |  |  |  | MH-Wtg [122.28 h] | 55,026 | 55,026 | 002 |
| 103350 |  | Enquiry for OSBL equipments | 166d | 2017-01-30 A | 2017-09-18 A | 103320 SS | 100% |  |  |  |  |  |  | MH-Wtg [122.28 h] | 55,026 | 55,026 | 003 |
| 103371 |  | Enquiry for Absorber foundation bolts & template | 54d | 2017-05-02 A | 2017-07-15 A |  | 100% |  | 2017-05-02 | 2017-07-14 |  |  | start on or after 2017-05-20 |  |  |  | 001 |
| 103380 |  | Tender for Mechanical erection & piping | 19d | 2017-08-31 A | 2017-09-26 A | 103480, 103700, 105810, 105280 | 100% |  |  |  |  |  |  | MH-Wtg [122.28 h] | 55,026 | 55,026 | 003 |
| 103370.1 |  | Enquiry for additional scope (MOM-078) equipments | 10d | 2017-12-28 A | 2018-01-10 | 103330.1 SS+5d | 20% | 8d |  |  | 10d | 0d |  |  |  |  | 003 |
| 103390 |  | Tender for Insulation | 10d | 2018-01-01 | 2018-01-12 |  |  |  |  |  | 67d | 0d | finish on or after 2017-11-28 | MH-Wtg [61.14 h] | 27,513 |  | 003 |
|  | 4 | **Piping & Plant Design** |  | 2016-10-06 | 2018-04-24 |  |  |  |  |  |  |  |  |  |  |  |  |
|  | 1 | **Basic Documents** |  | 2016-10-06 | 2018-02-05 |  |  |  |  |  |  |  |  |  |  |  |  |
| 103410 |  | Plot plan | 67d | 2016-10-06 A | 2017-01-06 A | 000001 | 100% |  |  |  |  |  |  | MH-Wtg [713.3 h] | 320,985 | 320,985 | 003 |
| 103400 |  | Design basis | 1d | 2016-10-17 A | 2016-10-17 A | 000001 | 100% |  |  |  |  |  |  | MH-Wtg [101.9 h] | 45,855 | 45,855 | 003 |
| 103411 |  | Piping Material Specifications | 98d | 2017-02-27 A | 2017-07-11 A | 100122 | 100% |  |  |  |  |  |  | MH-Wtg [76.43 h] | 34,394 | 34,394 | 003 |
| 103420 |  | Drawings for statutory approval | 147d | 2017-06-21 A | 2018-01-12 | 106200, 105910 FF, 113190 FF-10d | 93% | 10d |  |  | 207d |  |  | MH-Wtg [76.43 h] | 34,394 | 32,054 | 003 |
| 103430 |  | Standard drawings | 25d | 2018-01-01 | 2018-02-05 | 105930 SF |  |  |  |  | 192d |  | finish on or after 2017-12-01 | MH-Wtg [50.95 h] | 22,928 |  | 003 |

| ID | WBS | Activity | Duration | Start | Finish | Predecessors | Complete | Remaining | Planned start | Planned finish | Total float | Free float | Constraint | Resources | Cost | Actual cost | UNIT DESCRIPTION |
| --- | --- | --- | --- | --- | --- | --- | --- | --- | --- | --- | --- | --- | --- | --- | --- | --- | --- |
|  | 2 | **Modelling** |  | 2016-11-11 | 2018-04-03 |  |  |  |  |  |  |  |  |  |  |  |  |
|  | 1 | **B101- WNA Plant** |  | 2016-11-24 | 2018-04-03 |  |  |  |  |  |  |  |  |  |  |  |  |
|  | 1 | **30% Modelling** |  | 2016-11-24 | 2018-01-18 |  |  |  |  |  |  |  |  |  |  |  |  |
| 103440 |  | Preliminary layout | 58d | 2016-11-24 A | 2017-02-13 A | 103410, 100060 | 100% |  |  |  |  |  | start on 2016-11-24 | MH-Wtg [258.63 h] | 116,384 | 116,384 | 001 |
| 103450 |  | Modelling of structure | 213d | 2016-11-24 A | 2017-09-18 A | 103440 SS+15d | 100% |  |  |  |  |  | start on 2016-11-24 | MH-Wtg [25.86 h] | 11,637 | 11,637 | 001 |
| 103460 |  | Modelling of equipments | 301d | 2016-11-24 A | 2018-01-18 | 103450, 113100.8 FF+15d, 113100.4 FF+15d | 97% | 10d |  |  | 203d |  | start on 2016-11-24 | MH-Wtg [77.59 h] | 34,916 | 33,756 | 001 |
| 103480 |  | Basic pipe routing | 136d | 2017-01-30 A | 2017-08-04 A | 103460 | 100% |  |  |  |  |  | start on 2017-01-30 | MH-Wtg [77.59 h] | 34,916 | 34,916 | 001 |
| 103470 |  | Modelling of pits & trenches | 1d | 2017-01-31 A | 2017-01-31 A | 103440 | 100% |  |  |  |  |  | start on 2017-01-31 | MH-Wtg [12.93 h] | 5,819 | 5,819 | 001 |
| 103500 |  | Nozzle orientations | 146d | 2017-06-22 A | 2018-01-12 | 103480 | 93% | 10d |  |  | 207d |  |  | MH-Wtg [12.93 h] | 5,819 | 5,420 | 001 |
| 103520 |  | Safety shower locations | 28d | 2017-06-28 A | 2017-08-04 A | 103510 SS | 100% |  |  |  |  |  |  | MH-Wtg [12.93 h] | 5,819 | 5,819 | 001 |
| 103490 |  | Preliminary stress analysis | 67d | 2017-10-05 A | 2018-01-05 | 103480 | 93% | 5d |  |  | 212d |  |  | MH-Wtg [25.86 h] | 11,637 | 10,769 | 001 |
| 103510 |  | Utility station locations | 2d | 2017-12-14 A | 2017-12-16 A | 103480 | 100% |  | 2017-12-14 | 2017-12-15 |  |  |  | MH-Wtg [12.93 h] | 5,819 | 5,819 | 001 |
|  | 2 | **60% Modelling** |  | 2017-05-10 | 2018-01-12 |  |  |  |  |  |  |  |  |  |  |  |  |
| 103530 |  | Modelling of piping & inline instruments | 177d | 2017-05-10 A | 2018-01-12 | 103480 | 94% | 10d |  |  | 207d | 0d |  | MH-Wtg [344.85 h] | 155,183 | 146,415 | 001 |
| 103570 |  | Instrument locations | 177d | 2017-05-10 A | 2018-01-12 | 103530 FF | 94% | 10d |  |  | 207d |  |  | MH-Wtg [21.55 h] | 9,698 | 9,150 | 001 |
| 103540 |  | Modelling of instrument cable trays | 58d | 2017-08-10 A | 2017-10-31 A | 103530 FF | 100% |  |  |  |  |  |  | MH-Wtg [172.42 h] | 77,589 | 77,589 | 001 |
| 103550 |  | Modelling of electrical cable trays | 58d | 2017-08-10 A | 2017-10-31 A | 103540 SS | 100% |  |  |  |  |  |  | MH-Wtg [172.42 h] | 77,589 | 77,589 | 001 |
| 103610 |  | Preliminary MTO for piping materials | 1d | 2017-08-30 A | 2017-08-30 A | 103530 | 100% |  |  |  |  |  | finish on or after 2017-11-15 | MH-Wtg [43.11 h] | 19,400 | 19,400 | 001 |
| 103580 |  | Motor start button locations | 1d | 2017-08-31 A | 2017-08-31 A | 103550 | 100% |  |  |  |  |  |  | MH-Wtg [21.55 h] | 9,698 | 9,698 | 001 |
| 103560 |  | Instrument JB locations | 1d | 2017-09-28 A | 2017-09-28 A | 103530 | 100% |  |  |  |  |  |  | MH-Wtg [21.55 h] | 9,698 | 9,698 | 001 |
| 103600 |  | Floor/wall cut out locations | 22d | 2017-10-02 A | 2017-10-31 A | 103530 FF | 100% |  |  |  |  |  |  | MH-Wtg [21.55 h] | 9,698 | 9,698 | 001 |
| 103590 |  | Modelling of operating platforms | 53d | 2017-11-01 A | 2018-01-12 | 103530 | 81% | 10d |  |  | 207d |  |  | MH-Wtg [21.55 h] | 9,698 | 7,868 | 001 |
| 103620 |  | Preliminary MTO for insulation | 6d | 2017-11-03 A | 2017-11-10 A | 103610, 103390 FF-10d | 100% |  |  |  |  |  |  | MH-Wtg [21.55 h] | 9,698 | 9,698 | 001 |
|  | 3 | **90% Modelling** |  | 2017-11-02 | 2018-04-03 |  |  |  |  |  |  |  |  |  |  |  |  |
| 103630 |  | Modelling of pipe supports | 57d | 2017-11-02 A | 2018-01-19 | 103530 | 74% | 15d |  |  | 22d | 0d |  | MH-Wtg [275.88 h] | 124,146 | 91,476 | 001 |
| 103640 |  | Updation of vendor data | 89d | 2017-11-29 A | 2018-04-03 | 103630 FF, 112930 FS+10d, 113260 FF+15d, 113250 FF+15d, 113100.5 FF+10d | 78% | 20d |  |  | 31d | 0d |  | MH-Wtg [34.48 h] | 15,516 | 12,029 | 001 |
| 103650 |  | Final stress analysis | 38d | 2017-12-06 A | 2018-01-29 | 103630 | 47% | 20d |  |  | 172d | 35d |  | MH-Wtg [34.48 h] | 15,516 | 7,350 | 001 |

| ID | WBS | Activity | Duration | Start | Finish | Predecessors | Complete | Remaining | Planned start | Planned finish | Total float | Free float | Constraint | Resources | Cost | Actual cost | UNIT DESCRIPTION |
| --- | --- | --- | --- | --- | --- | --- | --- | --- | --- | --- | --- | --- | --- | --- | --- | --- | --- |
|  | 2 | **B103A- WNA Storage Tanks** |  | 2016-11-30 | 2018-04-03 |  |  |  |  |  |  |  |  |  |  |  |  |
|  | 1 | **30% Modelling** |  | 2016-11-30 | 2017-08-12 |  |  |  |  |  |  |  |  |  |  |  |  |
| 103660 |  | Preliminary layout | 3d | 2016-11-30 A | 2016-12-02 A | 103440 | 100% |  |  |  |  |  | start on 2016-11-30 | MH-Wtg [77.27 h] | 34,772 | 34,772 | 003 |
| 103670 |  | Modelling of equipments | 8d | 2017-03-06 A | 2017-03-15 A | 103660 | 100% |  |  |  |  |  |  | MH-Wtg [30.91 h] | 13,910 | 13,910 | 003 |
| 103680 |  | Modelling of structure | 6d | 2017-03-10 A | 2017-03-17 A | 103670 | 100% |  |  |  |  |  |  | MH-Wtg [7.73 h] | 3,479 | 3,479 | 003 |
| 103690 |  | Modelling of pits & trenches | 4d | 2017-03-14 A | 2017-03-17 A | 103660 | 100% |  |  |  |  |  |  | MH-Wtg [3.86 h] | 1,737 | 1,737 | 003 |
| 103700 |  | Basic pipe routing | 20d | 2017-04-03 A | 2017-04-29 A | 103670, 100090 FF | 100% |  | 2017-04-03 | 2017-04-28 |  |  |  | MH-Wtg [23.18 h] | 10,431 | 10,431 | 003 |
| 103710 |  | Nozzle orientations | 10d | 2017-05-01 A | 2017-05-12 A | 103700 | 100% |  |  |  |  |  |  | MH-Wtg [3.86 h] | 1,737 | 1,737 | 003 |
| 103730 |  | Safety shower locations | 2d | 2017-07-20 A | 2017-07-22 A | 103720 SS | 100% |  | 2017-07-20 | 2017-07-21 |  |  |  | MH-Wtg [3.86 h] | 1,737 | 1,737 | 003 |
| 103720 |  | Utility station locations | 2d | 2017-08-12 A | 2017-08-12 A | 103700 | 100% |  | 2017-08-14 | 2017-08-16 |  |  |  | MH-Wtg [3.86 h] | 1,737 | 1,737 | 003 |
|  | 2 | **60% Modelling** |  | 2017-06-23 | 2018-01-03 |  |  |  |  |  |  |  |  |  |  |  |  |
| 103740 |  | Modelling of piping & inline instruments | 63d | 2017-06-23 A | 2017-09-20 A | 100090, 103700 | 100% |  |  |  |  |  |  | MH-Wtg [103.02 h] | 46,359 | 46,359 | 003 |
| 103810 |  | Floor/wall cut out locations | 63d | 2017-06-23 A | 2017-09-20 A | 103740 FF | 100% |  |  |  |  |  |  | MH-Wtg [6.44 h] | 2,898 | 2,898 | 003 |
| 103750 |  | Modelling of instrument cable trays | 76d | 2017-07-15 A | 2017-10-31 A | 103740 FF | 100% |  | 2017-07-17 | 2017-10-31 |  |  |  | MH-Wtg [51.51 h] | 23,180 | 23,180 | 003 |
| 103760 |  | Modelling of electrical cable trays | 76d | 2017-07-15 A | 2017-10-31 A | 103750 SS | 100% |  | 2017-07-17 | 2017-10-31 |  |  |  | MH-Wtg [51.51 h] | 23,180 | 23,180 | 003 |
| 103800 |  | Modelling of operating platforms | 47d | 2017-07-15 A | 2017-09-20 A | 103740 | 100% |  | 2017-07-17 | 2017-09-20 |  |  |  | MH-Wtg [6.44 h] | 2,898 | 2,898 | 003 |
| 103770 |  | Instrument JB locations | 41d | 2017-07-25 A | 2017-09-20 A | 103740 | 100% |  |  |  |  |  |  | MH-Wtg [6.44 h] | 2,898 | 2,898 | 003 |
| 103780 |  | Instrument locations | 41d | 2017-07-25 A | 2017-09-20 A | 103740 FF | 100% |  |  |  |  |  |  | MH-Wtg [6.44 h] | 2,898 | 2,898 | 003 |
| 103790 |  | Motor start button locations | 41d | 2017-07-25 A | 2017-09-20 A | 103760 | 100% |  |  |  |  |  |  | MH-Wtg [6.44 h] | 2,898 | 2,898 | 003 |
| 103820 |  | Preliminary MTO for piping materials | 1d | 2017-08-30 A | 2017-08-30 A | 103740 | 100% |  |  |  |  |  |  | MH-Wtg [0.24 h] | 5,777 | 5,777 | 003 |
| 103830 |  | Preliminary MTO for insulation (Deleted) | 3d | 2018-01-01 | 2018-01-03 | 103820 |  |  |  |  | 214d |  |  | MH-Wtg |  |  | 003 |
|  | 3 | **90% Modelling** |  | 2017-07-20 | 2018-04-03 |  |  |  |  |  |  |  |  |  |  |  |  |
| 103840 |  | Modelling of pipe supports | 16d | 2017-07-20 A | 2017-08-10 A | 103740 | 100% |  |  |  |  |  |  | MH-Wtg [92.72 h] | 41,724 | 41,724 | 003 |
| 103850 |  | Updation of vendor data | 102d | 2017-11-10 A | 2018-04-03 | 103840 FF, 112940 FS+10d, 113250 FF+15d | 90% | 10d |  |  | 68d | 0d |  | MH-Wtg [10.3 h] | 4,635 | 4,181 | 003 |

| ID | WBS | Activity | Duration | Start | Finish | Predecessors | Complete | Remaining | Planned start | Planned finish | Total float | Free float | Constraint | Resources | Cost | Actual cost | UNIT DESCRIPTION |
| --- | --- | --- | --- | --- | --- | --- | --- | --- | --- | --- | --- | --- | --- | --- | --- | --- | --- |
|  | 16 | **B103B- CNA Storage Tanks** |  | 2016-11-11 | 2018-04-03 |  |  |  |  |  |  |  |  |  |  |  |  |
|  | 1 | **30% Modelling** |  | 2016-11-11 | 2017-08-12 |  |  |  |  |  |  |  |  |  |  |  |  |
| 105240 |  | Preliminary layout | 66d | 2016-11-11 A | 2017-02-10 A | 103660 | 100% |  |  |  |  |  | start on 2016-11-11 | MH-Wtg [77.27 h] | 34,772 | 34,772 | 003 |
| 105250 |  | Modelling of equipments | 42d | 2016-12-15 A | 2017-02-10 A | 105240 | 100% |  |  |  |  |  | start on 2016-12-15 | MH-Wtg [30.91 h] | 13,910 | 13,910 | 003 |
| 105260 |  | Modelling of structure | 57d | 2016-12-15 A | 2017-03-03 A | 105250 | 100% |  |  |  |  |  | start on 2016-12-15 | MH-Wtg [7.73 h] | 3,479 | 3,479 | 003 |
| 105270 |  | Modelling of pits & trenches | 3d | 2017-03-01 A | 2017-03-03 A | 105240 | 100% |  |  |  |  |  |  | MH-Wtg [3.86 h] | 1,737 | 1,737 | 003 |
| 105290 |  | Nozzle orientations | 36d | 2017-06-16 A | 2017-08-04 A | 105280 | 100% |  |  |  |  |  |  | MH-Wtg [3.86 h] | 1,737 | 1,737 | 003 |
| 105280 |  | Basic pipe routing | 30d | 2017-06-24 A | 2017-08-04 A | 105250, 100090 FF | 100% |  | 2017-06-26 | 2017-08-04 |  |  |  | MH-Wtg [23.18 h] | 10,431 | 10,431 | 003 |
| 105310 |  | Safety shower locations | 2d | 2017-07-20 A | 2017-07-22 A | 105300 SS | 100% |  | 2017-07-20 | 2017-07-21 |  |  |  | MH-Wtg [3.86 h] | 1,737 | 1,737 | 003 |
| 105300 |  | Utility station locations | 2d | 2017-08-12 A | 2017-08-12 A | 105280 | 100% |  | 2017-08-14 | 2017-08-16 |  |  |  | MH-Wtg [3.86 h] | 1,737 | 1,737 | 003 |
|  | 2 | **60% Modelling** |  | 2017-06-27 | 2017-11-10 |  |  |  |  |  |  |  |  |  |  |  |  |
| 105320 |  | Modelling of piping & inline instruments | 61d | 2017-06-27 A | 2017-09-20 A | 100090, 105280 | 100% |  |  |  |  |  |  | MH-Wtg [103.02 h] | 46,359 | 46,359 | 003 |
| 105380 |  | Modelling of operating platforms | 50d | 2017-07-12 A | 2017-09-20 A | 105320 | 100% |  |  |  |  |  |  | MH-Wtg [6.44 h] | 2,898 | 2,898 | 003 |
| 105330 |  | Modelling of instrument cable trays | 75d | 2017-07-18 A | 2017-10-31 A | 105320 FF | 100% |  |  |  |  |  |  | MH-Wtg [51.51 h] | 23,180 | 23,180 | 003 |
| 105340 |  | Modelling of electrical cable trays | 75d | 2017-07-18 A | 2017-10-31 A | 105330 SS | 100% |  |  |  |  |  |  | MH-Wtg [51.51 h] | 23,180 | 23,180 | 003 |
| 105350 |  | Instrument JB locations | 46d | 2017-07-18 A | 2017-09-20 A | 105320 | 100% |  |  |  |  |  |  | MH-Wtg [6.44 h] | 2,898 | 2,898 | 003 |
| 105360 |  | Instrument locations | 46d | 2017-07-18 A | 2017-09-20 A | 105320 FF | 100% |  |  |  |  |  |  | MH-Wtg [6.44 h] | 2,898 | 2,898 | 003 |
| 105370 |  | Motor start button locations | 46d | 2017-07-18 A | 2017-09-20 A | 105340 | 100% |  |  |  |  |  |  | MH-Wtg [6.44 h] | 2,898 | 2,898 | 003 |
| 105390 |  | Floor/wall cut out locations | 41d | 2017-07-25 A | 2017-09-20 A | 105320 FF | 100% |  |  |  |  |  |  | MH-Wtg [6.44 h] | 2,898 | 2,898 | 003 |
| 105400 |  | Preliminary MTO for piping materials | 1d | 2017-08-30 A | 2017-08-30 A | 105320 | 100% |  |  |  |  |  |  | MH-Wtg [12.88 h] | 5,796 | 5,796 | 003 |
| 105480 |  | Preliminary MTO for insulation | 6d | 2017-11-03 A | 2017-11-10 A | 105400, 103390 FF-10d | 100% |  |  |  |  |  |  | MH-Wtg [6 h] | 2,700 | 2,700 | 003 |
|  | 3 | **90% Modelling** |  | 2017-07-22 | 2018-04-03 |  |  |  |  |  |  |  |  |  |  |  |  |
| 105490 |  | Modelling of pipe supports | 28d | 2017-07-22 A | 2017-08-31 A | 105320 | 100% |  | 2017-07-24 | 2017-08-31 |  |  |  | MH-Wtg [92.72 h] | 41,724 | 41,724 | 003 |
| 105500 |  | Updation of vendor data | 98d | 2017-11-16 A | 2018-04-03 | 105490 FF, 112940 FS+10d, 113250 FF+15d | 90% | 10d |  |  | 53d | 0d |  | MH-Wtg [10.3 h] | 4,635 | 4,162 | 003 |

| ID | WBS | Activity | Duration | Start | Finish | Predecessors | Complete | Remaining | Planned start | Planned finish | Total float | Free float | Constraint | Resources | Cost | Actual cost | UNIT DESCRIPTION |
| --- | --- | --- | --- | --- | --- | --- | --- | --- | --- | --- | --- | --- | --- | --- | --- | --- | --- |
|  | 13 | **B103C- WWS Storage Tanks** |  | 2017-03-09 | 2018-04-03 |  |  |  |  |  |  |  |  |  |  |  |  |
|  | 1 | **30% Modelling** |  | 2017-03-09 | 2017-08-12 |  |  |  |  |  |  |  |  |  |  |  |  |
| 105510 |  | Preliminary layout | 1d | 2017-03-09 A | 2017-03-09 A | 104400 | 100% |  |  |  |  |  |  | MH-Wtg [25.76 h] | 11,592 | 11,592 | 003 |
| 105520 |  | Modelling of equipments | 5d | 2017-05-11 A | 2017-05-17 A | 105510 | 100% |  |  |  |  |  |  | MH-Wtg [10.3 h] | 4,635 | 4,635 | 003 |
| 105580 |  | Safety shower locations | 52d | 2017-05-25 A | 2017-08-04 A | 105570 SS | 100% |  |  |  |  |  |  | MH-Wtg [1.29 h] | 581 | 581 | 003 |
| 105530 |  | Modelling of structure | 41d | 2017-06-09 A | 2017-08-04 A | 105520 | 100% |  |  |  |  |  |  | MH-Wtg [2.58 h] | 1,161 | 1,161 | 003 |
| 105540 |  | Modelling of pits & trenches | 41d | 2017-06-09 A | 2017-08-04 A | 105510 | 100% |  |  |  |  |  |  | MH-Wtg [1.29 h] | 581 | 581 | 003 |
| 105560 |  | Nozzle orientations | 36d | 2017-06-16 A | 2017-08-04 A | 105550 | 100% |  |  |  |  |  |  | MH-Wtg [1.29 h] | 581 | 581 | 003 |
| 105550 |  | Basic pipe routing | 31d | 2017-06-23 A | 2017-08-04 A | 105520, 100090 FF | 100% |  |  |  |  |  |  | MH-Wtg [7.73 h] | 3,479 | 3,479 | 003 |
| 105570 |  | Utility station locations | 2d | 2017-08-12 A | 2017-08-12 A | 105550 | 100% |  | 2017-08-14 | 2017-08-16 |  |  |  | MH-Wtg [1.29 h] | 581 | 581 | 003 |
|  | 2 | **60% Modelling** |  | 2017-06-23 | 2018-01-03 |  |  |  |  |  |  |  |  |  |  |  |  |
| 105590 |  | Modelling of piping & inline instruments | 63d | 2017-06-23 A | 2017-09-20 A | 100090, 105550 | 100% |  |  |  |  |  |  | MH-Wtg [34.34 h] | 15,453 | 15,453 | 003 |
| 106420 |  | Floor/wall cut out locations | 63d | 2017-06-23 A | 2017-09-20 A | 105590 FF | 100% |  |  |  |  |  |  | MH-Wtg [2.15 h] | 968 | 968 | 003 |
| 105600 |  | Modelling of instrument cable trays | 73d | 2017-07-20 A | 2017-10-31 A | 105590 FF | 100% |  |  |  |  |  |  | MH-Wtg [17.17 h] | 7,727 | 7,727 | 003 |
| 105610 |  | Modelling of electrical cable trays | 73d | 2017-07-20 A | 2017-10-31 A | 105600 SS | 100% |  |  |  |  |  |  | MH-Wtg [17.17 h] | 7,727 | 7,727 | 003 |
| 105620 |  | Instrument JB locations | 44d | 2017-07-20 A | 2017-09-20 A | 105590 | 100% |  |  |  |  |  |  | MH-Wtg [2.15 h] | 968 | 968 | 003 |
| 105630 |  | Instrument locations | 44d | 2017-07-20 A | 2017-09-20 A | 105590 FF | 100% |  |  |  |  |  |  | MH-Wtg [2.15 h] | 968 | 968 | 003 |
| 106400 |  | Motor start button locations | 44d | 2017-07-20 A | 2017-09-20 A | 105610 | 100% |  |  |  |  |  |  | MH-Wtg [2.15 h] | 968 | 968 | 003 |
| 106410 |  | Modelling of operating platforms | 26d | 2017-08-15 A | 2017-09-20 A | 105590 | 100% |  | 2017-08-16 | 2017-09-20 |  |  |  | MH-Wtg [2.15 h] | 968 | 968 | 003 |
| 106430 |  | Preliminary MTO for piping materials | 1d | 2017-08-30 A | 2017-08-30 A | 105590 | 100% |  |  |  |  |  |  | MH-Wtg [4.29 h] | 1,931 | 1,931 | 003 |
| 106470 |  | Preliminary MTO for insulation (Deleted) | 3d | 2018-01-01 | 2018-01-03 | 106430 |  |  |  |  | 214d |  | finish on or after 2017-11-10 | MH-Wtg |  |  | 003 |
|  | 3 | **90% Modelling** |  | 2017-08-20 | 2018-04-03 |  |  |  |  |  |  |  |  |  |  |  |  |
| 106480 |  | Modelling of pipe supports | 5d | 2017-08-20 A | 2017-08-26 A | 105590 | 100% |  | 2017-08-21 | 2017-08-25 |  |  |  | MH-Wtg [30.91 h] | 13,910 | 13,910 | 003 |
| 106490 |  | Updation of vendor data | 98d | 2017-11-16 A | 2018-04-03 | 106480 FF, 112940 FS+10d, 113250 FF+15d | 90% | 10d |  |  | 95d | 0d |  | MH-Wtg [3.43 h] | 1,544 | 1,386 | 003 |

| ID | WBS | Activity | Duration | Start | Finish | Predecessors | Complete | Planned start | Planned finish | Total float | Free float | Constraint | Resources | Cost | Actual cost | UNIT DESCRIPTION |
| --- | --- | --- | --- | --- | --- | --- | --- | --- | --- | --- | --- | --- | --- | --- | --- | --- |
|  | 3 | **B103D- WNA Tanker Loading Bays** |  | 2016-11-30 | 2018-02-12 |  |  |  |  |  |  |  |  |  |  |  |
|  | 1 | **30% Modelling** |  | 2016-11-30 | 2017-09-26 |  |  |  |  |  |  |  |  |  |  |  |
| 103860 |  | Preliminary layout | 3d | 2016-11-30 A | 2016-12-02 A | 103660 FS+66d | 100% |  |  |  |  | start on 2016-11-30 | MH-Wtg [19.32 h] | 8,694 | 8,694 | 003 |
| 103870 |  | Modelling of structure | 31d | 2017-06-23 A | 2017-08-04 A | 103860 | 100% |  |  |  |  |  | MH-Wtg [7.73 h] | 3,479 | 3,479 | 003 |
| 103890 |  | Modelling of pits & trenches | 7d | 2017-07-27 A | 2017-08-04 A | 103860 | 100% |  |  |  |  |  | MH-Wtg [1.93 h] | 869 | 869 | 003 |
| 103900 |  | Basic pipe routing | 7d | 2017-07-27 A | 2017-08-04 A | 103870, 103740 | 100% |  |  |  |  |  | MH-Wtg [5.8 h] | 2,610 | 2,610 | 003 |
| 103920 |  | Safety shower locations | 7d | 2017-07-27 A | 2017-08-04 A | 103910 SS | 100% |  |  |  |  |  | MH-Wtg [0.97 h] | 437 | 437 | 003 |
| 103880 |  | Modelling of equipments | 4d | 2017-08-01 A | 2017-08-04 A | 103870 | 100% |  |  |  |  |  | MH-Wtg [1.93 h] | 869 | 869 | 003 |
| 103910 |  | Utility station locations | 2d | 2017-09-25 A | 2017-09-26 A | 103900 | 100% |  |  |  |  |  | MH-Wtg [0.97 h] | 437 | 437 | 003 |
|  | 2 | **60% Modelling** |  | 2017-07-21 | 2018-01-05 |  |  |  |  |  |  |  |  |  |  |  |
| 103950 |  | Modelling of electrical cable trays | 72d | 2017-07-21 A | 2017-10-31 A |  | 100% |  |  |  |  |  | MH-Wtg [12.88 h] | 5,796 | 5,796 | 003 |
| 103960 |  | Instrument JB locations | 43d | 2017-07-21 A | 2017-09-20 A | 103930 | 100% |  |  |  |  |  | MH-Wtg [1.61 h] | 725 | 725 | 003 |
| 103970 |  | Instrument locations | 43d | 2017-07-21 A | 2017-09-20 A | 103930 FF | 100% |  |  |  |  |  | MH-Wtg [1.61 h] | 725 | 725 | 003 |
| 103980 |  | Modelling of operating platforms | 40d | 2017-07-26 A | 2017-09-20 A | 103930 | 100% |  |  |  |  |  | MH-Wtg [3.22 h] | 1,449 | 1,449 | 003 |
| 103990 |  | Floor/wall cut out locations | 40d | 2017-07-26 A | 2017-09-20 A | 103930 FF | 100% |  |  |  |  |  | MH-Wtg [1.61 h] | 725 | 725 | 003 |
| 103930 |  | Modelling of piping & inline instruments | 39d | 2017-07-27 A | 2017-09-20 A | 103900 | 100% |  |  |  |  |  | MH-Wtg [25.76 h] | 11,592 | 11,592 | 003 |
| 104000 |  | Preliminary MTO for piping materials | 1d | 2017-08-30 A | 2017-08-30 A | 103930 | 100% |  |  |  |  |  | MH-Wtg [3.22 h] | 1,449 | 1,449 | 003 |
| 103940 |  | Modelling of instrument cable trays (Deleted) | 5d | 2018-01-01 | 2018-01-05 | 103930 FF |  |  |  | 212d |  |  | MH-Wtg |  |  | 003 |
| 104010 |  | Preliminary MTO for insulation (Deleted) | 3d | 2018-01-01 | 2018-01-03 | 104000 |  |  |  | 214d |  | finish on or after 2017-11-10 | MH-Wtg |  |  | 003 |
|  | 3 | **90% Modelling** |  | 2017-08-20 | 2018-02-12 |  |  |  |  |  |  |  |  |  |  |  |
| 104020 |  | Modelling of pipe supports | 5d | 2017-08-20 A | 2017-08-26 A | 103930 | 100% | 2017-08-21 | 2017-08-25 |  |  |  | MH-Wtg [23.18 h] | 10,431 | 10,431 | 003 |
| 104030 |  | Updation of vendor data | 5d | 2018-02-06 | 2018-02-12 | 104020 FF, 113050 FS+10d |  |  |  | 112d | 0d |  | MH-Wtg [2.58 h] | 1,161 |  | 003 |
|  | 18 | **B103E- CNA Tanker Loading Bays** |  | 2016-11-11 | 2018-02-12 |  |  |  |  |  |  |  |  |  |  |  |
|  | 1 | **30% Modelling** |  | 2016-11-11 | 2017-08-12 |  |  |  |  |  |  |  |  |  |  |  |
| 106500 |  | Preliminary layout | 12d | 2016-11-11 A | 2016-11-28 A | 105240 FS+56d | 100% |  |  |  |  | start on 2016-11-11 | MH-Wtg [19.32 h] | 8,694 | 8,694 | 003 |
| 107360 |  | Modelling of structure | 31d | 2017-06-23 A | 2017-08-04 A | 106500 | 100% |  |  |  |  |  | MH-Wtg [7.73 h] | 3,479 | 3,479 | 003 |
| 107380 |  | Modelling of pits & trenches | 7d | 2017-07-27 A | 2017-08-04 A | 106500 | 100% |  |  |  |  |  | MH-Wtg [1.93 h] | 869 | 869 | 003 |
| 107390 |  | Basic pipe routing | 7d | 2017-07-27 A | 2017-08-04 A | 107360, 105320 | 100% |  |  |  |  |  | MH-Wtg [5.8 h] | 2,610 | 2,610 | 003 |
| 107410 |  | Safety shower locations | 7d | 2017-07-27 A | 2017-08-04 A | 107400 SS | 100% |  |  |  |  |  | MH-Wtg [0.97 h] | 437 | 437 | 003 |
| 107370 |  | Modelling of equipments | 4d | 2017-08-01 A | 2017-08-04 A | 107360 | 100% |  |  |  |  |  | MH-Wtg [1.93 h] | 869 | 869 | 003 |
| 107400 |  | Utility station locations | 2d | 2017-08-12 A | 2017-08-12 A | 107390 | 100% | 2017-08-14 | 2017-08-16 |  |  |  | MH-Wtg [0.97 h] | 437 | 437 | 003 |

| ID | WBS | Activity | Duration | Start | Finish | Predecessors | Complete | Planned start | Planned finish | Total float | Free float | Constraint | Resources | Cost | Actual cost | UNIT DESCRIPTION |
| --- | --- | --- | --- | --- | --- | --- | --- | --- | --- | --- | --- | --- | --- | --- | --- | --- |
|  | 2 | **60% Modelling** |  | 2017-07-20 | 2018-01-05 |  |  |  |  |  |  |  |  |  |  |  |
| 107660 |  | Modelling of operating platforms | 44d | 2017-07-20 A | 2017-09-20 A | 107460 | 100% |  |  |  |  |  | MH-Wtg [3.22 h] | 1,449 | 1,449 | 003 |
| 107670 |  | Floor/wall cut out locations | 44d | 2017-07-20 A | 2017-09-20 A | 107460 FF | 100% |  |  |  |  |  | MH-Wtg [1.61 h] | 725 | 725 | 003 |
| 107480 |  | Modelling of electrical cable trays | 72d | 2017-07-21 A | 2017-10-31 A |  | 100% |  |  |  |  |  | MH-Wtg [12.88 h] | 5,796 | 5,796 | 003 |
| 107640 |  | Instrument JB locations | 43d | 2017-07-21 A | 2017-09-20 A | 107460 | 100% |  |  |  |  |  | MH-Wtg [1.61 h] | 725 | 725 | 003 |
| 107650 |  | Instrument locations | 43d | 2017-07-21 A | 2017-09-20 A | 107460 FF | 100% |  |  |  |  |  | MH-Wtg [1.61 h] | 725 | 725 | 003 |
| 107460 |  | Modelling of piping & inline instruments | 39d | 2017-07-27 A | 2017-09-20 A | 107390 | 100% |  |  |  |  |  | MH-Wtg [25.76 h] | 11,592 | 11,592 | 003 |
| 107770 |  | Preliminary MTO for piping materials | 1d | 2017-08-30 A | 2017-08-30 A | 107460 | 100% |  |  |  |  |  | MH-Wtg [3.22 h] | 1,449 | 1,449 | 003 |
| 107470 |  | Modelling of instrument cable trays (Deleted) | 5d | 2018-01-01 | 2018-01-05 | 107460 FF |  |  |  | 212d |  |  | MH-Wtg |  |  | 003 |
| 107780 |  | Preliminary MTO for insulation (Deleted) | 3d | 2018-01-01 | 2018-01-03 | 107770 |  |  |  | 214d |  | finish on or after 2017-11-10 | MH-Wtg |  |  | 003 |
|  | 3 | **90% Modelling** |  | 2017-09-25 | 2018-02-12 |  |  |  |  |  |  |  |  |  |  |  |
| 107790 |  | Modelling of pipe supports | 4d | 2017-09-25 A | 2017-09-28 A | 107460 | 100% |  |  |  |  |  | MH-Wtg [23.18 h] | 10,431 | 10,431 | 003 |
| 107800 |  | Updation of vendor data | 5d | 2018-02-06 | 2018-02-12 | 107790 FF, 113050 FS+10d |  |  |  | 114d | 0d |  | MH-Wtg [2.58 h] | 1,161 |  | 003 |
|  | 4 | **B104A- Caustic, Sulphuric Storage** |  | 2017-04-14 | 2018-04-03 |  |  |  |  |  |  |  |  |  |  |  |
|  | 1 | **30% Modelling** |  | 2017-04-14 | 2017-08-12 |  |  |  |  |  |  |  |  |  |  |  |
| 104040 |  | Preliminary layout | 1d | 2017-04-14 A | 2017-04-14 A | 105240 | 100% |  |  |  |  |  | MH-Wtg [57.95 h] | 26,078 | 26,078 | 003 |
| 104060 |  | Modelling of pits & trenches | 2d | 2017-04-15 A | 2017-04-18 A | 104040 | 100% | 2017-04-17 | 2017-04-18 |  |  |  | MH-Wtg [5.8 h] | 2,610 | 2,610 | 003 |
| 104050 |  | Modelling of equipments | 8d | 2017-05-01 A | 2017-05-10 A | 104040 | 100% |  |  |  |  |  | MH-Wtg [23.18 h] | 10,431 | 10,431 | 003 |
| 104080 |  | Nozzle orientations | 36d | 2017-06-16 A | 2017-08-04 A | 104070 | 100% |  |  |  |  |  | MH-Wtg [5.8 h] | 2,610 | 2,610 | 003 |
| 104070 |  | Basic pipe routing | 31d | 2017-06-23 A | 2017-08-04 A | 104050, 100090 FF | 100% |  |  |  |  |  | MH-Wtg [17.39 h] | 7,826 | 7,826 | 003 |
| 104100 |  | Safety shower locations | 7d | 2017-07-27 A | 2017-08-04 A | 104090 SS | 100% |  |  |  |  |  | MH-Wtg [2.9 h] | 1,305 | 1,305 | 003 |
| 104090 |  | Utility station locations | 2d | 2017-08-12 A | 2017-08-12 A | 104070 | 100% | 2017-08-14 | 2017-08-16 |  |  |  | MH-Wtg [2.9 h] | 1,305 | 1,305 | 003 |
|  | 2 | **60% Modelling** |  | 2017-06-23 | 2018-01-03 |  |  |  |  |  |  |  |  |  |  |  |
| 104110 |  | Modelling of piping & inline instruments | 63d | 2017-06-23 A | 2017-09-20 A | 104070, 100090 | 100% |  |  |  |  |  | MH-Wtg [77.27 h] | 34,772 | 34,772 | 003 |
| 104180 |  | Floor/wall cut out locations | 63d | 2017-06-23 A | 2017-09-20 A | 104110 FF | 100% |  |  |  |  |  | MH-Wtg [4.83 h] | 2,174 | 2,174 | 003 |
| 104120 |  | Modelling of instrument cable trays | 72d | 2017-07-21 A | 2017-10-31 A | 104110 FF | 100% |  |  |  |  |  | MH-Wtg [38.63 h] | 17,384 | 17,384 | 003 |
| 104130 |  | Modelling of electrical cable trays | 72d | 2017-07-21 A | 2017-10-31 A | 104120 SS | 100% |  |  |  |  |  | MH-Wtg [38.63 h] | 17,384 | 17,384 | 003 |
| 104140 |  | Instrument JB locations | 43d | 2017-07-21 A | 2017-09-20 A | 104110 | 100% |  |  |  |  |  | MH-Wtg [4.83 h] | 2,174 | 2,174 | 003 |
| 104150 |  | Instrument locations | 43d | 2017-07-21 A | 2017-09-20 A | 104110 FF | 100% |  |  |  |  |  | MH-Wtg [4.83 h] | 2,174 | 2,174 | 003 |
| 104160 |  | Motor start button locations | 43d | 2017-07-21 A | 2017-09-20 A | 104130 | 100% |  |  |  |  |  | MH-Wtg [4.83 h] | 2,174 | 2,174 | 003 |
| 104170 |  | Modelling of operating platforms | 43d | 2017-07-21 A | 2017-09-20 A | 104110 | 100% |  |  |  |  |  | MH-Wtg [4.83 h] | 2,174 | 2,174 | 003 |
| 104190 |  | Preliminary MTO for piping materials | 1d | 2017-08-30 A | 2017-08-30 A | 104110 | 100% |  |  |  |  |  | MH-Wtg [9.66 h] | 4,347 | 4,347 | 003 |
| 104200 |  | Preliminary MTO for insulation (Deleted) | 3d | 2018-01-01 | 2018-01-03 | 104190 |  |  |  | 214d |  | finish on or after 2017-11-10 | MH-Wtg |  |  | 003 |

| ID | WBS | Activity | Duration | Start | Finish | Predecessors | Complete | Remaining | Planned start | Planned finish | Total float | Free float | Resources | Cost | Actual cost | UNIT DESCRIPTION |
| --- | --- | --- | --- | --- | --- | --- | --- | --- | --- | --- | --- | --- | --- | --- | --- | --- |
|  | 3 | **90% Modelling** |  | 2017-08-20 | 2018-04-03 |  |  |  |  |  |  |  |  |  |  |  |
| 104210 |  | Modelling of pipe supports | 5d | 2017-08-20 A | 2017-08-26 A | 104110 | 100% |  | 2017-08-21 | 2017-08-25 |  |  | MH-Wtg [69.54 h] | 31,293 | 31,293 | 003 |
| 104220 |  | Updation of vendor data | 98d | 2017-11-16 A | 2018-04-03 | 104210 FF, 112940 FS+10d, 113250 FF+15d | 90% | 10d |  |  | 83d | 0d | MH-Wtg [7.73 h] | 3,479 | 3,124 | 003 |
|  | 5 | **B104B- HSD Storage (Deleted)** |  | 2017-04-14 | 2018-01-19 |  |  |  |  |  |  |  |  |  |  |  |
|  | 1 | **30% Modelling** |  | 2017-04-14 | 2018-01-05 |  |  |  |  |  |  |  |  |  |  |  |
| 104230 |  | Preliminary layout (Deleted) | 5d | 2017-04-14 A | 2017-04-14 A | 105510 | 100% |  | 2017-04-13 | 2017-04-19 |  |  | MH-Wtg |  |  | 003 |
| 104240 |  | Modelling of equipments (Deleted) | 5d | 2018-01-01 | 2018-01-05 | 104070 |  |  |  |  | 212d |  | MH-Wtg |  |  | 003 |
| 104250 |  | Modelling of pits & trenches (Deleted) | 3d | 2018-01-01 | 2018-01-03 |  |  |  |  |  | 214d |  | MH-Wtg |  |  | 003 |
| 104260 |  | Basic pipe routing (Deleted) | 5d | 2018-01-01 | 2018-01-05 |  |  |  |  |  | 212d |  | MH-Wtg |  |  | 003 |
| 104270 |  | Nozzle orientations (Deleted) | 3d | 2018-01-01 | 2018-01-03 |  |  |  |  |  | 214d |  | MH-Wtg |  |  | 003 |
| 104280 |  | Utility station locations (Deleted) | 1d | 2018-01-01 | 2018-01-01 |  |  |  |  |  | 216d |  | MH-Wtg |  |  | 003 |
|  | 2 | **60% Modelling** |  | 2018-01-01 | 2018-01-19 |  |  |  |  |  |  |  |  |  |  |  |
| 104290 |  | Modelling of piping & inline instruments (Deleted) | 15d | 2018-01-01 | 2018-01-19 |  |  |  |  |  | 202d |  | MH-Wtg |  |  | 003 |
| 104300 |  | Modelling of instrument cable trays (Deleted) | 3d | 2018-01-01 | 2018-01-03 |  |  |  |  |  | 214d |  | MH-Wtg |  |  | 003 |
| 104310 |  | Modelling of electrical cable trays (Deleted) | 3d | 2018-01-01 | 2018-01-03 |  |  |  |  |  | 214d |  | MH-Wtg |  |  | 003 |
| 104320 |  | Instrument JB locations (Deleted) | 2d | 2018-01-01 | 2018-01-02 |  |  |  |  |  | 215d |  | MH-Wtg |  |  | 003 |
| 104330 |  | Instrument locations (Deleted) | 2d | 2018-01-01 | 2018-01-02 |  |  |  |  |  | 215d |  | MH-Wtg |  |  | 003 |
| 104340 |  | Motor start button locations (Deleted) | 2d | 2018-01-01 | 2018-01-02 |  |  |  |  |  | 215d |  | MH-Wtg |  |  | 003 |
| 104350 |  | Modelling of operating platforms (Deleted) | 2d | 2018-01-01 | 2018-01-02 |  |  |  |  |  | 215d |  | MH-Wtg |  |  | 003 |
| 104360 |  | Floor/wall cut out locations (Deleted) | 3d | 2018-01-01 | 2018-01-03 |  |  |  |  |  | 214d |  | MH-Wtg |  |  | 003 |
| 104370 |  | Preliminary MTO for piping materials (Deleted) | 3d | 2018-01-01 | 2018-01-03 |  |  |  |  |  | 214d |  | MH-Wtg |  |  | 003 |
|  | 3 | **90% Modelling** |  | 2018-01-01 | 2018-01-12 |  |  |  |  |  |  |  |  |  |  |  |
| 104380 |  | Modelling of pipe supports (Deleted) | 10d | 2018-01-01 | 2018-01-12 |  |  |  |  |  | 207d |  | MH-Wtg |  |  | 003 |
| 104390 |  | Updation of vendor data (Deleted) | 5d | 2018-01-01 | 2018-01-05 | 112940 FS+10d |  |  |  |  | 212d |  | MH-Wtg |  |  | 003 |

| ID | WBS | Activity | Duration | Start | Finish | Predecessors | Complete | Planned start | Planned finish | Total float | Free float | Resources | Cost | Actual cost | UNIT DESCRIPTION |
| --- | --- | --- | --- | --- | --- | --- | --- | --- | --- | --- | --- | --- | --- | --- | --- |
|  | 6 | **B104C-Liquid NH3 Storage** |  | 2017-03-31 | 2018-04-03 |  |  |  |  |  |  |  |  |  |  |
|  | 1 | **30% Modelling** |  | 2017-03-31 | 2017-12-05 |  |  |  |  |  |  |  |  |  |  |
| 104400 |  | Preliminary layout | 9d | 2017-03-31 A | 2017-04-12 A | 104040, 100050.2 FF | 100% |  |  |  |  | MH-Wtg [32.2 h] | 14,490 | 14,490 | 003 |
| 104410 |  | Modelling of equipments | 10d | 2017-05-01 A | 2017-05-12 A | 104400 | 100% |  |  |  |  | MH-Wtg [12.88 h] | 5,796 | 5,796 | 003 |
| 104420 |  | Modelling of pits & trenches | 9d | 2017-07-25 A | 2017-08-04 A | 104400 | 100% |  |  |  |  | MH-Wtg [3.22 h] | 1,449 | 1,449 | 003 |
| 104440 |  | Nozzle orientations | 9d | 2017-07-25 A | 2017-08-04 A | 104430 | 100% |  |  |  |  | MH-Wtg [3.22 h] | 1,449 | 1,449 | 003 |
| 104460 |  | Safety shower locations | 7d | 2017-07-27 A | 2017-08-04 A | 104450 SS | 100% |  |  |  |  | MH-Wtg [1.61 h] | 725 | 725 | 003 |
| 104430 |  | Basic pipe routing | 3d | 2017-08-10 A | 2017-08-14 A | 104410, 100090 FF | 100% |  |  |  |  | MH-Wtg [9.66 h] | 4,347 | 4,347 | 003 |
| 104450 |  | Utility station locations | 3d | 2017-12-01 A | 2017-12-05 A | 104430 | 100% |  |  |  |  | MH-Wtg [1.61 h] | 725 | 725 | 003 |
|  | 2 | **60% Modelling** |  | 2017-07-22 | 2017-11-10 |  |  |  |  |  |  |  |  |  |  |
| 104530 |  | Modelling of operating platforms | 42d | 2017-07-22 A | 2017-09-20 A | 104470 | 100% | 2017-07-24 | 2017-09-20 |  |  | MH-Wtg [2.68 h] | 1,206 | 1,206 | 003 |
| 104540 |  | Floor/wall cut out locations | 42d | 2017-07-22 A | 2017-09-20 A | 104470 FF | 100% | 2017-07-24 | 2017-09-20 |  |  | MH-Wtg [2.68 h] | 1,206 | 1,206 | 003 |
| 104480 |  | Modelling of instrument cable trays | 70d | 2017-07-25 A | 2017-10-31 A | 104470 FF | 100% |  |  |  |  | MH-Wtg [21.46 h] | 9,657 | 9,657 | 003 |
| 104490 |  | Modelling of electrical cable trays | 70d | 2017-07-25 A | 2017-10-31 A | 104480 SS | 100% |  |  |  |  | MH-Wtg [21.46 h] | 9,657 | 9,657 | 003 |
| 104500 |  | Instrument JB locations | 41d | 2017-07-25 A | 2017-09-20 A | 104470 | 100% |  |  |  |  | MH-Wtg [2.68 h] | 1,206 | 1,206 | 003 |
| 104510 |  | Instrument locations | 41d | 2017-07-25 A | 2017-09-20 A | 104470 FF | 100% |  |  |  |  | MH-Wtg [2.68 h] | 1,206 | 1,206 | 003 |
| 104520 |  | Motor start button locations | 41d | 2017-07-25 A | 2017-09-20 A | 104490 | 100% |  |  |  |  | MH-Wtg [2.68 h] | 1,206 | 1,206 | 003 |
| 104470 |  | Modelling of piping & inline instruments | 51d | 2017-08-16 A | 2017-10-25 A | 104430, 100090 | 100% |  |  |  |  | MH-Wtg [42.93 h] | 19,319 | 19,319 | 003 |
| 104550 |  | Preliminary MTO for piping materials | 1d | 2017-08-30 A | 2017-08-30 A | 104470 | 100% |  |  |  |  | MH-Wtg [5.37 h] | 2,417 | 2,417 | 003 |
| 104560 |  | Preliminary MTO for insulation | 6d | 2017-11-03 A | 2017-11-10 A | 104550, 103390 FF-10d | 100% |  |  |  |  | MH-Wtg [2.68 h] | 1,206 | 1,206 | 003 |
|  | 3 | **90% Modelling** |  | 2017-11-28 | 2018-04-03 |  |  |  |  |  |  |  |  |  |  |
| 104570 |  | Modelling of pipe supports | 11d | 2017-11-28 A | 2017-12-12 A | 104470 | 100% |  |  |  |  | MH-Wtg [38.63 h] | 17,384 | 17,384 | 003 |
| 104580 |  | Updation of vendor data | 10d | 2018-03-21 | 2018-04-03 | 104570 FF, 113250 FF+15d, 113101.1, 113101.9.3 FF+15d, 113101.9.2 FF+15d |  |  |  | 88d | 0d | MH-Wtg [4.29 h] | 1,931 |  | 003 |
|  | 19 | **B104E- SNA** |  | 2017-04-15 | 2018-04-03 |  |  |  |  |  |  |  |  |  |  |
|  | 1 | **30% Modelling** |  | 2017-04-15 | 2017-08-12 |  |  |  |  |  |  |  |  |  |  |
| 113750 |  | Preliminary layout | 8d | 2017-04-15 A | 2017-04-15 A | 104040 | 100% | 2017-04-17 | 2017-04-26 |  |  | MH-Wtg [25.76 h] | 11,592 | 11,592 | 003 |
| 113760 |  | Modelling of equipments | 36d | 2017-06-16 A | 2017-08-04 A | 113750 | 100% |  |  |  |  | MH-Wtg [10.3 h] | 4,635 | 4,635 | 003 |
| 113770 |  | Modelling of structure | 36d | 2017-06-16 A | 2017-08-04 A | 113760 | 100% |  |  |  |  | MH-Wtg [2.58 h] | 1,161 | 1,161 | 003 |
| 113780 |  | Modelling of pits & trenches | 36d | 2017-06-16 A | 2017-08-04 A | 113750 | 100% |  |  |  |  | MH-Wtg [1.29 h] | 581 | 581 | 003 |
| 113790 |  | Basic pipe routing | 31d | 2017-06-23 A | 2017-08-04 A | 113760, 100090 FF | 100% |  |  |  |  | MH-Wtg [7.73 h] | 3,479 | 3,479 | 003 |
| 113800 |  | Nozzle orientations | 31d | 2017-06-23 A | 2017-08-04 A | 113790 | 100% |  |  |  |  | MH-Wtg [1.29 h] | 581 | 581 | 003 |
| 113830 |  | Safety shower locations | 7d | 2017-07-27 A | 2017-08-04 A | 113820 SS | 100% |  |  |  |  | MH-Wtg [1.29 h] | 581 | 581 | 003 |
| 113820 |  | Utility station locations | 2d | 2017-08-12 A | 2017-08-12 A | 113790 | 100% | 2017-08-14 | 2017-08-16 |  |  | MH-Wtg [1.29 h] | 581 | 581 | 003 |

| ID | WBS | Activity | Duration | Start | Finish | Predecessors | Complete | Remaining | Planned start | Planned finish | Total float | Free float | Constraint | Resources | Cost | Actual cost | UNIT DESCRIPTION |
| --- | --- | --- | --- | --- | --- | --- | --- | --- | --- | --- | --- | --- | --- | --- | --- | --- | --- |
|  | 2 | **60% Modelling** |  | 2017-06-23 | 2018-01-03 |  |  |  |  |  |  |  |  |  |  |  |  |
| 113840 |  | Modelling of piping & inline instruments | 63d | 2017-06-23 A | 2017-09-20 A | 100090, 113790 | 100% |  |  |  |  |  |  | MH-Wtg [34.34 h] | 15,453 | 15,453 | 003 |
| 113910 |  | Modelling of operating platforms | 50d | 2017-07-12 A | 2017-09-20 A | 113840 | 100% |  |  |  |  |  |  | MH-Wtg [2.15 h] | 968 | 968 | 003 |
| 113920 |  | Floor/wall cut out locations | 50d | 2017-07-12 A | 2017-09-20 A | 113840 FF | 100% |  |  |  |  |  |  | MH-Wtg [2.15 h] | 968 | 968 | 003 |
| 113850 |  | Modelling of instrument cable trays | 73d | 2017-07-20 A | 2017-10-31 A | 113840 FF | 100% |  |  |  |  |  |  | MH-Wtg [17.17 h] | 7,727 | 7,727 | 003 |
| 113860 |  | Modelling of electrical cable trays | 73d | 2017-07-20 A | 2017-10-31 A | 113850 SS | 100% |  |  |  |  |  |  | MH-Wtg [17.17 h] | 7,727 | 7,727 | 003 |
| 113870 |  | Instrument JB locations | 44d | 2017-07-20 A | 2017-09-20 A | 113840 | 100% |  |  |  |  |  |  | MH-Wtg [2.15 h] | 968 | 968 | 003 |
| 113890 |  | Instrument locations | 44d | 2017-07-20 A | 2017-09-20 A | 113840 FF | 100% |  |  |  |  |  |  | MH-Wtg [2.15 h] | 968 | 968 | 003 |
| 113900 |  | Motor start button locations | 44d | 2017-07-20 A | 2017-09-20 A | 113860 | 100% |  |  |  |  |  |  | MH-Wtg [2.15 h] | 968 | 968 | 003 |
| 113930 |  | Preliminary MTO for piping materials | 1d | 2017-08-30 A | 2017-08-30 A | 113840 | 100% |  |  |  |  |  |  | MH-Wtg [4.29 h] | 1,931 | 1,931 | 003 |
| 113940 |  | Preliminary MTO for insulation (Deleted) | 3d | 2018-01-01 | 2018-01-03 | 113930 |  |  |  |  | 214d |  | finish on or after 2017-11-10 | MH-Wtg |  |  | 003 |
|  | 3 | **90% Modelling** |  | 2017-07-20 | 2018-04-03 |  |  |  |  |  |  |  |  |  |  |  |  |
| 113960 |  | Modelling of pipe supports | 30d | 2017-07-20 A | 2017-08-31 A | 113840 | 100% |  |  |  |  |  |  | MH-Wtg [30.91 h] | 13,910 | 13,910 | 003 |
| 113970 |  | Updation of vendor data | 98d | 2017-11-16 A | 2018-04-03 | 113960 FF, 112940 FS+10d, 113250 FF+15d | 90% | 10d |  |  | 63d | 0d |  | MH-Wtg [3.43 h] | 1,544 | 1,386 | 003 |
|  | 20 | **B104F- SNA Tanker Unloading** |  | 2017-04-15 | 2018-02-12 |  |  |  |  |  |  |  |  |  |  |  |  |
|  | 1 | **30% Modelling** |  | 2017-04-15 | 2017-08-18 |  |  |  |  |  |  |  |  |  |  |  |  |
| 113980 |  | Preliminary layout | 3d | 2017-04-15 A | 2017-04-15 A | 113750 | 100% |  | 2017-04-17 | 2017-04-19 |  |  |  | MH-Wtg [19.32 h] | 8,694 | 8,694 | 003 |
| 113990 |  | Modelling of structure | 36d | 2017-06-16 A | 2017-08-04 A | 113980 | 100% |  |  |  |  |  |  | MH-Wtg [7.73 h] | 3,479 | 3,479 | 003 |
| 114010 |  | Modelling of pits & trenches | 15d | 2017-07-15 A | 2017-08-04 A | 113980 | 100% |  | 2017-07-17 | 2017-08-04 |  |  |  | MH-Wtg [1.93 h] | 869 | 869 | 003 |
| 114050 |  | Safety shower locations | 1d | 2017-07-27 A | 2017-07-27 A | 114040 SS | 100% |  |  |  |  |  |  | MH-Wtg [0.97 h] | 437 | 437 | 003 |
| 114000 |  | Modelling of equipments | 4d | 2017-08-01 A | 2017-08-04 A | 113990 | 100% |  |  |  |  |  |  | MH-Wtg [1.93 h] | 869 | 869 | 003 |
| 114030 |  | Basic pipe routing | 4d | 2017-08-12 A | 2017-08-18 A | 113990, 113840 | 100% |  | 2017-08-14 | 2017-08-18 |  |  |  | MH-Wtg [5.8 h] | 2,610 | 2,610 | 003 |
| 114040 |  | Utility station locations | 2d | 2017-08-12 A | 2017-08-12 A | 114030 | 100% |  | 2017-08-14 | 2017-08-16 |  |  |  | MH-Wtg [0.97 h] | 437 | 437 | 003 |
|  | 2 | **60% Modelling** |  | 2017-07-13 | 2018-01-05 |  |  |  |  |  |  |  |  |  |  |  |  |
| 114110 |  | Modelling of operating platforms | 49d | 2017-07-13 A | 2017-09-20 A | 114060 | 100% |  |  |  |  |  |  | MH-Wtg [3.22 h] | 1,449 | 1,449 | 003 |
| 114120 |  | Floor/wall cut out locations | 49d | 2017-07-13 A | 2017-09-20 A | 114060 FF | 100% |  |  |  |  |  |  | MH-Wtg [1.61 h] | 725 | 725 | 003 |
| 114080 |  | Modelling of electrical cable trays | 73d | 2017-07-20 A | 2017-10-31 A |  | 100% |  |  |  |  |  |  | MH-Wtg [12.88 h] | 5,796 | 5,796 | 003 |
| 114090 |  | Instrument JB locations | 44d | 2017-07-20 A | 2017-09-20 A | 114060 | 100% |  |  |  |  |  |  | MH-Wtg [1.61 h] | 725 | 725 | 003 |
| 114100 |  | Instrument locations | 44d | 2017-07-20 A | 2017-09-20 A | 114060 FF | 100% |  |  |  |  |  |  | MH-Wtg [1.61 h] | 725 | 725 | 003 |
| 114060 |  | Modelling of piping & inline instruments | 4d | 2017-08-19 A | 2017-08-24 A | 114030 | 100% |  | 2017-08-21 | 2017-08-24 |  |  |  | MH-Wtg [25.76 h] | 11,592 | 11,592 | 003 |
| 114130 |  | Preliminary MTO for piping materials | 1d | 2017-08-30 A | 2017-08-30 A | 114060 | 100% |  |  |  |  |  |  | MH-Wtg [3.22 h] | 1,449 | 1,449 | 003 |
| 114070 |  | Modelling of instrument cable trays (Deleted) | 5d | 2018-01-01 | 2018-01-05 | 114060 FF |  |  |  |  | 212d |  |  | MH-Wtg |  |  | 003 |
| 114140 |  | Preliminary MTO for insulation (Deleted) | 3d | 2018-01-01 | 2018-01-03 | 114130 |  |  |  |  | 214d |  |  | MH-Wtg |  |  | 003 |

| ID | WBS | Activity | Duration | Start | Finish | Predecessors | Complete | Planned start | Planned finish | Total float | Free float | Resources | Cost | Actual cost | UNIT DESCRIPTION |
| --- | --- | --- | --- | --- | --- | --- | --- | --- | --- | --- | --- | --- | --- | --- | --- |
|  | 3 | **90% Modelling** |  | 2017-08-22 | 2018-02-12 |  |  |  |  |  |  |  |  |  |  |
| 114150 |  | Modelling of pipe supports | 4d | 2017-08-22 A | 2017-08-25 A | 114060 | 100% |  |  |  |  | MH-Wtg [23.18 h] | 10,431 | 10,431 | 003 |
| 114170 |  | Updation of vendor data | 5d | 2018-02-06 | 2018-02-12 | 114150 FF, 113050 FS+10d |  |  |  | 117d | 0d | MH-Wtg [2.58 h] | 1,161 |  | 003 |
|  | 7 | **B105A- Air Compressor** |  | 2017-08-01 | 2017-12-05 |  |  |  |  |  |  |  |  |  |  |
|  | 1 | **30% Modelling** |  | 2017-08-01 | 2017-12-05 |  |  |  |  |  |  |  |  |  |  |
| 104590 |  | Preliminary layout | 22d | 2017-08-01 A | 2017-08-31 A | 112990 FS+10d | 100% |  |  |  |  | MH-Wtg [77.27 h] | 34,772 | 34,772 | 003 |
| 104600 |  | Modelling of structure | 4d | 2017-08-01 A | 2017-08-05 A | 104590 | 100% | 2017-08-01 | 2017-08-04 |  |  | MH-Wtg [30.91 h] | 13,910 | 13,910 | 003 |
| 104610 |  | Modelling of equipments | 22d | 2017-08-01 A | 2017-08-31 A | 104600 | 100% |  |  |  |  | MH-Wtg [15.45 h] | 6,953 | 6,953 | 003 |
| 104620 |  | Modelling of pits & trenches | 4d | 2017-08-01 A | 2017-08-04 A | 104590 | 100% |  |  |  |  | MH-Wtg [3.86 h] | 1,737 | 1,737 | 003 |
| 104630 |  | Basic pipe routing | 4d | 2017-09-25 A | 2017-09-28 A | 104610, 100090 FF | 100% |  |  |  |  | MH-Wtg [23.18 h] | 10,431 | 10,431 | 003 |
| 104640 |  | Utility station locations | 3d | 2017-12-01 A | 2017-12-05 A | 104630 | 100% |  |  |  |  | MH-Wtg [3.86 h] | 1,737 | 1,737 | 003 |
|  | 2 | **60% Modelling** |  | 2017-09-12 | 2017-10-31 |  |  |  |  |  |  |  |  |  |  |
| 104660 |  | Modelling of instrument cable trays | 36d | 2017-09-12 A | 2017-10-31 A | 104650 FF | 100% |  |  |  |  | MH-Wtg [51.51 h] | 23,180 | 23,180 | 003 |
| 104670 |  | Modelling of electrical cable trays | 36d | 2017-09-12 A | 2017-10-31 A | 104660 SS | 100% |  |  |  |  | MH-Wtg [51.51 h] | 23,180 | 23,180 | 003 |
| 104650 |  | Modelling of piping & inline instruments | 19d | 2017-09-26 A | 2017-10-20 A | 104630, 100090 | 100% |  |  |  |  | MH-Wtg [103.02 h] | 46,359 | 46,359 | 003 |
| 104680 |  | Instrument JB locations | 1d | 2017-09-28 A | 2017-09-28 A | 104650 | 100% |  |  |  |  | MH-Wtg [12.88 h] | 5,796 | 5,796 | 003 |
| 104690 |  | Instrument locations | 1d | 2017-09-28 A | 2017-09-28 A | 104650 FF | 100% |  |  |  |  | MH-Wtg [12.88 h] | 5,796 | 5,796 | 003 |
| 104720 |  | Preliminary MTO for piping materials | 1d | 2017-09-28 A | 2017-09-28 A | 104650 | 100% |  |  |  |  | MH-Wtg [12.88 h] | 5,796 | 5,796 | 003 |
| 104700 |  | Modelling of operating platforms | 1d | 2017-10-31 A | 2017-10-31 A | 104650 | 100% |  |  |  |  | MH-Wtg [6.44 h] | 2,898 | 2,898 | 003 |
| 104710 |  | Floor/wall cut out locations | 1d | 2017-10-31 A | 2017-10-31 A | 104650 FF | 100% |  |  |  |  | MH-Wtg [6.44 h] | 2,898 | 2,898 | 003 |
|  | 3 | **90% Modelling** |  | 2017-11-01 | 2017-11-14 |  |  |  |  |  |  |  |  |  |  |
| 104730 |  | Modelling of pipe supports | 10d | 2017-11-01 A | 2017-11-14 A | 104650 | 100% |  |  |  |  | MH-Wtg [92.72 h] | 41,724 | 41,724 | 003 |
| 104740 |  | Updation of vendor data | 4d | 2017-11-03 A | 2017-11-08 A | 104730 FF, 112990 FS+10d | 100% |  |  |  |  | MH-Wtg [10.3 h] | 4,635 | 4,635 | 003 |
|  | 8 | **B105B- Air Drier** |  | 2017-08-01 | 2017-12-05 |  |  |  |  |  |  |  |  |  |  |
|  | 1 | **30% Modelling** |  | 2017-08-01 | 2017-12-05 |  |  |  |  |  |  |  |  |  |  |
| 104750 |  | Preliminary layout | 22d | 2017-08-01 A | 2017-08-31 A | 113000 FS+10d | 100% |  |  |  |  | MH-Wtg [25.76 h] | 11,592 | 11,592 | 003 |
| 104760 |  | Modelling of structure | 4d | 2017-08-01 A | 2017-08-05 A | 104750 | 100% | 2017-08-01 | 2017-08-04 |  |  | MH-Wtg [10.3 h] | 4,635 | 4,635 | 003 |
| 104770 |  | Modelling of equipments | 22d | 2017-08-01 A | 2017-08-31 A | 104760 | 100% |  |  |  |  | MH-Wtg [5.15 h] | 2,318 | 2,318 | 003 |
| 104780 |  | Modelling of pits & trenches | 4d | 2017-08-01 A | 2017-08-04 A | 104750 | 100% |  |  |  |  | MH-Wtg [1.29 h] | 581 | 581 | 003 |
| 104790 |  | Basic pipe routing | 4d | 2017-09-25 A | 2017-09-28 A | 104770, 100090 FF | 100% |  |  |  |  | MH-Wtg [7.73 h] | 3,479 | 3,479 | 003 |
| 104800 |  | Utility station locations | 3d | 2017-12-01 A | 2017-12-05 A | 104790 | 100% |  |  |  |  | MH-Wtg [1.29 h] | 581 | 581 | 003 |

| ID | WBS | Activity | Duration | Start | Finish | Predecessors | Complete | Total float | Resources | Cost | Actual cost | UNIT DESCRIPTION |
| --- | --- | --- | --- | --- | --- | --- | --- | --- | --- | --- | --- | --- |
|  | 2 | **60% Modelling** |  | 2017-09-12 | 2017-10-31 |  |  |  |  |  |  |  |
| 104820 |  | Modelling of instrument cable trays | 36d | 2017-09-12 A | 2017-10-31 A | 104810 FF | 100% |  | MH-Wtg [17.17 h] | 7,727 | 7,727 | 003 |
| 104830 |  | Modelling of electrical cable trays | 36d | 2017-09-12 A | 2017-10-31 A | 104820 SS | 100% |  | MH-Wtg [17.17 h] | 7,727 | 7,727 | 003 |
| 104810 |  | Modelling of piping & inline instruments | 20d | 2017-09-25 A | 2017-10-20 A | 100090, 104790 | 100% |  | MH-Wtg [34.34 h] | 15,453 | 15,453 | 003 |
| 104840 |  | Instrument JB locations | 1d | 2017-09-28 A | 2017-09-28 A | 104810 | 100% |  | MH-Wtg [4.29 h] | 1,931 | 1,931 | 003 |
| 104850 |  | Instrument locations | 1d | 2017-09-28 A | 2017-09-28 A | 104810 FF | 100% |  | MH-Wtg [4.29 h] | 1,931 | 1,931 | 003 |
| 104880 |  | Preliminary MTO for piping materials | 1d | 2017-09-28 A | 2017-09-28 A | 104810 | 100% |  | MH-Wtg [4.29 h] | 1,931 | 1,931 | 003 |
| 104860 |  | Modelling of operating platforms | 1d | 2017-10-31 A | 2017-10-31 A | 104810 | 100% |  | MH-Wtg [2.15 h] | 968 | 968 | 003 |
| 104870 |  | Floor/wall cut out locations | 1d | 2017-10-31 A | 2017-10-31 A | 104810 FF | 100% |  | MH-Wtg [2.15 h] | 968 | 968 | 003 |
|  | 3 | **90% Modelling** |  | 2017-11-01 | 2017-11-08 |  |  |  |  |  |  |  |
| 104890 |  | Modelling of pipe supports | 6d | 2017-11-01 A | 2017-11-08 A | 104810 | 100% |  | MH-Wtg [30.91 h] | 13,910 | 13,910 | 003 |
| 104900 |  | Updation of vendor data | 4d | 2017-11-03 A | 2017-11-08 A | 104890 FF, 113000 FS+10d | 100% |  | MH-Wtg [3.43 h] | 1,544 | 1,544 | 003 |
|  | 9 | **B105C- VAM Unit (Package)** |  | 2018-01-01 | 2018-01-19 |  |  |  |  |  |  |  |
|  | 1 | **30% Modelling** |  | 2018-01-01 | 2018-01-12 |  |  |  |  |  |  |  |
| 104910 |  | Preliminary layout (Package vendor) | 10d | 2018-01-01 | 2018-01-12 | 113010 FS+10d |  | 207d | MH-Wtg |  |  | 003 |
| 104920 |  | Modelling of structure (Package vendor) | 5d | 2018-01-01 | 2018-01-05 |  |  | 212d | MH-Wtg |  |  | 003 |
| 104930 |  | Modelling of equipments (Package vendor) | 5d | 2018-01-01 | 2018-01-05 |  |  | 212d | MH-Wtg |  |  | 003 |
| 104940 |  | Modelling of pits & trenches (Package vendor) | 3d | 2018-01-01 | 2018-01-03 |  |  | 214d | MH-Wtg |  |  | 003 |
| 104950 |  | Basic pipe routing (Package vendor) | 8d | 2018-01-01 | 2018-01-10 | 100090 FF |  | 209d | MH-Wtg |  |  | 003 |
| 104960 |  | Utility station locations (Package vendor) | 2d | 2018-01-01 | 2018-01-02 |  |  | 215d | MH-Wtg |  |  | 003 |
|  | 2 | **60% Modelling** |  | 2018-01-01 | 2018-01-19 |  |  |  |  |  |  |  |
| 104970 |  | Modelling of piping & inline instruments (Package vendor) | 15d | 2018-01-01 | 2018-01-19 | 100090 |  | 202d | MH-Wtg |  |  | 003 |
| 104980 |  | Modelling of instrument cable trays (Package vendor) | 5d | 2018-01-01 | 2018-01-05 |  |  | 212d | MH-Wtg |  |  | 003 |
| 104990 |  | Modelling of electrical cable trays (Package vendor) | 5d | 2018-01-01 | 2018-01-05 |  |  | 212d | MH-Wtg |  |  | 003 |
| 105000 |  | Instrument JB locations (Package vendor) | 2d | 2018-01-01 | 2018-01-02 |  |  | 215d | MH-Wtg |  |  | 003 |
| 105010 |  | Instrument locations (Package vendor) | 3d | 2018-01-01 | 2018-01-03 |  |  | 214d | MH-Wtg |  |  | 003 |
| 105020 |  | Modelling of operating platforms (Package vendor) | 3d | 2018-01-01 | 2018-01-03 |  |  | 214d | MH-Wtg |  |  | 003 |
| 105030 |  | Floor/wall cut out locations (Package vendor) | 2d | 2018-01-01 | 2018-01-02 |  |  | 215d | MH-Wtg |  |  | 003 |
| 105040 |  | Preliminary MTO for piping materials (Package vendor) | 3d | 2018-01-01 | 2018-01-03 |  |  | 214d | MH-Wtg |  |  | 003 |
| 105050 |  | Preliminary MTO for insulation (Package vendor) | 2d | 2018-01-01 | 2018-01-02 |  |  | 215d | MH-Wtg |  |  | 003 |

| ID | WBS | Activity | Duration | Start | Finish | Predecessors | Complete | Planned start | Planned finish | Total float | Resources | Cost | Actual cost | UNIT DESCRIPTION |
| --- | --- | --- | --- | --- | --- | --- | --- | --- | --- | --- | --- | --- | --- | --- |
|  | 3 | **90% Modelling** |  | 2018-01-01 | 2018-01-19 |  |  |  |  |  |  |  |  |  |
| 105060 |  | Modelling of pipe supports (Package vendor) | 15d | 2018-01-01 | 2018-01-19 |  |  |  |  | 202d | MH-Wtg |  |  | 003 |
| 105070 |  | Updation of vendor data (Package vendor) | 10d | 2018-01-01 | 2018-01-12 | 113010 FS+10d |  |  |  | 207d | MH-Wtg |  |  | 003 |
|  | 10 | **B105D- Hot Well/Cold Well, Pumps (Package)** |  | 2018-01-01 | 2018-01-19 |  |  |  |  |  |  |  |  |  |
|  | 1 | **30% Modelling** |  | 2018-01-01 | 2018-01-12 |  |  |  |  |  |  |  |  |  |
| 105080 |  | Preliminary layout (Package vendor) | 8d | 2018-01-01 | 2018-01-10 |  |  |  |  | 209d | MH-Wtg |  |  | 003 |
| 105090 |  | Modelling of equipments (Package vendor) | 8d | 2018-01-01 | 2018-01-10 |  |  |  |  | 209d | MH-Wtg |  |  | 003 |
| 105100 |  | Modelling of pits & trenches (Package vendor) | 5d | 2018-01-01 | 2018-01-05 |  |  |  |  | 212d | MH-Wtg |  |  | 003 |
| 105110 |  | Basic pipe routing (Package vendor) | 10d | 2018-01-01 | 2018-01-12 | 100090 FF |  |  |  | 207d | MH-Wtg |  |  | 003 |
| 105120 |  | Utility station locations (Package vendor) | 2d | 2018-01-01 | 2018-01-02 |  |  |  |  | 215d | MH-Wtg |  |  | 003 |
|  | 2 | **60% Modelling** |  | 2018-01-01 | 2018-01-19 |  |  |  |  |  |  |  |  |  |
| 105130 |  | Modelling of piping & inline instruments (Package vendor) | 15d | 2018-01-01 | 2018-01-19 | 100090 |  |  |  | 202d | MH-Wtg |  |  | 003 |
| 105140 |  | Modelling of instrument cable trays (Package vendor) | 8d | 2018-01-01 | 2018-01-10 |  |  |  |  | 209d | MH-Wtg |  |  | 003 |
| 105150 |  | Modelling of electrical cable trays (Package vendor) | 8d | 2018-01-01 | 2018-01-10 |  |  |  |  | 209d | MH-Wtg |  |  | 003 |
| 105160 |  | Instrument JB locations (Package vendor) | 3d | 2018-01-01 | 2018-01-03 |  |  |  |  | 214d | MH-Wtg |  |  | 003 |
| 105170 |  | Instrument locations (Package vendor) | 5d | 2018-01-01 | 2018-01-05 |  |  |  |  | 212d | MH-Wtg |  |  | 003 |
| 105180 |  | Modelling of operating platforms (Package vendor) | 3d | 2018-01-01 | 2018-01-03 |  |  |  |  | 214d | MH-Wtg |  |  | 003 |
| 105190 |  | Floor/wall cut out locations (Package vendor) | 5d | 2018-01-01 | 2018-01-05 |  |  |  |  | 212d | MH-Wtg |  |  | 003 |
| 105200 |  | Preliminary MTO for piping materials (Package vendor) | 3d | 2018-01-01 | 2018-01-03 |  |  |  |  | 214d | MH-Wtg |  |  | 003 |
| 105210 |  | Preliminary MTO for insulation (Package vendor) | 2d | 2018-01-01 | 2018-01-02 |  |  |  |  | 215d | MH-Wtg |  |  | 003 |
|  | 3 | **90% Modelling** |  | 2018-01-01 | 2018-01-19 |  |  |  |  |  |  |  |  |  |
| 105220 |  | Modelling of pipe supports (Package vendor) | 15d | 2018-01-01 | 2018-01-19 |  |  |  |  | 202d | MH-Wtg |  |  | 003 |
| 105230 |  | Updation of vendor data (Package vendor) | 10d | 2018-01-01 | 2018-01-12 | 112940 FS+10d |  |  |  | 207d | MH-Wtg |  |  | 003 |
|  | 21 | **B106D- Condensate Storage, Pumps** |  | 2017-09-28 | 2018-03-12 |  |  |  |  |  |  |  |  |  |
|  | 1 | **30% Modelling** |  | 2017-09-28 | 2018-03-12 |  |  |  |  |  |  |  |  |  |
| 114530 |  | Preliminary layout | 1d | 2017-09-28 A | 2017-09-28 A |  | 100% |  |  |  | MH-Wtg [15 h] | 6,750 | 6,750 | 003 |
| 114540 |  | Modelling of equipments | 5d | 2017-09-29 A | 2017-10-05 A | 114530 | 100% |  |  |  | MH-Wtg [10 h] | 4,500 | 4,500 | 003 |
| 114560 |  | Modelling of pits & trenches | 1d | 2017-10-05 A | 2017-10-05 A | 114530 | 100% |  |  |  | MH-Wtg [3 h] | 1,350 | 1,350 | 003 |
| 114570 |  | Basic pipe routing | 4d | 2017-10-10 A | 2017-10-15 A | 114540 | 100% | 2017-10-10 | 2017-10-13 |  | MH-Wtg [8 h] | 3,600 | 3,600 | 003 |
| 114590 |  | Nozzle orientations | 8d | 2017-11-10 A | 2017-11-21 A | 114570 | 100% |  |  |  | MH-Wtg [1 h] | 450 | 450 | 003 |
| 114600 |  | Utility station locations | 5d | 2017-12-01 A | 2017-12-07 A | 114570 | 100% |  |  |  | MH-Wtg [1 h] | 450 | 450 | 003 |
| 114470 |  | Preliminary layout (Package vendor) | 8d | 2018-01-01 | 2018-01-10 |  |  |  |  | 209d | MH-Wtg |  |  | 003 |
| 114480 |  | Modelling of equipments (Package vendor) | 8d | 2018-01-01 | 2018-01-10 |  |  |  |  | 209d | MH-Wtg |  |  | 003 |
| 114490 |  | Modelling of pits & trenches (Package vendor) | 5d | 2018-01-01 | 2018-01-05 |  |  |  |  | 212d | MH-Wtg |  |  | 003 |
| 114500 |  | Basic pipe routing (Package vendor) | 10d | 2018-01-01 | 2018-01-12 |  |  |  |  | 207d | MH-Wtg |  |  | 003 |
| 114520 |  | Utility station locations (Package vendor) | 2d | 2018-01-01 | 2018-01-02 |  |  |  |  | 215d | MH-Wtg |  |  | 003 |
| 114550 |  | Modelling of structure (Deleted) | 50d | 2018-01-01 | 2018-03-12 | 114540 |  |  |  | 167d | MH-Wtg |  |  | 003 |
| 114610 |  | Safety shower locations (Deleted) | 2d | 2018-01-01 | 2018-01-02 | 114600 SS |  |  |  | 215d | MH-Wtg |  |  | 003 |

| ID | WBS | Activity | Duration | Start | Finish | Predecessors | Complete | Total float | Free float | Resources | Cost | Actual cost | UNIT DESCRIPTION |
| --- | --- | --- | --- | --- | --- | --- | --- | --- | --- | --- | --- | --- | --- |
|  | 2 | **60% Modelling** |  | 2017-10-20 | 2018-01-19 |  |  |  |  |  |  |  |  |
| 114630 |  | Modelling of instrument cable trays | 8d | 2017-10-20 A | 2017-10-31 A | 114620 FF | 100% |  |  | MH-Wtg [15 h] | 6,750 | 6,750 | 003 |
| 114640 |  | Modelling of electrical cable trays | 8d | 2017-10-20 A | 2017-10-31 A | 114630 SS | 100% |  |  | MH-Wtg [15 h] | 6,750 | 6,750 | 003 |
| 114620 |  | Modelling of piping & inline instruments | 10d | 2017-11-02 A | 2017-11-15 A | 114570 | 100% |  |  | MH-Wtg [30 h] | 13,500 | 13,500 | 003 |
| 114670 |  | Instrument locations | 9d | 2017-11-03 A | 2017-11-15 A | 114620 FF | 100% |  |  | MH-Wtg [2 h] | 900 | 900 | 003 |
| 114660 |  | Instrument JB locations | 4d | 2017-11-10 A | 2017-11-15 A | 114620 | 100% |  |  | MH-Wtg [2 h] | 900 | 900 | 003 |
| 114680 |  | Motor start button locations | 4d | 2017-11-10 A | 2017-11-15 A | 114640 | 100% |  |  | MH-Wtg [6.44 h] | 2,898 | 2,898 | 003 |
| 114710 |  | Preliminary MTO for piping materials | 3d | 2017-11-15 A | 2017-11-17 A | 114620 | 100% |  |  | MH-Wtg [3 h] | 1,350 | 1,350 | 003 |
| 114730 |  | Preliminary MTO for insulation | 3d | 2017-11-17 A | 2017-11-21 A | 114710 | 100% |  |  | MH-Wtg [3 h] | 1,350 | 1,350 | 003 |
| 114340 |  | Modelling of piping & inline instruments (Package vendor) | 15d | 2018-01-01 | 2018-01-19 |  |  | 202d |  | MH-Wtg |  |  | 003 |
| 114350 |  | Modelling of instrument cable trays (Package vendor) | 8d | 2018-01-01 | 2018-01-10 |  |  | 209d |  | MH-Wtg |  |  | 003 |
| 114360 |  | Modelling of electrical cable trays (Package vendor) | 8d | 2018-01-01 | 2018-01-10 |  |  | 209d |  | MH-Wtg |  |  | 003 |
| 114380 |  | Instrument JB locations (Package vendor) | 3d | 2018-01-01 | 2018-01-03 |  |  | 214d |  | MH-Wtg |  |  | 003 |
| 114390 |  | Instrument locations (Package vendor) | 5d | 2018-01-01 | 2018-01-05 |  |  | 212d |  | MH-Wtg |  |  | 003 |
| 114400 |  | Modelling of operating platforms (Package vendor) | 3d | 2018-01-01 | 2018-01-03 |  |  | 214d |  | MH-Wtg |  |  | 003 |
| 114410 |  | Floor/wall cut out locations (Package vendor) | 5d | 2018-01-01 | 2018-01-05 |  |  | 212d |  | MH-Wtg |  |  | 003 |
| 114420 |  | Preliminary MTO for piping materials (Package vendor) | 3d | 2018-01-01 | 2018-01-03 |  |  | 214d |  | MH-Wtg |  |  | 003 |
| 114430 |  | Preliminary MTO for insulation (Package vendor) | 2d | 2018-01-01 | 2018-01-02 |  |  | 215d |  | MH-Wtg |  |  | 003 |
| 114690 |  | Modelling of operating platforms (Deleted) | 0d | 2018-01-01 | 2018-01-01 | 114620 |  | 217d |  | MH-Wtg |  |  | 003 |
| 114700 |  | Floor/wall cut out locations (Deleted) | 0d | 2018-01-01 | 2018-01-01 | 114620 FF |  | 217d |  | MH-Wtg |  |  | 003 |
|  | 3 | **90% Modelling** |  | 2017-12-05 | 2018-02-19 |  |  |  |  |  |  |  |  |
| 114740 |  | Modelling of pipe supports | 7d | 2017-12-05 A | 2017-12-13 A | 114620 | 100% |  |  | MH-Wtg [20 h] | 9,000 | 9,000 | 003 |
| 114450 |  | Modelling of pipe supports (Package vendor) | 15d | 2018-01-01 | 2018-01-19 |  |  | 202d |  | MH-Wtg |  |  | 003 |
| 114460 |  | Updation of vendor data (Package vendor) | 10d | 2018-01-01 | 2018-01-12 |  |  | 207d |  | MH-Wtg |  |  | 003 |
| 114750 |  | Updation of vendor data | 8d | 2018-02-08 | 2018-02-19 | 114740 FF, 113101.9.5 FF+15d |  | 78d | 0d | MH-Wtg [8 h] | 3,600 |  | 003 |

| ID | WBS | Activity | Duration | Start | Finish | Predecessors | Complete | Planned start | Planned finish | Total float | Free float | Constraint | Resources | Cost | Actual cost | UNIT DESCRIPTION |
| --- | --- | --- | --- | --- | --- | --- | --- | --- | --- | --- | --- | --- | --- | --- | --- | --- |
|  | 12 | **B107A- Raw Water Storage** |  | 2017-02-27 | 2018-01-02 |  |  |  |  |  |  |  |  |  |  |  |
|  | 1 | **30% Modelling** |  | 2017-02-27 | 2017-08-04 |  |  |  |  |  |  |  |  |  |  |  |
| 105410 |  | Preliminary layout | 1d | 2017-02-27 A | 2017-02-27 A | 100050.1 FF | 100% |  |  |  |  |  | MH-Wtg [25.76 h] | 11,592 | 11,592 | 003 |
| 105420 |  | Modelling of storage tank | 5d | 2017-03-06 A | 2017-03-10 A | 105410 | 100% |  |  |  |  |  | MH-Wtg [18.03 h] | 8,114 | 8,114 | 003 |
| 105430 |  | Basic pipe routing | 31d | 2017-06-23 A | 2017-08-04 A | 105420, 100090 FF | 100% |  |  |  |  |  | MH-Wtg [7.73 h] | 3,479 | 3,479 | 003 |
|  | 2 | **60% Modelling** |  | 2017-06-23 | 2017-11-08 |  |  |  |  |  |  |  |  |  |  |  |
| 105440 |  | Modelling of piping & inline instruments | 63d | 2017-06-23 A | 2017-09-20 A | 105430, 100090 | 100% |  |  |  |  |  | MH-Wtg [81.56 h] | 36,702 | 36,702 | 003 |
| 105450 |  | Preliminary MTO for piping materials | 1d | 2017-11-08 A | 2017-11-08 A | 105440 | 100% |  |  |  |  |  | MH-Wtg [4.29 h] | 1,931 | 1,931 | 003 |
|  | 3 | **90% Modelling** |  | 2017-12-02 | 2018-01-02 |  |  |  |  |  |  |  |  |  |  |  |
| 105460 |  | Modelling of pipe supports | 10d | 2017-12-02 A | 2017-12-15 A | 105440 | 100% | 2017-12-04 | 2017-12-15 |  |  |  | MH-Wtg [30.91 h] | 13,910 | 13,910 | 003 |
| 105470 |  | Updation of vendor data | 2d | 2018-01-01 | 2018-01-02 | 105460 FF |  |  |  | 77d | 0d |  | MH-Wtg [3.43 h] | 1,544 |  | 003 |
|  | 17 | **B107A- Pump Area** |  | 2017-06-23 | 2018-02-08 |  |  |  |  |  |  |  |  |  |  |  |
|  | 1 | **30% Modelling** |  | 2017-06-23 | 2017-12-08 |  |  |  |  |  |  |  |  |  |  |  |
| 107810 |  | Preliminary layout | 9d | 2017-06-23 A | 2017-07-05 A | 105410 | 100% |  |  |  |  | start on or after 2017-04-18 | MH-Wtg [77.27 h] | 34,772 | 34,772 | 003 |
| 107820 |  | Modelling of equipments | 31d | 2017-06-23 A | 2017-08-04 A | 107810 | 100% |  |  |  |  |  | MH-Wtg [30.91 h] | 13,910 | 13,910 | 003 |
| 108850 |  | Modelling of pits & trenches | 31d | 2017-06-23 A | 2017-08-04 A | 107810 | 100% |  |  |  |  |  | MH-Wtg [7.73 h] | 3,479 | 3,479 | 003 |
| 108860 |  | Basic pipe routing | 31d | 2017-06-23 A | 2017-08-04 A | 107820, 100090 FF | 100% |  |  |  |  |  | MH-Wtg [30.91 h] | 13,910 | 13,910 | 003 |
| 108870 |  | Utility station locations | 6d | 2017-12-01 A | 2017-12-08 A | 108860 | 100% |  |  |  |  |  | MH-Wtg [7.73 h] | 3,479 | 3,479 | 003 |
|  | 2 | **60% Modelling** |  | 2017-06-23 | 2017-10-31 |  |  |  |  |  |  |  |  |  |  |  |
| 108880 |  | Modelling of piping & inline instruments | 63d | 2017-06-23 A | 2017-09-20 A | 100090, 108860 | 100% |  |  |  |  |  | MH-Wtg [103.02 h] | 46,359 | 46,359 | 003 |
| 109440 |  | Instrument locations | 63d | 2017-06-23 A | 2017-09-20 A | 108880 FF | 100% |  |  |  |  |  | MH-Wtg [12.88 h] | 5,796 | 5,796 | 003 |
| 109460 |  | Floor/wall cut out locations | 1d | 2017-06-27 A | 2017-06-27 A | 108880 FF | 100% |  |  |  |  |  | MH-Wtg [6.44 h] | 2,898 | 2,898 | 003 |
| 108890 |  | Modelling of instrument cable trays | 48d | 2017-08-25 A | 2017-10-31 A | 108880 FF | 100% |  |  |  |  |  | MH-Wtg [51.51 h] | 23,180 | 23,180 | 003 |
| 108900 |  | Modelling of electrical cable trays | 48d | 2017-08-25 A | 2017-10-31 A | 108890 SS | 100% |  |  |  |  |  | MH-Wtg [51.51 h] | 23,180 | 23,180 | 003 |
| 109430 |  | Instrument JB locations | 19d | 2017-08-25 A | 2017-09-20 A | 108880 | 100% |  |  |  |  |  | MH-Wtg [12.88 h] | 5,796 | 5,796 | 003 |
| 109470 |  | Preliminary MTO for piping materials | 1d | 2017-09-28 A | 2017-09-28 A | 108880 | 100% |  |  |  |  |  | MH-Wtg [12.88 h] | 5,796 | 5,796 | 003 |
| 109450 |  | Modelling of operating platforms (Deleted) | 0d | 2017-10-31 A | 2017-10-31 A | 108880 | 100% | 2017-10-02 | 2017-10-02 |  |  |  | MH-Wtg |  |  | 003 |

| ID | WBS | Activity | Duration | Start | Finish | Predecessors | Complete | Remaining | Planned start | Planned finish | Total float | Free float | Constraint | Resources | Cost | Actual cost | UNIT DESCRIPTION |
| --- | --- | --- | --- | --- | --- | --- | --- | --- | --- | --- | --- | --- | --- | --- | --- | --- | --- |
|  | 3 | **90% Modelling** |  | 2017-09-01 | 2018-02-08 |  |  |  |  |  |  |  |  |  |  |  |  |
| 109490 |  | Modelling of pipe supports | 11d | 2017-09-01 A | 2017-09-16 A | 108880 | 100% |  | 2017-09-01 | 2017-09-15 |  |  |  | MH-Wtg [92.72 h] | 41,724 | 41,724 | 003 |
| 109500 |  | Updation of vendor data | 10d | 2018-01-25 | 2018-02-08 | 109490 FF, 112970 FS+10d |  |  |  |  | 41d | 0d |  | MH-Wtg [10.3 h] | 4,635 |  | 003 |
|  | 11 | **B108D- DM Storage** |  | 2017-05-29 | 2018-04-03 |  |  |  |  |  |  |  |  |  |  |  |  |
|  | 1 | **30% Modelling** |  | 2017-05-29 | 2018-01-05 |  |  |  |  |  |  |  |  |  |  |  |  |
| 109510 |  | Preliminary layout | 1d | 2017-05-29 A | 2017-05-29 A | 105410 | 100% |  |  |  |  |  | finish on or after 2017-03-29 | MH-Wtg [25.76 h] | 11,592 | 11,592 | 003 |
| 109520 |  | Modelling of equipments | 31d | 2017-06-23 A | 2017-08-04 A | 109510 | 100% |  |  |  |  |  |  | MH-Wtg [10.3 h] | 4,635 | 4,635 | 003 |
| 109540 |  | Modelling of pits & trenches | 21d | 2017-07-07 A | 2017-08-04 A | 109510 | 100% |  |  |  |  |  |  | MH-Wtg [2.58 h] | 1,161 | 1,161 | 003 |
| 109550 |  | Basic pipe routing | 21d | 2017-07-07 A | 2017-08-04 A | 109520, 100090 FF | 100% |  |  |  |  |  |  | MH-Wtg [7.73 h] | 3,479 | 3,479 | 003 |
| 109560 |  | Nozzle orientations | 21d | 2017-07-07 A | 2017-08-04 A | 109550 | 100% |  |  |  |  |  |  | MH-Wtg [1.29 h] | 581 | 581 | 003 |
| 109570 |  | Utility station locations | 2d | 2017-08-12 A | 2017-08-12 A | 109550 | 100% |  | 2017-08-14 | 2017-08-16 |  |  |  | MH-Wtg [1.29 h] | 581 | 581 | 003 |
| 109530 |  | Modelling of structure (Deleted) | 5d | 2018-01-01 | 2018-01-05 | 109520 |  |  |  |  | 212d |  |  | MH-Wtg |  |  | 003 |
|  | 2 | **60% Modelling** |  | 2017-07-07 | 2018-01-10 |  |  |  |  |  |  |  |  |  |  |  |  |
| 109590 |  | Modelling of piping & inline instruments | 53d | 2017-07-07 A | 2017-09-20 A | 100090, 109550 | 100% |  |  |  |  |  |  | MH-Wtg [34.34 h] | 15,453 | 15,453 | 003 |
| 109600 |  | Modelling of instrument cable trays | 70d | 2017-07-25 A | 2017-10-31 A | 109590 FF | 100% |  |  |  |  |  |  | MH-Wtg [17.17 h] | 7,727 | 7,727 | 003 |
| 109610 |  | Modelling of electrical cable trays | 70d | 2017-07-25 A | 2017-10-31 A | 109600 SS | 100% |  |  |  |  |  |  | MH-Wtg [17.17 h] | 7,727 | 7,727 | 003 |
| 109620 |  | Instrument JB locations | 41d | 2017-07-25 A | 2017-09-20 A | 109590 | 100% |  |  |  |  |  |  | MH-Wtg [2.15 h] | 968 | 968 | 003 |
| 109630 |  | Instrument locations | 41d | 2017-07-25 A | 2017-09-20 A | 109590 FF | 100% |  |  |  |  |  |  | MH-Wtg [2.15 h] | 968 | 968 | 003 |
| 109640 |  | Motor start button locations | 41d | 2017-07-25 A | 2017-09-20 A | 109610 | 100% |  |  |  |  |  |  | MH-Wtg [2.15 h] | 968 | 968 | 003 |
| 109670 |  | Preliminary MTO for piping materials | 1d | 2017-08-30 A | 2017-08-30 A | 109590 | 100% |  |  |  |  |  |  | MH-Wtg [4.29 h] | 1,931 | 1,931 | 003 |
| 109650 |  | Modelling of operating platforms (Deleted) | 5d | 2018-01-01 | 2018-01-05 | 109590 |  |  |  |  | 212d |  |  | MH-Wtg |  |  | 003 |
| 109660 |  | Floor/wall cut out locations (Deleted) | 8d | 2018-01-01 | 2018-01-10 | 109590 FF |  |  |  |  | 209d |  |  | MH-Wtg |  |  | 003 |
|  | 3 | **90% Modelling** |  | 2017-07-25 | 2018-04-03 |  |  |  |  |  |  |  |  |  |  |  |  |
| 109690 |  | Modelling of pipe supports | 27d | 2017-07-25 A | 2017-08-31 A | 109590 | 100% |  |  |  |  |  |  | MH-Wtg [30.91 h] | 13,910 | 13,910 | 003 |
| 109700 |  | Updation of vendor data | 41d | 2018-02-06 A | 2018-04-03 | 109690 FF, 112940 FS+10d, 113250 FF+15d | 76% | 10d |  |  | 56d | 0d |  | MH-Wtg [3.43 h] | 1,544 | 1,167 | 003 |

| ID | WBS | Activity | Duration | Start | Finish | Predecessors | Complete | Remaining | Planned start | Planned finish | Total float | Free float | Constraint | Resources | Cost | Actual cost | UNIT DESCRIPTION |
| --- | --- | --- | --- | --- | --- | --- | --- | --- | --- | --- | --- | --- | --- | --- | --- | --- | --- |
|  | 14 | **B109- Cooling Tower with Pumps** |  | 2017-08-10 | 2018-04-03 |  |  |  |  |  |  |  |  |  |  |  |  |
|  | 1 | **30% Modelling** |  | 2017-08-10 | 2017-09-08 |  |  |  |  |  |  |  |  |  |  |  |  |
| 105650 |  | Modelling of equipments | 4d | 2017-08-10 A | 2017-08-16 A | 105640 | 100% |  |  |  |  |  |  | MH-Wtg [41.21 h] | 18,545 | 18,545 | 003 |
| 105670 |  | Basic pipe routing | 18d | 2017-08-10 A | 2017-09-05 A | 105650, 100090 FF | 100% |  |  |  |  |  |  | MH-Wtg [30.91 h] | 13,910 | 13,910 | 003 |
| 105660 |  | Modelling of pits & trenches | 4d | 2017-08-12 A | 2017-08-18 A | 105640 | 100% |  | 2017-08-14 | 2017-08-18 |  |  |  | MH-Wtg [20.6 h] | 9,270 | 9,270 | 003 |
| 105640 |  | Preliminary layout | 1d | 2017-08-31 A | 2017-08-31 A | 112850 FS+10d | 100% |  |  |  |  |  |  | MH-Wtg [103.02 h] | 46,359 | 46,359 | 003 |
| 105680 |  | Utility station locations | 4d | 2017-09-05 A | 2017-09-08 A | 105670 | 100% |  |  |  |  |  |  | MH-Wtg [5.15 h] | 4,636 | 4,636 | 003 |
|  | 2 | **60% Modelling** |  | 2017-08-31 | 2017-10-31 |  |  |  |  |  |  |  |  |  |  |  |  |
| 105750 |  | Floor/wall cut out locations | 1d | 2017-08-31 A | 2017-08-31 A | 105690 FF | 100% |  |  |  |  |  |  | MH-Wtg [0.86 h] | 3,870 | 3,870 | 003 |
| 105690 |  | Modelling of piping & inline instruments | 12d | 2017-09-05 A | 2017-09-20 A | 100090, 105670 | 100% |  |  |  |  |  |  | MH-Wtg [154.54 h] | 69,543 | 69,543 | 003 |
| 105730 |  | Instrument locations | 1d | 2017-09-20 A | 2017-09-20 A | 105690 FF | 100% |  |  |  |  |  |  | MH-Wtg [8.59 h] | 3,866 | 3,866 | 003 |
| 105700 |  | Modelling of instrument cable trays | 24d | 2017-09-28 A | 2017-10-31 A | 105690 FF | 100% |  |  |  |  |  |  | MH-Wtg [68.68 h] | 30,906 | 30,906 | 003 |
| 105710 |  | Modelling of electrical cable trays | 24d | 2017-09-28 A | 2017-10-31 A | 105700 SS | 100% |  |  |  |  |  |  | MH-Wtg [68.68 h] | 30,906 | 30,906 | 003 |
| 105760 |  | Preliminary MTO for piping materials | 1d | 2017-09-28 A | 2017-09-28 A | 105690 | 100% |  |  |  |  |  |  | MH-Wtg [17.17 h] | 7,727 | 7,727 | 003 |
| 105720 |  | Instrument JB locations | 1d | 2017-09-29 A | 2017-09-29 A | 105690 | 100% |  |  |  |  |  |  | MH-Wtg [8.59 h] | 3,866 | 3,866 | 003 |
| 105740 |  | Modelling of operating platforms | 1d | 2017-10-31 A | 2017-10-31 A | 105690 | 100% |  |  |  |  |  |  | MH-Wtg [8.59 h] | 3,866 | 3,866 | 003 |
|  | 3 | **90% Modelling** |  | 2017-10-20 | 2018-04-03 |  |  |  |  |  |  |  |  |  |  |  |  |
| 105770 |  | Modelling of pipe supports | 8d | 2017-10-20 A | 2017-10-31 A | 105690 | 100% |  |  |  |  |  |  | MH-Wtg [123.63 h] | 55,634 | 55,634 | 003 |
| 105780 |  | Updation of vendor data | 41d | 2018-02-06 A | 2018-04-03 | 105770 FF, 112950 FS+10d, 113250 FF+15d | 88% | 5d |  |  | 54d | 0d |  | MH-Wtg [13.74 h] | 6,183 | 5,429 | 003 |
|  | 15 | **B117- Piperack** |  | 2016-12-15 | 2018-03-26 |  |  |  |  |  |  |  |  |  |  |  |  |
|  | 1 | **30% Modelling** |  | 2016-12-15 | 2017-09-15 |  |  |  |  |  |  |  |  |  |  |  |  |
| 105790 |  | Preliminary layout | 96d | 2016-12-15 A | 2017-04-26 A | 103440, 100090 FF | 100% |  |  |  |  |  | start on 2016-12-15 | MH-Wtg [103.02 h] | 46,359 | 46,359 | 003 |
| 105800 |  | Modelling of structure | 87d | 2016-12-15 A | 2017-04-13 A | 105790 | 100% |  |  |  |  |  | start on 2016-12-15 | MH-Wtg [41.21 h] | 18,545 | 18,545 | 003 |
| 105810 |  | Basic pipe routing | 77d | 2017-04-20 A | 2017-08-04 A | 105800, 100090 FF | 100% |  |  |  |  |  |  | MH-Wtg [30.91 h] | 13,910 | 13,910 | 003 |
| 105830 |  | Utility station locations | 2d | 2017-08-12 A | 2017-08-12 A | 105810 | 100% |  | 2017-08-14 | 2017-08-16 |  |  |  | MH-Wtg [10.3 h] | 4,635 | 4,635 | 003 |
| 105820 |  | Preliminary stress analysis | 11d | 2017-09-01 A | 2017-09-15 A | 105810 | 100% |  |  |  |  |  |  | MH-Wtg [20.6 h] | 9,270 | 9,270 | 003 |

| ID | WBS | Activity | Duration | Start | Finish | Predecessors | Complete | Remaining | Planned start | Planned finish | Total float | Free float | Constraint | Resources | Cost | Actual cost | UNIT DESCRIPTION |
| --- | --- | --- | --- | --- | --- | --- | --- | --- | --- | --- | --- | --- | --- | --- | --- | --- | --- |
|  | 2 | **60% Modelling** |  | 2017-04-20 | 2017-11-09 |  |  |  |  |  |  |  |  |  |  |  |  |
| 105840 |  | Modelling of piping | 86d | 2017-04-20 A | 2017-08-20 A | 100090, 105810 | 100% |  | 2017-04-20 | 2017-08-18 |  |  |  | MH-Wtg [137.37 h] | 61,817 | 61,817 | 003 |
| 105850 |  | Modelling of instrument cable trays | 75d | 2017-07-18 A | 2017-10-31 A | 105840 FF | 100% |  |  |  |  |  |  | MH-Wtg [85.85 h] | 38,633 | 38,633 | 003 |
| 105860 |  | Modelling of electrical cable trays | 75d | 2017-07-18 A | 2017-10-31 A | 105850 SS | 100% |  |  |  |  |  |  | MH-Wtg [85.85 h] | 38,633 | 38,633 | 003 |
| 105870 |  | Preliminary MTO for piping materials | 1d | 2017-08-30 A | 2017-08-30 A | 105840 | 100% |  |  |  |  |  |  | MH-Wtg [17.17 h] | 7,727 | 7,727 | 003 |
| 105880 |  | Preliminary MTO for insulation | 5d | 2017-11-03 A | 2017-11-09 A | 105870, 103390 FF-10d | 100% |  |  |  |  |  |  | MH-Wtg [17.17 h] | 7,727 | 7,727 | 003 |
|  | 3 | **90% Modelling** |  | 2017-08-10 | 2018-03-26 |  |  |  |  |  |  |  |  |  |  |  |  |
| 105890 |  | Modelling of pipe supports | 11d | 2017-08-10 A | 2017-08-25 A | 105840 | 100% |  |  |  |  |  |  | MH-Wtg [109.89 h] | 49,451 | 49,451 | 003 |
| 105910 |  | Final stress analysis | 28d | 2017-12-06 A | 2018-01-12 | 105890 | 64% | 10d |  |  | 207d | 0d |  | MH-Wtg [13.74 h] | 6,183 | 3,975 | 003 |
| 105900 |  | Updation of vendor data | 10d | 2018-03-13 | 2018-03-26 | 105890, 113260 FF+15d |  |  |  |  | 39d | 0d |  | MH-Wtg [13.74 h] | 6,183 |  | 003 |
|  | 3 | **Detail Documents** |  | 2016-11-11 | 2018-04-24 |  |  |  |  |  |  |  |  |  |  |  |  |
|  | 1 | **B101- WNA Plant** |  | 2017-02-13 | 2018-04-24 |  |  |  |  |  |  |  |  |  |  |  |  |
| 105920 |  | General Arrangement Drawing (GAD) | 95d | 2017-02-13 A | 2017-06-22 A | 103520 | 100% |  |  |  |  |  |  | MH-Wtg [59.42 h] | 26,739 | 26,739 | 001 |
| 105930 |  | Piping Arrangement Drawing (PAD) | 78d | 2017-12-20 A | 2018-04-09 | 103630, 105940 FF | 62% | 30d |  |  | 147d |  |  | MH-Wtg [39.62 h] | 17,829 | 10,972 | 001 |
| 105940 |  | Piping Isometric Drawing (PIS) | 55d | 2018-01-22 | 2018-04-09 | 113310.1 FF+20d, 103630, 103640 FF |  |  |  |  | 27d | 0d |  | MH-Wtg [79.23 h] | 35,654 |  | 001 |
| 105950 |  | Secondary Support Details (SSD) | 25d | 2018-03-20 | 2018-04-24 | 103650, 113310 FF+15d |  |  |  |  | 137d | 0d |  | MH-Wtg [19.81 h] | 8,915 |  | 001 |
|  | 2 | **B102A- CNA Plant-1** |  | 2016-11-11 | 2018-03-20 |  |  |  |  |  |  |  |  |  |  |  |  |
| 105960 |  | Updating existing GAD | 1d | 2016-11-11 A | 2016-11-11 A | 105920 SF | 100% |  |  |  |  |  | start on 2016-11-11 | MH-Wtg [29.71 h] | 13,370 | 13,370 | 002 |
| 105970 |  | Updating existing PAD (Deleted) | 15d | 2018-01-01 | 2018-01-19 | 105930 SF |  |  |  |  | 202d |  |  | MH-Wtg |  |  | 002 |
| 105980 |  | Updating existing PIS (Deleted) | 30d | 2018-01-01 | 2018-02-12 |  |  |  |  |  | 187d |  |  | MH-Wtg |  |  | 002 |
| 105990 |  | Updating existing SSD (Deleted) | 15d | 2018-02-27 | 2018-03-20 | 105950 SF |  |  |  |  | 162d |  |  | MH-Wtg |  |  | 002 |
|  | 3 | **B102B- CNA Plant-2** |  | 2016-11-11 | 2018-02-12 |  |  |  |  |  |  |  |  |  |  |  |  |
| 106000 |  | Updating existing GAD | 1d | 2016-11-11 A | 2016-11-11 A | 105960 SS | 100% |  |  |  |  |  | start on 2016-11-11 | MH-Wtg [29.71 h] | 13,370 | 13,370 | 002 |
| 106010 |  | Updating existing PAD (Deleted) | 15d | 2018-01-01 | 2018-01-19 |  |  |  |  |  | 202d |  |  | MH-Wtg |  |  | 002 |
| 106020 |  | Updating existing PIS (Deleted) | 30d | 2018-01-01 | 2018-02-12 |  |  |  |  |  | 187d |  |  | MH-Wtg |  |  | 002 |
| 106030 |  | Updating existing SSD (Deleted) | 15d | 2018-01-01 | 2018-01-19 |  |  |  |  |  | 202d |  |  | MH-Wtg |  |  | 002 |

| ID | WBS | Activity | Duration | Start | Finish | Predecessors | Complete | Total float | Free float | Resources | Cost | Actual cost | UNIT DESCRIPTION |
| --- | --- | --- | --- | --- | --- | --- | --- | --- | --- | --- | --- | --- | --- |
|  | 4 | **B103A- WNA Storage Tanks** |  | 2016-12-02 | 2018-04-24 |  |  |  |  |  |  |  |  |
| 106040 |  | General Arrangement Drawing (GAD) | 55d | 2016-12-02 A | 2017-02-16 A | 103730 | 100% |  |  | MH-Wtg [17.77 h] | 7,997 | 7,997 | 003 |
| 106060 |  | Piping Isometric Drawing (PIS) | 25d | 2018-02-28 | 2018-04-03 | 103850 FF |  | 68d | 0d | MH-Wtg [23.69 h] | 10,661 |  | 003 |
| 106050 |  | Piping Arrangement Drawing (PAD) | 20d | 2018-03-07 | 2018-04-03 | 103840, 106060 FF |  | 151d |  | MH-Wtg [11.84 h] | 5,328 |  | 003 |
| 106070 |  | Secondary Support Details (SSD) | 15d | 2018-04-04 | 2018-04-24 | 106060 |  | 136d |  | MH-Wtg [5.92 h] | 2,664 |  | 003 |
|  | 18 | **B103B- CNA Storage Tanks** |  | 2016-12-07 | 2018-04-24 |  |  |  |  |  |  |  |  |
| 109580 |  | General Arrangement Drawing (GAD) | 92d | 2016-12-07 A | 2017-04-12 A | 105310 | 100% |  |  | MH-Wtg [17.77 h] | 7,997 | 7,997 | 003 |
| 110330 |  | Piping Isometric Drawing (PIS) | 25d | 2018-02-28 | 2018-04-03 | 105500 FF |  | 53d | 0d | MH-Wtg [23.69 h] | 10,661 |  | 003 |
| 110320 |  | Piping Arrangement Drawing (PAD) | 20d | 2018-03-07 | 2018-04-03 | 105490, 110330 FF |  | 151d |  | MH-Wtg [11.84 h] | 5,328 |  | 003 |
| 110340 |  | Secondary Support Details (SSD) | 15d | 2018-04-04 | 2018-04-24 | 110330 |  | 136d |  | MH-Wtg [5.92 h] | 2,664 |  | 003 |
|  | 19 | **B103C- WWS Storage Tanks** |  | 2017-03-09 | 2018-04-24 |  |  |  |  |  |  |  |  |
| 110350 |  | General Arrangement Drawing (GAD) | 1d | 2017-03-09 A | 2017-03-09 A | 105580 | 100% |  |  | MH-Wtg [5.82 h] | 2,619 | 2,619 | 003 |
| 110520 |  | Piping Isometric Drawing (PIS) | 25d | 2018-02-28 | 2018-04-03 | 106490 FF |  | 95d | 0d | MH-Wtg [7.76 h] | 3,492 |  | 003 |
| 110360 |  | Piping Arrangement Drawing (PAD) | 20d | 2018-03-07 | 2018-04-03 | 106480, 110520 FF |  | 151d |  | MH-Wtg [3.88 h] | 1,746 |  | 003 |
| 110530 |  | Secondary Support Details (SSD) | 15d | 2018-04-04 | 2018-04-24 | 110520 |  | 136d |  | MH-Wtg [1.94 h] | 873 |  | 003 |
|  | 5 | **B103D- WNA Tanker Loading Bays** |  | 2016-12-02 | 2018-03-26 |  |  |  |  |  |  |  |  |
| 106080 |  | General Arrangement Drawing (GAD) | 55d | 2016-12-02 A | 2017-02-16 A | 103920 | 100% |  |  | MH-Wtg [4.59 h] | 2,066 | 2,066 | 003 |
| 106100 |  | Piping Isometric Drawing (PIS) | 20d | 2018-02-13 | 2018-03-12 | 104030 |  | 112d | 0d | MH-Wtg [6.13 h] | 2,759 |  | 003 |
| 106090 |  | Piping Arrangement Drawing (PAD) | 15d | 2018-02-20 | 2018-03-12 | 104020, 106100 FF |  | 167d |  | MH-Wtg [3.06 h] | 1,377 |  | 003 |
| 106110 |  | Secondary Support Details (SSD) | 10d | 2018-03-13 | 2018-03-26 | 106100 |  | 157d |  | MH-Wtg [1.53 h] | 689 |  | 003 |
|  | 20 | **B103E- CNA Tanker Loading Bays** |  | 2016-12-07 | 2018-03-26 |  |  |  |  |  |  |  |  |
| 110540 |  | General Arrangement Drawing (GAD) | 92d | 2016-12-07 A | 2017-04-12 A | 107410 | 100% |  |  | MH-Wtg [4.59 h] | 2,066 | 2,066 | 003 |
| 110560 |  | Piping Isometric Drawing (PIS) | 20d | 2018-02-13 | 2018-03-12 | 107800 |  | 114d | 0d | MH-Wtg [6.13 h] | 2,759 |  | 003 |
| 110550 |  | Piping Arrangement Drawing (PAD) | 15d | 2018-02-20 | 2018-03-12 | 107790, 110560 FF |  | 167d |  | MH-Wtg [3.06 h] | 1,377 |  | 003 |
| 110780 |  | Secondary Support Details (SSD) | 10d | 2018-03-13 | 2018-03-26 | 110560 |  | 157d |  | MH-Wtg [1.53 h] | 689 |  | 003 |

| ID | WBS | Activity | Duration | Start | Finish | Predecessors | Complete | Remaining | Planned start | Planned finish | Total float | Free float | Resources | Cost | Actual cost | UNIT DESCRIPTION |
| --- | --- | --- | --- | --- | --- | --- | --- | --- | --- | --- | --- | --- | --- | --- | --- | --- |
|  | 6 | **B104A- Caustic, Sulphuric Storage** |  | 2017-04-14 | 2018-04-24 |  |  |  |  |  |  |  |  |  |  |  |
| 106120 |  | General Arrangement Drawing (GAD) | 1d | 2017-04-14 A | 2017-04-14 A | 104100 | 100% |  |  |  |  |  | MH-Wtg [13.48 h] | 6,066 | 6,066 | 003 |
| 106140 |  | Piping Isometric Drawing (PIS) | 40d | 2018-02-07 | 2018-04-03 | 104220 FF |  |  |  |  | 83d | 0d | MH-Wtg [17.97 h] | 8,087 |  | 003 |
| 106130 |  | Piping Arrangement Drawing (PAD) | 20d | 2018-03-07 | 2018-04-03 | 104210, 106140 FF |  |  |  |  | 151d |  | MH-Wtg [8.99 h] | 4,046 |  | 003 |
| 106150 |  | Secondary Support Details (SSD) | 15d | 2018-04-04 | 2018-04-24 | 106140 |  |  |  |  | 136d |  | MH-Wtg [4.49 h] | 2,021 |  | 003 |
|  | 7 | **B104B- HSD Storage (Deleted)** |  | 2017-04-14 | 2018-02-12 |  |  |  |  |  |  |  |  |  |  |  |
| 106160 |  | General Arrangement Drawing (GAD) (Deleted) | 10d | 2017-04-14 A | 2018-01-12 |  |  | 10d | 2017-05-08 | 2017-05-19 | 207d |  | MH-Wtg [3.06 h] | 1,377 | 1,377 | 003 |
| 106170 |  | Piping Arrangement Drawing (PAD) (Deleted) | 15d | 2018-01-01 | 2018-01-19 |  |  |  |  |  | 202d |  | MH-Wtg [2.04 h] | 918 |  | 003 |
| 106180 |  | Piping Isometric Drawing (PIS) (Deleted) | 30d | 2018-01-01 | 2018-02-12 |  |  |  |  |  | 187d |  | MH-Wtg [4.08 h] | 1,836 |  | 003 |
| 106190 |  | Secondary Support Details (SSD) (Deleted) | 10d | 2018-01-01 | 2018-01-12 |  |  |  |  |  | 207d |  | MH-Wtg [1.02 h] | 459 |  | 003 |
|  | 8 | **B104C-Liquid NH3 Storage** |  | 2017-04-12 | 2018-04-24 |  |  |  |  |  |  |  |  |  |  |  |
| 106200 |  | General Arrangement Drawing (GAD) | 1d | 2017-04-12 A | 2017-04-12 A | 104460 | 100% |  |  |  |  |  | MH-Wtg [7.35 h] | 3,308 | 3,308 | 003 |
| 106220 |  | Piping Isometric Drawing (PIS) | 40d | 2018-02-07 | 2018-04-03 | 104580 FF |  |  |  |  | 88d | 0d | MH-Wtg [9.8 h] | 4,410 |  | 003 |
| 106210 |  | Piping Arrangement Drawing (PAD) | 20d | 2018-03-07 | 2018-04-03 | 104570, 106220 FF |  |  |  |  | 151d |  | MH-Wtg [4.9 h] | 2,205 |  | 003 |
| 106230 |  | Secondary Support Details (SSD) | 15d | 2018-04-04 | 2018-04-24 | 106220 |  |  |  |  | 136d |  | MH-Wtg [2.45 h] | 1,103 |  | 003 |
|  | 21 | **B104E- SNA** |  | 2017-04-15 | 2018-04-24 |  |  |  |  |  |  |  |  |  |  |  |
| 114180 |  | General Arrangement Drawing (GAD) | 15d | 2017-04-15 A | 2017-04-15 A | 113830 | 100% |  | 2017-04-17 | 2017-05-05 |  |  | MH-Wtg [5.82 h] | 2,619 | 2,619 | 003 |
| 114200 |  | Piping Isometric Drawing (PIS) | 25d | 2018-02-28 | 2018-04-03 | 113970 FF |  |  |  |  | 63d | 0d | MH-Wtg [7.76 h] | 3,492 |  | 003 |
| 114190 |  | Piping Arrangement Drawing (PAD) | 20d | 2018-03-07 | 2018-04-03 | 113960, 114200 FF |  |  |  |  | 151d |  | MH-Wtg [3.88 h] | 1,746 |  | 003 |
| 114210 |  | Secondary Support Details (SSD) | 15d | 2018-04-04 | 2018-04-24 | 114200 |  |  |  |  | 136d |  | MH-Wtg [1.94 h] | 873 |  | 003 |
|  | 22 | **B104F- SNA Tanker Unloading** |  | 2017-04-15 | 2018-03-19 |  |  |  |  |  |  |  |  |  |  |  |
| 114220 |  | General Arrangement Drawing (GAD) | 10d | 2017-04-15 A | 2017-04-15 A | 114050 | 100% |  | 2017-04-17 | 2017-04-28 |  |  | MH-Wtg [4.59 h] | 2,066 | 2,066 | 003 |
| 114250 |  | Piping Isometric Drawing (PIS) | 15d | 2018-02-13 | 2018-03-05 | 114170 |  |  |  |  | 117d | 0d | MH-Wtg [6.13 h] | 2,759 |  | 003 |
| 114240 |  | Piping Arrangement Drawing (PAD) | 10d | 2018-02-20 | 2018-03-05 | 114150, 114250 FF |  |  |  |  | 172d |  | MH-Wtg [3.06 h] | 1,377 |  | 003 |
| 114260 |  | Secondary Support Details (SSD) | 10d | 2018-03-06 | 2018-03-19 | 114250 |  |  |  |  | 162d |  | MH-Wtg [1.53 h] | 689 |  | 003 |

| ID | WBS | Activity | Duration | Start | Finish | Predecessors | Complete | Total float | Free float | Constraint | Resources | Cost | Actual cost | UNIT DESCRIPTION |
| --- | --- | --- | --- | --- | --- | --- | --- | --- | --- | --- | --- | --- | --- | --- |
|  | 9 | **B105A- Air Compressor** |  | 2017-08-31 | 2018-04-05 |  |  |  |  |  |  |  |  |  |
| 106240 |  | General Arrangement Drawing (GAD) | 1d | 2017-08-31 A | 2017-08-31 A | 104640 | 100% |  |  |  | MH-Wtg [17.77 h] | 7,997 | 7,997 | 003 |
| 106260 |  | Piping Isometric Drawing (PIS) | 30d | 2018-02-02 | 2018-03-15 | 104740 |  | 17d | 0d | start on or after 2018-02-01 | MH-Wtg [23.69 h] | 10,661 |  | 003 |
| 106250 |  | Piping Arrangement Drawing (PAD) | 20d | 2018-02-16 | 2018-03-15 | 104730, 106260 FF |  | 164d |  |  | MH-Wtg [11.84 h] | 5,328 |  | 003 |
| 106270 |  | Secondary Support Details (SSD) | 15d | 2018-03-16 | 2018-04-05 | 106260 |  | 149d |  |  | MH-Wtg [5.92 h] | 2,664 |  | 003 |
|  | 10 | **B105B- Air Drier** |  | 2017-08-31 | 2018-04-04 |  |  |  |  |  |  |  |  |  |
| 106280 |  | General Arrangement Drawing (GAD) | 1d | 2017-08-31 A | 2017-08-31 A | 104800 | 100% |  |  |  | MH-Wtg [5.82 h] | 2,619 | 2,619 | 003 |
| 106300 |  | Piping Isometric Drawing (PIS) | 30d | 2018-02-01 | 2018-03-14 | 104900 |  | 58d | 0d | start on or after 2018-02-01 | MH-Wtg [7.76 h] | 3,492 |  | 003 |
| 106290 |  | Piping Arrangement Drawing (PAD) | 20d | 2018-02-15 | 2018-03-14 | 104890, 106300 FF |  | 165d |  |  | MH-Wtg [3.88 h] | 1,746 |  | 003 |
| 106310 |  | Secondary Support Details (SSD) | 15d | 2018-03-15 | 2018-04-04 | 106300 |  | 150d |  |  | MH-Wtg [1.94 h] | 873 |  | 003 |
|  | 11 | **B105C- VAM Unit (Package)** |  | 2018-01-01 | 2018-02-12 |  |  |  |  |  |  |  |  |  |
| 106320 |  | General Arrangement Drawing (GAD) (Package vendor) | 15d | 2018-01-01 | 2018-01-19 |  |  | 202d |  |  | MH-Wtg |  |  | 003 |
| 106330 |  | Piping Arrangement Drawing (PAD) (Package vendor) | 20d | 2018-01-01 | 2018-01-29 |  |  | 197d |  |  | MH-Wtg |  |  | 003 |
| 106340 |  | Piping Isometric Drawing (PIS) (Package vendor) | 30d | 2018-01-01 | 2018-02-12 |  |  | 187d |  |  | MH-Wtg |  |  | 003 |
| 106350 |  | Secondary Support Details (SSD) (Package vendor) | 15d | 2018-01-01 | 2018-01-19 |  |  | 202d |  |  | MH-Wtg |  |  | 003 |
|  | 12 | **B105D- Hot Well/Cold Well, Pumps (Package)** |  | 2018-01-01 | 2018-02-12 |  |  |  |  |  |  |  |  |  |
| 106360 |  | General Arrangement Drawing (GAD) (Package vendor) | 15d | 2018-01-01 | 2018-01-19 |  |  | 202d |  |  | MH-Wtg |  |  | 003 |
| 106370 |  | Piping Arrangement Drawing (PAD) (Package vendor) | 20d | 2018-01-01 | 2018-01-29 |  |  | 197d |  |  | MH-Wtg |  |  | 003 |
| 106380 |  | Piping Isometric Drawing (PIS) (Package vendor) | 30d | 2018-01-01 | 2018-02-12 |  |  | 187d |  |  | MH-Wtg |  |  | 003 |
| 106390 |  | Secondary Support Details (SSD) (Package vendor) | 15d | 2018-01-01 | 2018-01-19 |  |  | 202d |  |  | MH-Wtg |  |  | 003 |
|  | 23 | **B106D- Condensate Storage, Pumps** |  | 2017-09-28 | 2018-03-05 |  |  |  |  |  |  |  |  |  |
| 114760 |  | General Arrangement Drawing (GAD) | 0d | 2017-09-28 A | 2017-09-28 A | 114600 | 100% |  |  |  | MH-Wtg [5.82 h] | 2,619 | 2,619 | 003 |
| 114770 |  | Piping Arrangement Drawing (PAD) | 15d | 2018-01-30 | 2018-02-19 | 114780 FF, 114740 |  | 182d |  |  | MH-Wtg [3.88 h] | 1,746 |  | 003 |
| 114780 |  | Piping Isometric Drawing (PIS) | 15d | 2018-01-30 | 2018-02-19 | 114750 FF |  | 78d | 0d |  | MH-Wtg [7.76 h] | 3,492 |  | 003 |
| 114800 |  | Secondary Support Details (SSD) | 10d | 2018-02-20 | 2018-03-05 | 114780 |  | 172d |  |  | MH-Wtg [1.94 h] | 873 |  | 003 |

| ID | WBS | Activity | Duration | Start | Finish | Predecessors | Complete | Remaining | Planned start | Planned finish | Total float | Free float | Constraint | Resources | Cost | Actual cost | UNIT DESCRIPTION |
| --- | --- | --- | --- | --- | --- | --- | --- | --- | --- | --- | --- | --- | --- | --- | --- | --- | --- |
|  | 14 | **B107A- Raw Water Storage** |  | 2017-02-27 | 2018-01-31 |  |  |  |  |  |  |  |  |  |  |  |  |
| 106440 |  | General Arrangement Drawing (GAD) | 88d | 2017-02-27 A | 2017-06-27 A | 105430 | 100% |  |  |  |  |  |  | MH-Wtg [5.82 h] | 2,619 | 2,619 | 003 |
| 106460 |  | Piping Isometric Drawing (PIS) | 20d | 2018-01-03 | 2018-01-31 | 105470 |  |  |  |  | 77d | 0d | start on or after 2017-12-20 | MH-Wtg [9.7 h] | 4,365 |  | 003 |
| 106450 |  | Piping Arrangement Drawing (PAD) | 15d | 2018-01-10 | 2018-01-31 | 105460, 106460 FF |  |  |  |  | 195d |  |  | MH-Wtg [3.88 h] | 1,746 |  | 003 |
|  | 15 | **B107A- Pump Area** |  | 2017-06-24 | 2018-04-12 |  |  |  |  |  |  |  |  |  |  |  |  |
| 110790 |  | General Arrangement Drawing (GAD) | 2d | 2017-06-24 A | 2017-06-27 A | 108870 | 100% |  | 2017-06-26 | 2017-06-27 |  |  |  | MH-Wtg [17.77 h] | 7,997 | 7,997 | 003 |
| 110810 |  | Piping Isometric Drawing (PIS) | 30d | 2018-02-09 | 2018-03-22 | 109500 |  |  |  |  | 41d | 0d |  | MH-Wtg [23.69 h] | 10,661 |  | 003 |
| 110800 |  | Piping Arrangement Drawing (PAD) | 20d | 2018-02-23 | 2018-03-22 | 109490, 110810 FF |  |  |  |  | 159d |  |  | MH-Wtg [11.84 h] | 5,328 |  | 003 |
| 110820 |  | Secondary Support Details (SSD) | 15d | 2018-03-23 | 2018-04-12 | 110810 |  |  |  |  | 144d |  |  | MH-Wtg [5.92 h] | 2,664 |  | 003 |
|  | 13 | **B107D- DM Storage** |  | 2017-05-29 | 2018-04-17 |  |  |  |  |  |  |  |  |  |  |  |  |
| 110830 |  | General Arrangement Drawing (GAD) | 1d | 2017-05-29 A | 2017-05-29 A | 109570 | 100% |  |  |  |  |  |  | MH-Wtg [5.82 h] | 2,619 | 2,619 | 003 |
| 110850 |  | Piping Isometric Drawing (PIS) | 20d | 2018-03-07 | 2018-04-03 | 109700 FF |  |  |  |  | 56d | 0d |  | MH-Wtg [7.76 h] | 3,492 |  | 003 |
| 110840 |  | Piping Arrangement Drawing (PAD) | 15d | 2018-03-14 | 2018-04-03 | 109690, 110850 FF |  |  |  |  | 151d |  |  | MH-Wtg [3.88 h] | 1,746 |  | 003 |
| 110860 |  | Secondary Support Details (SSD) | 10d | 2018-04-04 | 2018-04-17 | 110850 |  |  |  |  | 141d |  |  | MH-Wtg [1.94 h] | 873 |  | 003 |
|  | 16 | **B109- Cooling Tower with Pumps** |  | 2017-08-31 | 2018-04-03 |  |  |  |  |  |  |  |  |  |  |  |  |
| 106510 |  | General Arrangement Drawing (GAD) | 1d | 2017-08-31 A | 2017-08-31 A | 105680 | 100% |  |  |  |  |  |  | MH-Wtg [23.89 h] | 10,751 | 10,751 | 003 |
| 106530 |  | Piping Isometric Drawing (PIS) | 30d | 2018-02-21 | 2018-04-03 | 105780 FF |  |  |  |  | 54d | 0d |  | MH-Wtg [39.82 h] | 17,919 |  | 003 |
| 106520 |  | Piping Arrangement Drawing (PAD) | 20d | 2018-03-07 | 2018-04-03 | 105770, 106530 FF |  |  |  |  | 151d |  |  | MH-Wtg [15.93 h] | 7,169 |  | 003 |
|  | 17 | **B117- Piperack** |  | 2018-01-30 | 2018-03-26 |  |  |  |  |  |  |  |  |  |  |  |  |
| 106550 |  | Piping Isometric Drawing (PIS) | 40d | 2018-01-30 | 2018-03-26 | 105900 FF, 105890 |  |  |  |  | 39d | 0d |  | MH-Wtg [47.78 h] | 21,501 |  | 003 |
| 106540 |  | Piping Arrangement Drawing (PAD) | 25d | 2018-02-20 | 2018-03-26 | 105890, 106550 FF |  |  |  |  | 157d |  |  | MH-Wtg [31.86 h] | 14,337 |  | 003 |
|  | 4 | **Material Take Off (MTO)** |  | 2017-08-18 | 2018-04-17 |  |  |  |  |  |  |  |  |  |  |  |  |
| 106560 |  | MTO for piping materials | 172d | 2017-08-18 A | 2018-04-17 | 103610, 103820, 104000, 104190, 104550, 104720, 104880, 105450, 105760, 105870, 105400, 106430, 107770, 109470, 109670, 103640 FF+10d | 91% | 15d |  |  | 141d |  |  | MH-Wtg [458.55 h] | 206,348 | 188,352 | 003 |
| 106570 |  | MTO for pipe supports | 10d | 2018-01-22 | 2018-02-05 | 103630, 103840, 104020, 104210, 104730, 104890, 105460, 105770, 105890, 105490, 106480, 107790, 104570, 109490, 109690 |  |  |  |  | 22d | 0d | finish on or after 2017-11-20 | MH-Wtg [50.95 h] | 22,928 |  | 003 |

| ID | WBS | Activity | Duration | Start | Finish | Predecessors | Complete | Remaining | Total float | Free float | Constraint | Resources | Cost | Actual cost | UNIT DESCRIPTION |
| --- | --- | --- | --- | --- | --- | --- | --- | --- | --- | --- | --- | --- | --- | --- | --- |
|  | 5 | **Enquiry/Tenders** |  | 2017-08-31 | 2018-01-29 |  |  |  |  |  |  |  |  |  |  |
| 106610 |  | Enquiry for Valves | 14d | 2017-08-31 A | 2017-09-19 A | 106580 | 100% |  |  |  |  | MH-Wtg [100.89 h] | 45,401 | 45,401 | 003 |
| 106580 |  | Enquiry for Pipes | 77d | 2017-09-28 A | 2018-01-12 | 103610 | 87% | 10d | 207d |  |  | MH-Wtg [75.67 h] | 34,052 | 29,629 | 003 |
| 106600 |  | Enquiry for Flanges | 74d | 2017-10-03 A | 2018-01-12 | 106590 | 86% | 10d | 207d |  |  | MH-Wtg [75.67 h] | 34,052 | 29,450 | 003 |
| 106590 |  | Enquiry for Fittings | 73d | 2017-10-04 A | 2018-01-12 | 106580 | 86% | 10d | 207d |  |  | MH-Wtg [75.67 h] | 34,052 | 29,387 | 003 |
| 106680.2 |  | Enquiry for GIDC water line | 28d | 2017-11-08 A | 2017-12-15 A |  | 100% |  |  |  |  |  |  |  | 003 |
| 106680.1 |  | Enquiry for Expansion bellows | 22d | 2017-12-14 A | 2018-01-12 | 103490 | 55% | 10d | 207d |  |  | MH-Wtg [20.18 h] | 9,081 | 4,953 | 003 |
| 106630 |  | Enquiry for Steam traps | 5d | 2017-12-19 A | 2017-12-25 A | 106620 | 100% |  |  |  |  | MH-Wtg [50.45 h] | 22,703 | 22,703 | 003 |
| 106620 |  | Enquiry for Strainers | 8d | 2018-01-01 | 2018-01-10 | 106610 |  |  | 1d | 0d |  | MH-Wtg [25.22 h] | 11,349 |  | 003 |
| 106640 |  | Enquiry for Sight glass | 5d | 2018-01-01 | 2018-01-05 | 106630 |  |  | 9d | 0d |  | MH-Wtg [12.61 h] | 5,675 |  | 003 |
| 106660 |  | Enquiry for Stud bolts | 5d | 2018-01-03 | 2018-01-10 |  |  |  | 40d | 0d | finish on or after 2018-01-10 | MH-Wtg [25.22 h] | 11,349 |  | 003 |
| 106680 |  | Enquiry for Special supports | 10d | 2018-01-08 | 2018-01-22 |  |  |  | 9d | 0d | finish on or after 2018-01-20 | MH-Wtg [15.13 h] | 6,809 |  | 003 |
| 106650 |  | Enquiry for Gaskets | 5d | 2018-01-10 | 2018-01-17 | 106660 |  |  | 60d | 0d |  | MH-Wtg [25.22 h] | 11,349 |  | 003 |
| 106670 |  | Enquiry for Primary supports | 5d | 2018-01-22 | 2018-01-29 | 106570 FS-10d |  |  | 22d | 0d |  | MH-Wtg [7.57 h] | 3,407 |  | 003 |
|  | 5 | **Electrical** |  | 2016-10-14 | 2018-04-13 |  |  |  |  |  |  |  |  |  |  |
|  | 1 | **Basic Documents** |  | 2016-10-14 | 2018-01-10 |  |  |  |  |  |  |  |  |  |  |
| 106710 |  | Overall single line diagram | 154d | 2016-10-14 A | 2017-05-16 A | 106700 | 100% |  |  |  | start on 2016-10-14 | MH-Wtg [152.85 h] | 68,783 | 68,783 | 003 |
| 106690 |  | Design basis | 33d | 2016-10-17 A | 2016-11-30 A | 100050 SS | 100% |  |  |  | start on 2016-10-17 | MH-Wtg [91.71 h] | 41,270 | 41,270 | 003 |
| 106700 |  | Electrical load list | 125d | 2017-03-29 A | 2017-09-20 A | 100070, 100190 | 100% |  |  |  |  | MH-Wtg [91.71 h] | 41,270 | 41,270 | 003 |
| 106691 |  | Electrical room/Substation layout | 6d | 2017-05-23 A | 2017-05-30 A | 106700 | 100% |  |  |  |  | MH-Wtg [122.28 h] | 55,026 | 55,026 | 003 |
| 106730 |  | Overall earthing layout | 1d | 2017-06-02 A | 2017-06-02 A | 106720 | 100% |  |  |  |  | MH-Wtg [48.91 h] | 22,010 | 22,010 | 003 |
| 106692 |  | Layout for Construction power | 1d | 2017-06-19 A | 2017-06-19 A |  | 100% |  |  |  |  |  |  |  | 003 |
| 106740 |  | Standard drawings | 1d | 2017-09-21 A | 2017-09-21 A | 106920 FF | 100% |  |  |  |  | MH-Wtg [30.57 h] | 13,757 | 13,757 | 003 |
| 106720 |  | Electrical plot plan | 3d | 2017-09-29 A | 2017-10-03 A | 106710, 103410, 106930 | 100% |  |  |  |  | MH-Wtg [30.57 h] | 13,757 | 13,757 | 003 |
| 106730.1 |  | Cable trench layout (Deleted) | 8d | 2018-01-01 | 2018-01-10 | 106691 |  |  | 209d |  |  | MH-Wtg |  |  | 003 |

| ID | WBS | Activity | Duration | Start | Finish | Predecessors | Complete | Total float | Free float | Constraint | Resources | Cost | Actual cost | UNIT DESCRIPTION |
| --- | --- | --- | --- | --- | --- | --- | --- | --- | --- | --- | --- | --- | --- | --- |
|  | 2 | **Detail Documents** |  | 2017-04-21 | 2018-04-13 |  |  |  |  |  |  |  |  |  |
|  | 1 | **Design Calculations** |  | 2017-04-21 | 2018-01-05 |  |  |  |  |  |  |  |  |  |
| 106790 |  | Design calculations for MCC | 108d | 2017-04-21 A | 2017-09-20 A | 106780 FF | 100% |  |  |  | MH-Wtg [48.91 h] | 22,010 | 22,010 | 003 |
| 106750 |  | Design calculations for Transformers | 11d | 2017-05-03 A | 2017-05-17 A | 106700 | 100% |  |  |  | MH-Wtg [65.22 h] | 29,349 | 29,349 | 003 |
| 106760 |  | Design calculations for HT Panel | 13d | 2017-05-03 A | 2017-05-19 A | 106750 | 100% |  |  |  | MH-Wtg [48.91 h] | 22,010 | 22,010 | 003 |
| 106770 |  | Design calculations for HT PCC | 13d | 2017-05-03 A | 2017-05-19 A | 106760 FF | 100% |  |  |  | MH-Wtg [48.91 h] | 22,010 | 22,010 | 003 |
| 106780 |  | Design calculations for LT PCC | 1d | 2017-05-26 A | 2017-05-26 A | 106770 | 100% |  |  |  | MH-Wtg [48.91 h] | 22,010 | 22,010 | 003 |
| 106800 |  | Design calculations for APFC Panel | 60d | 2017-05-31 A | 2017-08-23 A | 106790 | 100% |  |  |  | MH-Wtg [16.3 h] | 7,335 | 7,335 | 003 |
| 106810 |  | Design calculations for DG | 23d | 2017-06-02 A | 2017-07-04 A | 106760 | 100% |  |  | start on or after 2017-05-27 | MH-Wtg [32.61 h] | 14,675 | 14,675 | 003 |
| 106820 |  | Design calculations for Misc. Panels | 5d | 2018-01-01 | 2018-01-05 | 106720 |  | 54d | 0d |  | MH-Wtg [16.3 h] | 7,335 |  | 003 |
|  | 2 | **Single Line Diagrams** |  | 2017-04-21 | 2018-01-05 |  |  |  |  |  |  |  |  |  |
| 106860 |  | Single line diagram for MCC | 108d | 2017-04-21 A | 2017-09-20 A | 106790 FF | 100% |  |  |  | MH-Wtg [81.52 h] | 36,684 | 36,684 | 003 |
| 106830 |  | Single line diagram for HT Panel | 13d | 2017-05-03 A | 2017-05-19 A | 106760 FF | 100% |  |  |  | MH-Wtg [81.52 h] | 36,684 | 36,684 | 003 |
| 106840 |  | Single line diagram for HT PCC | 13d | 2017-05-03 A | 2017-05-19 A | 106770 FF | 100% |  |  |  | MH-Wtg [81.52 h] | 36,684 | 36,684 | 003 |
| 106850 |  | Single line diagram for LT PCC | 1d | 2017-05-26 A | 2017-05-26 A | 106780 FF | 100% |  |  |  | MH-Wtg [81.52 h] | 36,684 | 36,684 | 003 |
| 106870 |  | Single line diagram for APFC Panel | 60d | 2017-05-31 A | 2017-08-23 A | 106800 FF | 100% |  |  |  | MH-Wtg [20.38 h] | 9,171 | 9,171 | 003 |
| 106880 |  | Single line diagram for DG | 15d | 2017-06-14 A | 2017-07-04 A | 106810 | 100% |  |  |  | MH-Wtg [40.76 h] | 18,342 | 18,342 | 003 |
| 106890 |  | Single line diagram for Misc. Panels | 5d | 2018-01-01 | 2018-01-05 | 106820 FF |  | 54d | 0d |  | MH-Wtg [20.38 h] | 9,171 |  | 003 |
|  | 3 | **Construction Drawings** |  | 2017-06-02 | 2018-04-13 |  |  |  |  |  |  |  |  |  |
|  | 1 | **B101- WNA Plant** |  | 2017-06-22 | 2018-01-29 |  |  |  |  |  |  |  |  |  |
| 106900 |  | Electrical area classification basis & drawings | 1d | 2017-06-22 A | 2017-06-22 A | 105920 | 100% |  |  | start on or after 2017-07-15 | MH-Wtg [86 h] | 38,700 | 38,700 | 001 |
| 106920 |  | Earthing layout & calculations | 1d | 2017-08-31 A | 2017-08-31 A | 106900 | 100% |  |  |  | MH-Wtg [27.3 h] | 12,285 | 12,285 | 001 |
| 106940 |  | Lightening protection drawings | 1d | 2017-09-18 A | 2017-09-18 A | 106910 | 100% |  |  |  | MH-Wtg [10.92 h] | 4,914 | 4,914 | 001 |
| 106930 |  | Lighting layout & calculations | 1d | 2017-09-28 A | 2017-09-28 A | 106920 | 100% |  |  |  | MH-Wtg [27.3 h] | 12,285 | 12,285 | 001 |
| 106910 |  | Cable tray layout | 20d | 2018-01-01 | 2018-01-29 | 103550 |  | 197d |  | finish on or after 2017-12-29 | MH-Wtg [16.38 h] | 7,371 |  | 001 |

| ID | WBS | Activity | Duration | Start | Finish | Predecessors | Complete | Total float | Free float | Constraint | Resources | Cost | Actual cost | UNIT DESCRIPTION |
| --- | --- | --- | --- | --- | --- | --- | --- | --- | --- | --- | --- | --- | --- | --- |
|  | 2 | **B102A- CNA Plant-1** |  | 2017-08-31 | 2018-01-12 |  |  |  |  |  |  |  |  |  |
| 106970 |  | Updation of Earthing layout & calculations | 1d | 2017-08-31 A | 2017-08-31 A | 106950 | 100% |  |  |  | MH-Wtg [13.65 h] | 6,143 | 6,143 | 002 |
| 106990 |  | Updation of Lightening protection drawings | 1d | 2017-09-18 A | 2017-09-18 A | 106960 | 100% |  |  |  | MH-Wtg [5.46 h] | 2,457 | 2,457 | 002 |
| 106980 |  | Updation of Lighting layout & calculations | 1d | 2017-12-07 A | 2017-12-07 A | 106970 | 100% |  |  |  | MH-Wtg [13.65 h] | 6,143 | 6,143 | 002 |
| 106950 |  | Upation of Electrical area classification drawings (Safe area) | 8d | 2018-01-01 | 2018-01-10 | 106900 FF |  | 209d | 0d |  | MH-Wtg |  |  | 002 |
| 106960 |  | Updation of Cable tray layout | 10d | 2018-01-01 | 2018-01-12 | 106980 |  | 207d |  | finish on or after 2017-12-29 | MH-Wtg [8.19 h] | 3,686 |  | 002 |
|  | 3 | **B102B- CNA Plant-2** |  | 2017-08-31 | 2018-01-12 |  |  |  |  |  |  |  |  |  |
| 107020 |  | Updation of Earthing layout & calculations | 1d | 2017-08-31 A | 2017-08-31 A | 107000 | 100% |  |  |  | MH-Wtg [13.65 h] | 6,143 | 6,143 | 002 |
| 107040 |  | Updation of Lightening protection drawings | 1d | 2017-09-18 A | 2017-09-18 A | 107010 | 100% |  |  |  | MH-Wtg [5.46 h] | 2,457 | 2,457 | 002 |
| 107030 |  | Updation of Lighting layout & calculations | 1d | 2017-12-07 A | 2017-12-07 A | 107020 | 100% |  |  |  | MH-Wtg [13.65 h] | 6,143 | 6,143 | 002 |
| 107000 |  | Upation of Electrical area classification drawings (Safe area) | 8d | 2018-01-01 | 2018-01-10 | 106950 SS |  | 209d |  |  | MH-Wtg |  |  | 002 |
| 107010 |  | Updation of Cable tray layout | 10d | 2018-01-01 | 2018-01-12 | 107030 |  | 207d |  | finish on or after 2017-12-29 | MH-Wtg [8.19 h] | 3,686 |  | 002 |
|  | 4 | **B103A- WNA Storage Tanks** |  | 2017-08-24 | 2018-01-19 |  |  |  |  |  |  |  |  |  |
| 107070 |  | Earthing layout & calculations | 1d | 2017-08-24 A | 2017-08-24 A | 107050 | 100% |  |  |  | MH-Wtg [8.28 h] | 3,726 | 3,726 | 003 |
| 107080 |  | Lighting layout & calculations | 1d | 2017-08-28 A | 2017-08-28 A | 107070 | 100% |  |  |  | MH-Wtg [8.28 h] | 3,726 | 3,726 | 003 |
| 107080.1 |  | Lightening protection drawings | 1d | 2017-09-18 A | 2017-09-18 A |  | 100% |  |  |  |  |  |  | 001 |
| 107050 |  | Electrical area classification drawings (Safe area) | 8d | 2018-01-01 | 2018-01-10 | 106040 |  | 209d |  | start on or after 2017-07-20 | MH-Wtg |  |  | 003 |
| 107060 |  | Cable tray layout | 15d | 2018-01-01 | 2018-01-19 | 103760 |  | 202d |  | finish on or after 2017-12-29 | MH-Wtg [8.28 h] | 3,726 |  | 003 |
|  | 36 | **B103B- CNA Storage Tanks** |  | 2017-08-29 | 2018-01-19 |  |  |  |  |  |  |  |  |  |
| 107084 |  | Lighting layout & calculations | 1d | 2017-08-29 A | 2017-08-29 A | 107083 | 100% |  |  |  | MH-Wtg [8.28 h] | 3,726 | 3,726 | 003 |
| 107083 |  | Earthing layout & calculations | 1d | 2017-08-30 A | 2017-08-30 A | 107081 | 100% |  |  |  | MH-Wtg [8.28 h] | 3,726 | 3,726 | 003 |
| 107084.1 |  | Lightening protection drawings | 1d | 2017-09-18 A | 2017-09-18 A |  | 100% |  |  |  |  |  |  | 002 |
| 107081 |  | Electrical area classification drawings (Safe area) | 8d | 2018-01-01 | 2018-01-10 | 109580 |  | 209d |  | start on or after 2017-07-20 | MH-Wtg |  |  | 003 |
| 107082 |  | Cable tray layout | 15d | 2018-01-01 | 2018-01-19 | 105340 |  | 202d |  | finish on or after 2017-12-29 | MH-Wtg [8.28 h] | 3,726 |  | 003 |

| ID | WBS | Activity | Duration | Start | Finish | Predecessors | Complete | Total float | Constraint | Resources | Cost | Actual cost | UNIT DESCRIPTION |
| --- | --- | --- | --- | --- | --- | --- | --- | --- | --- | --- | --- | --- | --- |
|  | 37 | **B103C- WWS Storage Tanks** |  | 2017-08-24 | 2018-01-16 |  |  |  |  |  |  |  |  |
| 107087 |  | Earthing layout & calculations | 1d | 2017-08-24 A | 2017-08-24 A | 107085 | 100% |  |  | MH-Wtg [2.68 h] | 1,206 | 1,206 | 003 |
| 107088 |  | Lighting layout & calculations | 1d | 2017-08-29 A | 2017-08-29 A | 107087 | 100% |  |  | MH-Wtg [2.68 h] | 1,206 | 1,206 | 003 |
| 107085 |  | Electrical area classification drawings (Safe area) | 6d | 2018-01-01 | 2018-01-08 | 110350 |  | 211d | start on or after 2017-07-20 | MH-Wtg |  |  | 003 |
| 107086 |  | Cable tray layout | 12d | 2018-01-01 | 2018-01-16 | 105610 |  | 205d | finish on or after 2017-12-29 | MH-Wtg [2.68 h] | 1,206 |  | 003 |
|  | 5 | **B103D- WNA/CNA Tanker Loading Bays** |  | 2017-08-25 | 2018-01-10 |  |  |  |  |  |  |  |  |
| 107100 |  | Earthing layout & calculations | 1d | 2017-08-25 A | 2017-08-25 A | 106080 | 100% |  |  | MH-Wtg [4.83 h] | 2,174 | 2,174 | 003 |
| 107110 |  | Lighting layout & calculations | 1d | 2017-08-28 A | 2017-08-28 A | 107100 | 100% |  |  | MH-Wtg [4.83 h] | 2,174 | 2,174 | 003 |
| 107090 |  | Cable tray layout | 8d | 2018-01-01 | 2018-01-10 | 103950 |  | 209d | finish on or after 2017-12-29 | MH-Wtg [6.44 h] | 2,898 |  | 003 |
|  | 6 | **B104A- Caustic, Sulphuric Storage** |  | 2017-08-25 | 2018-01-19 |  |  |  |  |  |  |  |  |
| 107140 |  | Earthing layout & calculations | 1d | 2017-08-25 A | 2017-08-25 A | 107120 | 100% |  |  | MH-Wtg [6.26 h] | 2,817 | 2,817 | 003 |
| 107150 |  | Lighting layout & calculations | 1d | 2017-08-28 A | 2017-08-28 A | 107140 | 100% |  |  | MH-Wtg [6.26 h] | 2,817 | 2,817 | 003 |
| 107120 |  | Electrical area classification drawings (Safe area) | 8d | 2018-01-01 | 2018-01-10 | 106120 |  | 209d | start on or after 2017-07-20 | MH-Wtg |  |  | 003 |
| 107130 |  | Cable tray layout | 15d | 2018-01-01 | 2018-01-19 | 104130 |  | 202d | finish on or after 2017-12-29 | MH-Wtg [6.26 h] | 2,817 |  | 003 |
|  | 7 | **B104B- HSD Storage (Deleted)** |  | 2018-01-01 | 2018-01-05 |  |  |  |  |  |  |  |  |
| 107160 |  | Electrical area classification drawings (Deleted) | 5d | 2018-01-01 | 2018-01-05 |  |  | 212d |  | MH-Wtg |  |  | 003 |
| 107170 |  | Cable tray layout (Deleted) | 5d | 2018-01-01 | 2018-01-05 |  |  | 212d |  | MH-Wtg |  |  | 003 |
| 107180 |  | Earthing layout & calculations (Deleted) | 5d | 2018-01-01 | 2018-01-05 |  |  | 212d |  | MH-Wtg |  |  | 003 |
| 107190 |  | Lighting layout & calculations (Deleted) | 5d | 2018-01-01 | 2018-01-05 |  |  | 212d |  | MH-Wtg |  |  | 003 |
|  | 8 | **B104C-Liquid NH3 Storage** |  | 2017-08-30 | 2018-01-19 |  |  |  |  |  |  |  |  |
| 107230 |  | Lighting layout & calculations | 1d | 2017-08-30 A | 2017-08-30 A | 107220 | 100% |  |  | MH-Wtg [2.68 h] | 1,206 | 1,206 | 003 |
| 107220 |  | Earthing layout & calculations | 1d | 2017-08-31 A | 2017-08-31 A | 107200 | 100% |  |  | MH-Wtg [2.68 h] | 1,206 | 1,206 | 003 |
| 107200 |  | Electrical area classification drawings (Safe area) | 8d | 2018-01-01 | 2018-01-10 | 106200 |  | 209d | start on or after 2017-07-20 | MH-Wtg |  |  | 003 |
| 107210 |  | Cable tray layout | 15d | 2018-01-01 | 2018-01-19 | 104490 |  | 202d | finish on or after 2017-12-29 | MH-Wtg [2.68 h] | 1,206 |  | 003 |

| ID | WBS | Activity | Duration | Start | Finish | Predecessors | Complete | Total float | Free float | Constraint | Resources | Cost | Actual cost | UNIT DESCRIPTION |
| --- | --- | --- | --- | --- | --- | --- | --- | --- | --- | --- | --- | --- | --- | --- |
|  | 40 | **B104E- SNA** |  | 2017-08-25 | 2018-01-16 |  |  |  |  |  |  |  |  |  |
| 107097 |  | Earthing layout & calculations | 1d | 2017-08-25 A | 2017-08-25 A | 107095 | 100% |  |  |  | MH-Wtg [2.68 h] | 1,206 | 1,206 | 003 |
| 107098 |  | Lighting layout & calculations | 1d | 2017-08-28 A | 2017-08-28 A | 107097 | 100% |  |  |  | MH-Wtg [2.68 h] | 1,206 | 1,206 | 003 |
| 107095 |  | Electrical area classification drawings (Safe area) | 6d | 2018-01-01 | 2018-01-08 | 114180 |  | 211d |  | start on or after 2017-07-20 | MH-Wtg |  |  | 003 |
| 107096 |  | Cable tray layout | 12d | 2018-01-01 | 2018-01-16 | 113860 |  | 205d |  | finish on or after 2017-12-29 | MH-Wtg [2.68 h] | 1,206 |  | 003 |
|  | 41 | **B104F- SNA Tanker Unloading** |  | 2017-08-25 | 2018-01-10 |  |  |  |  |  |  |  |  |  |
| 114280 |  | Earthing layout & calculations | 1d | 2017-08-25 A | 2017-08-25 A | 107097 | 100% |  |  |  | MH-Wtg [4.83 h] | 2,174 | 2,174 | 003 |
| 114290 |  | Lighting layout & calculations | 1d | 2017-08-28 A | 2017-08-28 A | 114280 | 100% |  |  |  | MH-Wtg [4.83 h] | 2,174 | 2,174 | 003 |
| 114270 |  | Cable tray layout | 8d | 2018-01-01 | 2018-01-10 | 114080 |  | 209d |  | finish on or after 2017-12-29 | MH-Wtg [6.44 h] | 2,898 |  | 003 |
|  | 9 | **B105A- Air Compressor** |  | 2017-09-28 | 2018-01-12 |  |  |  |  |  |  |  |  |  |
| 107250 |  | Earthing layout & calculations | 1d | 2017-09-28 A | 2017-09-28 A | 106240 | 100% |  |  |  | MH-Wtg [9.93 h] | 4,469 | 4,469 | 003 |
| 107260 |  | Lighting layout & calculations | 1d | 2017-09-28 A | 2017-09-28 A | 107250 | 100% |  |  |  | MH-Wtg [9.93 h] | 4,469 | 4,469 | 003 |
| 107240 |  | Cable tray layout | 10d | 2018-01-01 | 2018-01-12 | 104670 |  | 197d | 0d | finish on or after 2017-12-29 | MH-Wtg [13.25 h] | 5,963 |  | 003 |
|  | 10 | **B105B- Air Drier** |  | 2017-09-28 | 2018-01-10 |  |  |  |  |  |  |  |  |  |
| 107280 |  | Earthing layout & calculations | 1d | 2017-09-28 A | 2017-09-28 A | 106280 | 100% |  |  |  | MH-Wtg [3.22 h] | 1,449 | 1,449 | 003 |
| 107290 |  | Lighting layout & calculations | 1d | 2017-09-28 A | 2017-09-28 A | 107280 | 100% |  |  |  | MH-Wtg [3.22 h] | 1,449 | 1,449 | 003 |
| 107270 |  | Cable tray layout | 8d | 2018-01-01 | 2018-01-10 | 104830 |  | 209d |  | finish on or after 2017-12-29 | MH-Wtg [4.3 h] | 1,935 |  | 003 |
|  | 11 | **B105C- VAM Unit (Package)** |  | 2018-01-01 | 2018-01-10 |  |  |  |  |  |  |  |  |  |
| 107300 |  | Cable tray layout (Package vendor) | 8d | 2018-01-01 | 2018-01-10 |  |  | 209d |  |  | MH-Wtg |  |  | 003 |
| 107310 |  | Earthing layout & calculations (Package vendor) | 5d | 2018-01-01 | 2018-01-05 |  |  | 212d |  |  | MH-Wtg |  |  | 003 |
| 107320 |  | Lighting layout & calculations (Package vendor) | 5d | 2018-01-01 | 2018-01-05 |  |  | 212d |  |  | MH-Wtg |  |  | 003 |
|  | 12 | **B105D- Hot Well/Cold Well, Pumps (Package)** |  | 2018-01-01 | 2018-01-16 |  |  |  |  |  |  |  |  |  |
| 107330 |  | Cable tray layout (Package vendor) | 12d | 2018-01-01 | 2018-01-16 |  |  | 205d |  |  | MH-Wtg |  |  | 003 |
| 107340 |  | Earthing layout & calculations (Package vendor) | 8d | 2018-01-01 | 2018-01-10 |  |  | 209d |  |  | MH-Wtg |  |  | 003 |
| 107350 |  | Lighting layout & calculations (Package vendor) | 8d | 2018-01-01 | 2018-01-10 |  |  | 209d |  |  | MH-Wtg |  |  | 003 |

| ID | WBS | Activity | Duration | Start | Finish | Predecessors | Complete | Total float | Free float | Constraint | Resources | Cost | Actual cost | UNIT DESCRIPTION |
| --- | --- | --- | --- | --- | --- | --- | --- | --- | --- | --- | --- | --- | --- | --- |
|  | 42 | **B106D- Condensate Storage, Pumps** |  | 2018-01-01 | 2018-01-29 |  |  |  |  |  |  |  |  |  |
| 107461 |  | Cable tray layout | 12d | 2018-01-01 | 2018-01-16 |  |  | 205d |  | finish on or after 2017-12-29 | MH-Wtg [4.3 h] | 1,935 |  | 003 |
| 107462 |  | Earthing layout & calculations | 10d | 2018-01-01 | 2018-01-12 | 114760 |  | 197d | 0d |  | MH-Wtg [3.22 h] | 1,449 |  | 003 |
| 107463 |  | Lighting layout & calculations | 10d | 2018-01-15 | 2018-01-29 | 107462 |  | 197d |  |  | MH-Wtg [3.22 h] | 1,449 |  | 003 |
|  | 15 | **B107A- Raw Water Storage** |  | 2017-08-31 | 2018-01-19 |  |  |  |  |  |  |  |  |  |
| 107430 |  | Lighting layout & calculations | 1d | 2017-08-31 A | 2017-08-31 A | 107420 | 100% |  |  |  | MH-Wtg [7.52 h] | 3,384 | 3,384 | 003 |
| 107420 |  | Cable tray layout | 5d | 2018-01-15 | 2018-01-19 | 106440, 107240 |  | 197d | 0d | finish on or after 2017-12-29 | MH-Wtg [3.22 h] | 1,449 |  | 003 |
|  | 24 | **B107C- Pump House** |  | 2017-08-29 | 2018-01-16 |  |  |  |  |  |  |  |  |  |
| 107422 |  | Earthing layout & calculations | 1d | 2017-08-29 A | 2017-08-29 A | 110790 | 100% |  |  |  | MH-Wtg [9.93 h] | 4,469 | 4,469 | 003 |
| 107423 |  | Lighting layout & calculations | 1d | 2017-08-31 A | 2017-08-31 A | 107422 | 100% |  |  |  | MH-Wtg [9.93 h] | 4,469 | 4,469 | 003 |
| 107421 |  | Cable tray layout | 12d | 2018-01-01 | 2018-01-16 | 108900 |  | 205d |  | finish on or after 2017-12-29 | MH-Wtg [13.25 h] | 5,963 |  | 003 |
|  | 16 | **B108B- Treated Water Storage** |  | 2017-08-31 | 2018-01-29 |  |  |  |  |  |  |  |  |  |
| 107450 |  | Lighting layout & calculations | 1d | 2017-08-31 A | 2017-08-31 A | 107440 | 100% |  |  |  | MH-Wtg [7.52 h] | 3,384 | 3,384 | 003 |
| 107440 |  | Cable tray layout | 5d | 2018-01-22 | 2018-01-29 | 107420 |  | 197d |  | finish on or after 2017-12-29 | MH-Wtg [3.22 h] | 1,449 |  | 003 |
|  | 13 | **B108D- DM Storage** |  | 2017-08-29 | 2018-01-16 |  |  |  |  |  |  |  |  |  |
| 107452 |  | Earthing layout & calculations | 1d | 2017-08-29 A | 2017-08-29 A | 110830 | 100% |  |  |  | MH-Wtg [3.22 h] | 1,449 | 1,449 | 003 |
| 107453 |  | Lighting layout & calculations | 1d | 2017-08-31 A | 2017-08-31 A | 107452 | 100% |  |  |  | MH-Wtg [3.22 h] | 1,449 | 1,449 | 003 |
| 107451 |  | Cable tray layout | 12d | 2018-01-01 | 2018-01-16 | 109610 |  | 205d |  | finish on or after 2017-12-29 | MH-Wtg [4.3 h] | 1,935 |  | 003 |
|  | 18 | **B109- Cooling Tower with Pumps** |  | 2017-09-29 | 2018-01-12 |  |  |  |  |  |  |  |  |  |
| 107510 |  | Lighting layout & calculations | 1d | 2017-09-29 A | 2017-09-29 A | 107500 | 100% |  |  |  | MH-Wtg [6.71 h] | 3,020 | 3,020 | 003 |
| 107490 |  | Cable tray layout | 10d | 2018-01-01 | 2018-01-12 | 105710 |  | 207d |  | finish on or after 2017-12-29 | MH-Wtg [8.95 h] | 4,028 |  | 003 |
| 107500 |  | Earthing layout & calculations | 8d | 2018-01-01 | 2018-01-10 | 106510 |  | 209d |  |  | MH-Wtg [6.71 h] | 3,020 |  | 003 |
|  | 22 | **B110D-Metering Room (Deleted)** |  | 2018-01-01 | 2018-01-19 |  |  |  |  |  |  |  |  |  |
| 107680 |  | Cable tray layout (Deleted) | 8d | 2018-01-01 | 2018-01-10 |  |  | 209d |  |  | MH-Wtg |  |  | 003 |
| 107690 |  | Cable termination details (Deleted) | 15d | 2018-01-01 | 2018-01-19 | 113330 FS+10d |  | 202d |  |  | MH-Wtg |  |  | 003 |
| 107700 |  | Earthing layout & calculations (Deleted) | 10d | 2018-01-01 | 2018-01-12 |  |  | 207d |  |  | MH-Wtg |  |  | 003 |
| 107710 |  | Lighting layout & calculations (Deleted) | 8d | 2018-01-01 | 2018-01-10 |  |  | 209d |  |  | MH-Wtg |  |  | 003 |
| 107720 |  | Lightening protection drawings (Deleted) | 5d | 2018-01-01 | 2018-01-05 |  |  | 212d |  |  | MH-Wtg |  |  | 003 |

| ID | WBS | Activity | Duration | Start | Finish | Predecessors | Complete | Remaining | Total float | Free float | Constraint | Resources | Cost | Actual cost | UNIT DESCRIPTION |
| --- | --- | --- | --- | --- | --- | --- | --- | --- | --- | --- | --- | --- | --- | --- | --- |
|  | 20 | **B110B- DG Room** |  | 2018-03-02 | 2018-04-13 |  |  |  |  |  |  |  |  |  |  |
| 107610 |  | Earthing layout & calculations | 10d | 2018-03-02 | 2018-03-15 | 101820 |  |  | 143d | 0d |  | MH-Wtg [4.3 h] | 1,935 |  | 003 |
| 107620 |  | Lighting layout & calculations | 8d | 2018-03-16 | 2018-03-27 | 107610 |  |  | 143d | 0d |  | MH-Wtg [4.3 h] | 1,935 |  | 003 |
| 107600 |  | Cable tray layout | 8d | 2018-03-28 | 2018-04-06 | 107620 |  |  | 143d | 0d | finish on or after 2017-12-29 | MH-Wtg [1.07 h] | 482 |  | 003 |
| 107630 |  | Lightening protection drawings (Deleted) | 5d | 2018-04-09 | 2018-04-13 | 107600 |  |  | 143d |  |  | MH-Wtg |  |  | 003 |
|  | 19 | **B110A- Process/Utility Sub-station** |  | 2017-07-05 | 2018-02-09 |  |  |  |  |  |  |  |  |  |  |
| 107520 |  | Cable list/schedule- HT | 18d | 2017-07-05 A | 2017-07-28 A | 106840, 106720 | 100% |  |  |  |  | MH-Wtg [10.92 h] | 4,914 | 4,914 | 003 |
| 107530 |  | Cable list/schedule- LT | 1d | 2017-08-24 A | 2017-08-24 A | 106850, 106720 | 100% |  |  |  |  | MH-Wtg [10.92 h] | 4,914 | 4,914 | 003 |
| 107570 |  | Earthing layout & calculations | 1d | 2017-08-29 A | 2017-08-29 A | 101660 | 100% |  |  |  |  | MH-Wtg [8.19 h] | 3,686 | 3,686 | 003 |
| 107580 |  | Lighting layout & calculations | 1d | 2017-09-01 A | 2017-09-01 A | 107570 | 100% |  |  |  |  | MH-Wtg [8.19 h] | 3,686 | 3,686 | 003 |
| 107590 |  | Lightening protection drawings | 1d | 2017-09-18 A | 2017-09-18 A | 107560 | 100% |  |  |  |  | MH-Wtg [2.73 h] | 1,229 | 1,229 | 003 |
| 107540 |  | Drum schedule | 58d | 2017-10-25 A | 2018-01-12 | 107530, 107520, 113470 FS+10d | 83% | 10d | 207d |  |  | MH-Wtg [2.73 h] | 1,229 | 1,017 | 003 |
| 107560 |  | Cable tray layout | 10d | 2018-01-01 | 2018-01-12 | 107580 |  |  | 207d |  | finish on or after 2017-12-29 | MH-Wtg [2.73 h] | 1,229 |  | 003 |
| 107550 |  | Cable termination details | 20d | 2018-01-12 | 2018-02-09 | 113350 FS+10d, 107530, 113340 FS+10d, 113360 FS+10d |  |  | 188d |  |  | MH-Wtg [8.19 h] | 3,686 |  | 003 |
|  | 23 | **B112- Control Room & QC** |  | 2017-08-31 | 2018-01-10 |  |  |  |  |  |  |  |  |  |  |
| 107740 |  | Earthing layout & calculations | 1d | 2017-08-31 A | 2017-08-31 A | 102060 | 100% |  |  |  |  | MH-Wtg [11.1 h] | 4,995 | 4,995 | 003 |
| 107750 |  | Lighting layout & calculations | 1d | 2017-08-31 A | 2017-08-31 A | 107740 | 100% |  |  |  |  | MH-Wtg [11.1 h] | 4,995 | 4,995 | 003 |
| 107760 |  | Lightening protection drawings | 1d | 2017-09-18 A | 2017-09-18 A | 107730 | 100% |  |  |  |  | MH-Wtg [2.77 h] | 1,247 | 1,247 | 003 |
| 107730 |  | Cable tray layout | 8d | 2018-01-01 | 2018-01-10 | 107750 |  |  | 209d |  | finish on or after 2017-12-29 | MH-Wtg [2.77 h] | 1,247 |  | 003 |
|  | 25 | **B113A- Admin Building** |  | 2017-07-20 | 2018-01-16 |  |  |  |  |  |  |  |  |  |  |
| 107840 |  | Earthing layout & calculations | 2d | 2017-07-20 A | 2017-07-21 A | 102330 | 100% |  |  |  |  | MH-Wtg [11.1 h] | 4,995 | 4,995 | 003 |
| 107850 |  | Lighting layout & calculations | 2d | 2017-08-31 A | 2017-09-01 A | 107840 | 100% |  |  |  |  | MH-Wtg [11.1 h] | 4,995 | 4,995 | 003 |
| 107860 |  | Lightening protection drawings | 1d | 2017-09-18 A | 2017-09-18 A |  | 100% |  |  |  |  | MH-Wtg [2.77 h] | 1,247 | 1,247 | 003 |
| 107830 |  | Cable tray layout (Deleted) | 12d | 2018-01-01 | 2018-01-16 | 107850 |  |  | 205d |  |  | MH-Wtg |  |  | 003 |

| ID | WBS | Activity | Duration | Start | Finish | Predecessors | Complete | Total float | Free float | Constraint | Resources | Cost | Actual cost | UNIT DESCRIPTION |
| --- | --- | --- | --- | --- | --- | --- | --- | --- | --- | --- | --- | --- | --- | --- |
|  | 26 | **B113A- Canteen** |  | 2017-07-20 | 2018-01-12 |  |  |  |  |  |  |  |  |  |
| 107880 |  | Earthing layout & calculations | 2d | 2017-07-20 A | 2017-07-21 A | 102450 | 100% |  |  |  | MH-Wtg [8.95 h] | 4,028 | 4,028 | 003 |
| 107890 |  | Lighting layout & calculations | 2d | 2017-08-31 A | 2017-09-01 A | 107880 | 100% |  |  |  | MH-Wtg [8.95 h] | 4,028 | 4,028 | 003 |
| 107900 |  | Lightening protection drawings | 1d | 2017-09-18 A | 2017-09-18 A |  | 100% |  |  |  | MH-Wtg [2.24 h] | 1,008 | 1,008 | 003 |
| 107870 |  | Cable tray layout (Deleted) | 10d | 2018-01-01 | 2018-01-12 | 107890 |  | 207d |  |  | MH-Wtg |  |  | 003 |
|  | 32 | **B113B- Security Block, HSE** |  | 2017-07-20 | 2018-01-10 |  |  |  |  |  |  |  |  |  |
| 108040 |  | Earthing layout & calculations | 2d | 2017-07-20 A | 2017-07-21 A | 102970 | 100% |  |  |  | MH-Wtg [8.95 h] | 4,028 | 4,028 | 003 |
| 108050 |  | Lighting layout & calculations | 2d | 2017-08-31 A | 2017-09-01 A | 108040 | 100% |  |  |  | MH-Wtg [8.95 h] | 4,028 | 4,028 | 003 |
| 108030 |  | Cable tray layout (Deleted) | 8d | 2018-01-01 | 2018-01-10 | 108050 |  | 209d |  |  | MH-Wtg [2.24 h] | 1,008 |  | 003 |
| 108060 |  | Lightening protection drawings (Deleted) | 5d | 2018-01-01 | 2018-01-05 |  |  | 212d |  |  | MH-Wtg |  |  | 003 |
|  | 27 | **B114A- Warehouse, Stores** |  | 2017-08-30 | 2018-01-10 |  |  |  |  |  |  |  |  |  |
| 107930 |  | Lighting layout & calculations | 1d | 2017-08-30 A | 2017-08-30 A | 107920 | 100% |  |  |  | MH-Wtg [6.71 h] | 3,020 | 3,020 | 003 |
| 107920 |  | Earthing layout & calculations | 1d | 2017-08-31 A | 2017-08-31 A | 102540 | 100% |  |  | start on or after 2017-08-10 | MH-Wtg [6.71 h] | 3,020 | 3,020 | 003 |
| 107910 |  | Cable tray layout (Deleted) | 8d | 2018-01-01 | 2018-01-10 | 107930 |  | 209d |  |  | MH-Wtg |  |  | 003 |
|  | 28 | **B114B- Weighbridge, Logistics** |  | 2017-08-30 | 2018-01-05 |  |  |  |  |  |  |  |  |  |
| 107960 |  | Lighting layout & calculations | 1d | 2017-08-30 A | 2017-08-30 A | 107950 | 100% |  |  |  | MH-Wtg [1.61 h] | 725 | 725 | 003 |
| 107950 |  | Earthing layout & calculations | 1d | 2017-08-31 A | 2017-08-31 A | 102720 | 100% |  |  |  | MH-Wtg [1.61 h] | 725 | 725 | 003 |
| 107940 |  | Cable tray layout (Deleted) | 5d | 2018-01-01 | 2018-01-05 | 107960 |  | 212d |  |  | MH-Wtg |  |  | 003 |
|  | 14 | **B114C- Weighbridge, Logistics** |  | 2017-08-30 | 2018-01-05 |  |  |  |  |  |  |  |  |  |
| 109763 |  | Lighting layout & calculations | 1d | 2017-08-30 A | 2017-08-30 A | 109762 | 100% |  |  |  | MH-Wtg [1.61 h] | 725 | 725 | 003 |
| 109762 |  | Earthing layout & calculations | 1d | 2017-08-31 A | 2017-08-31 A | 111460 | 100% |  |  |  | MH-Wtg [1.61 h] | 725 | 725 | 003 |
| 107961 |  | Cable tray layout (Deleted) | 5d | 2018-01-01 | 2018-01-05 | 109763 |  | 212d |  |  | MH-Wtg |  |  | 003 |
|  | 29 | **B115A- Car Parking** |  | 2018-03-14 | 2018-03-20 |  |  |  |  |  |  |  |  |  |
| 107970 |  | Cable tray layout | 3d | 2018-03-14 | 2018-03-16 | 102920 |  | 155d | 0d | finish on or after 2017-12-29 | MH-Wtg [1.61 h] | 725 |  | 003 |
| 107980 |  | Lighting layout | 2d | 2018-03-19 | 2018-03-20 | 107970 |  | 161d |  |  | MH-Wtg [1.07 h] | 482 |  | 003 |

| ID | WBS | Activity | Duration | Start | Finish | Predecessors | Complete | Total float | Free float | Constraint | Resources | Cost | Actual cost | UNIT DESCRIPTION |
| --- | --- | --- | --- | --- | --- | --- | --- | --- | --- | --- | --- | --- | --- | --- |
|  | 30 | **B115B- Two Wheeler Parking** |  | 2018-03-19 | 2018-03-23 |  |  |  |  |  |  |  |  |  |
| 107990 |  | Cable tray layout | 3d | 2018-03-19 | 2018-03-21 | 107970 |  | 155d | 0d | finish on or after 2017-12-29 | MH-Wtg [1.61 h] | 725 |  | 003 |
| 108000 |  | Lighting layout | 2d | 2018-03-22 | 2018-03-23 | 107990 |  | 158d |  |  | MH-Wtg [1.07 h] | 482 |  | 003 |
|  | 31 | **B115C- Truck Parking** |  | 2018-03-22 | 2018-03-28 |  |  |  |  |  |  |  |  |  |
| 108010 |  | Cable tray layout | 3d | 2018-03-22 | 2018-03-26 | 107990 |  | 155d | 0d | finish on or after 2017-12-29 | MH-Wtg [1.61 h] | 725 |  | 003 |
| 108020 |  | Lighting layout | 2d | 2018-03-27 | 2018-03-28 | 108010 |  | 155d |  |  | MH-Wtg [1.07 h] | 482 |  | 003 |
|  | 33 | **B116A- Security Guard House** |  | 2017-09-28 | 2018-01-05 |  |  |  |  |  |  |  |  |  |
| 108080 |  | Lighting layout | 1d | 2017-09-28 A | 2017-09-28 A |  | 100% |  |  |  | MH-Wtg [1.07 h] | 482 | 482 | 003 |
| 108070 |  | Cable tray layout (Deleted) | 5d | 2018-01-01 | 2018-01-05 |  |  | 212d |  |  | MH-Wtg |  |  | 003 |
|  | 17 | **B116B- Security Guard House** |  | 2017-09-28 | 2018-01-05 |  |  |  |  |  |  |  |  |  |
| 108082 |  | Lighting layout | 1d | 2017-09-28 A | 2017-09-28 A |  | 100% |  |  |  | MH-Wtg [1.07 h] | 482 | 482 | 003 |
| 108081 |  | Cable tray layout (Deleted) | 5d | 2018-01-01 | 2018-01-05 |  |  | 212d |  |  | MH-Wtg |  |  | 003 |
|  | 21 | **B116D- Security Guard House (Deleted)** |  | 2018-01-01 | 2018-01-05 |  |  |  |  |  |  |  |  |  |
| 108083 |  | Cable tray layout (Deleted) | 5d | 2018-01-01 | 2018-01-05 |  |  | 212d |  |  | MH-Wtg |  |  | 003 |
| 108084 |  | Lighting layout (Deleted) | 3d | 2018-01-01 | 2018-01-03 |  |  | 214d |  |  | MH-Wtg |  |  | 003 |
|  | 34 | **B117- Piperack** |  | 2017-06-02 | 2018-02-12 |  |  |  |  |  |  |  |  |  |
| 108100 |  | Earthing layout & calculations | 1d | 2017-06-02 A | 2017-06-02 A | 105790 | 100% |  |  |  | MH-Wtg [18.61 h] | 8,375 | 8,375 | 003 |
| 108090 |  | Cable tray layout | 30d | 2018-01-01 | 2018-02-12 | 105860 |  | 187d |  | finish on or after 2017-12-29 | MH-Wtg [27.92 h] | 12,564 |  | 003 |
|  | 38 | **B121- Engineering Store** |  | 2017-07-20 | 2017-09-21 |  |  |  |  |  |  |  |  |  |
| 108102 |  | Earthing layout & calculations | 2d | 2017-07-20 A | 2017-07-21 A | 119470 | 100% |  |  |  | MH-Wtg [6.71 h] | 3,020 | 3,020 | 003 |
| 108103 |  | Lighting layout & calculations | 1d | 2017-08-24 A | 2017-08-24 A | 108102 | 100% |  |  |  | MH-Wtg [6.71 h] | 3,020 | 3,020 | 003 |
| 108103.1 |  | Lightening protection drawings | 1d | 2017-09-18 A | 2017-09-18 A |  | 100% |  |  |  |  |  |  | 003 |
| 108101 |  | Cable tray layout | 1d | 2017-09-21 A | 2017-09-21 A | 108103 | 100% |  |  |  | MH-Wtg [8.95 h] | 4,028 | 4,028 | 003 |
|  | 39 | **B122- Engineering Workshop** |  | 2017-07-20 | 2017-09-21 |  |  |  |  |  |  |  |  |  |
| 108105 |  | Earthing layout & calculations | 2d | 2017-07-20 A | 2017-07-21 A | 108102 SS | 100% |  |  |  | MH-Wtg [9.19 h] | 4,136 | 4,136 | 003 |
| 108106 |  | Lighting layout & calculations | 1d | 2017-08-24 A | 2017-08-24 A | 108105 | 100% |  |  |  | MH-Wtg [0.92 h] | 414 | 414 | 003 |
| 108104 |  | Cable tray layout | 1d | 2017-09-21 A | 2017-09-21 A | 108106 | 100% |  |  |  | MH-Wtg [12.26 h] | 5,517 | 5,517 | 003 |

| ID | WBS | Activity | Duration | Start | Finish | Predecessors | Complete | Planned start | Planned finish | Total float | Free float | Constraint | Resources | Cost | Actual cost | UNIT DESCRIPTION |
| --- | --- | --- | --- | --- | --- | --- | --- | --- | --- | --- | --- | --- | --- | --- | --- | --- |
|  | 35 | **BXXX- Roads, Drain** |  | 2017-08-25 | 2017-08-25 |  |  |  |  |  |  |  |  |  |  |  |
| 108110 |  | Street lighting layout & calculations | 1d | 2017-08-25 A | 2017-08-25 A | 106730 | 100% |  |  |  |  |  | MH-Wtg [33.11 h] | 14,900 | 14,900 | 003 |
|  | 3 | **Material Take Off (MTO)** |  | 2017-07-28 | 2018-01-29 |  |  |  |  |  |  |  |  |  |  |  |
| 108130 |  | MTO for electrical cables | 23d | 2017-07-28 A | 2017-08-30 A | 107520, 107530, 108120 | 100% |  |  |  |  |  | MH-Wtg [101.9 h] | 45,855 | 45,855 | 003 |
| 108120 |  | MTO for cable trays | 1d | 2017-08-31 A | 2017-08-31 A | 103550, 108900, 105860 | 100% |  |  |  |  |  | MH-Wtg [81.52 h] | 36,684 | 36,684 | 003 |
| 108140 |  | MTO for other electrical bulk materials (Deleted) | 20d | 2018-01-01 | 2018-01-29 | 108130 |  |  |  | 197d |  |  | MH-Wtg |  |  | 003 |
|  | 4 | **Enquiry/Tenders** |  | 2016-11-08 | 2018-01-19 |  |  |  |  |  |  |  |  |  |  |  |
| 108150 |  | Enquiry for Switchyard (Deleted) | 55d | 2016-11-08 A | 2017-01-23 A | 106690 | 100% | 2017-04-17 | 2017-06-30 |  |  | start on 2016-11-08 | MH-Wtg |  |  | 003 |
| 108420.2 |  | Enquiry for Construction power | 61d | 2016-11-24 A | 2017-02-16 A |  | 100% |  |  |  |  | start on 2016-11-24 |  |  |  | 003 |
| 108420.3 |  | Enquiry for Compact substation | 1d | 2017-03-23 A | 2017-03-23 A |  | 100% |  |  |  |  | start on 2017-03-23 |  |  |  | 003 |
| 108200 |  | Enquiry for MCC | 26d | 2017-04-21 A | 2017-05-26 A | 106860 FF | 100% |  |  |  |  |  | MH-Wtg [81.52 h] | 36,684 | 36,684 | 003 |
| 108160 |  | Enquiry for Transformers | 11d | 2017-05-03 A | 2017-05-17 A | 106750 | 100% |  |  |  |  |  | MH-Wtg [163.04 h] | 73,368 | 73,368 | 003 |
| 108170 |  | Enquiry for HT panel | 13d | 2017-05-03 A | 2017-05-19 A | 106830 FF | 100% |  |  |  |  |  | MH-Wtg [81.52 h] | 36,684 | 36,684 | 003 |
| 108180 |  | Enquiry HT PCC | 13d | 2017-05-03 A | 2017-05-19 A | 106840 FF | 100% |  |  |  |  |  | MH-Wtg [81.52 h] | 36,684 | 36,684 | 003 |
| 108190 |  | Enquiry for LT PCC | 1d | 2017-05-26 A | 2017-05-26 A | 106850 FF | 100% |  |  |  |  |  | MH-Wtg [81.52 h] | 36,684 | 36,684 | 003 |
| 108210 |  | Enquiry for APFC panel | 60d | 2017-05-31 A | 2017-08-23 A | 106870 FF | 100% |  |  |  |  |  | MH-Wtg [24.46 h] | 11,007 | 11,007 | 003 |
| 108220 |  | Enqury for DG | 15d | 2017-06-14 A | 2017-07-04 A | 106880 | 100% |  |  |  |  |  | MH-Wtg [48.91 h] | 22,010 | 22,010 | 003 |
| 108250 |  | Enquiry for NGR | 9d | 2017-06-20 A | 2017-06-30 A | 108260 | 100% |  |  |  |  |  | MH-Wtg [32.61 h] | 14,675 | 14,675 | 003 |
| 108270 |  | Enquiry for HT motors | 23d | 2017-06-26 A | 2017-07-26 A | 100260, 100240 | 100% |  |  |  |  |  | MH-Wtg [48.91 h] | 22,010 | 22,010 | 003 |
| 108280 |  | Enquiry for LT motors | 22d | 2017-06-29 A | 2017-07-29 A | 100250 | 100% | 2017-06-29 | 2017-07-28 |  |  |  | MH-Wtg [48.91 h] | 22,010 | 22,010 | 003 |
| 108340 |  | Enquiry for Local control stations | 21d | 2017-06-30 A | 2017-07-29 A | 108280 | 100% | 2017-06-30 | 2017-07-28 |  |  |  | MH-Wtg [32.61 h] | 14,675 | 14,675 | 003 |
| 108260 |  | Enquiry for Buss duct | 35d | 2017-07-05 A | 2017-08-23 A | 108200 | 100% |  |  |  |  |  | MH-Wtg [32.61 h] | 14,675 | 14,675 | 003 |
| 108290 |  | Enquiry for VFD | 6d | 2017-07-20 A | 2017-07-27 A | 108220 | 100% |  |  |  |  |  | MH-Wtg [81.52 h] | 36,684 | 36,684 | 003 |
| 108230 |  | Enquiry for UPS | 1d | 2017-07-28 A | 2017-07-28 A | 108220 | 100% |  |  |  |  |  | MH-Wtg [24.46 h] | 11,007 | 11,007 | 003 |
| 108300 |  | Enquiry for HT cables | 1d | 2017-07-28 A | 2017-07-28 A | 107520 | 100% |  |  |  |  |  | MH-Wtg [32.61 h] | 14,675 | 14,675 | 003 |
| 108240 |  | Enquiry for Battery and battery charger | 13d | 2017-07-31 A | 2017-08-17 A | 108230 | 100% |  |  |  |  |  | MH-Wtg [24.46 h] | 11,007 | 11,007 | 003 |
| 108410 |  | Enquiry for PA system | 5d | 2017-08-24 A | 2017-08-30 A | 108350 | 100% |  |  |  |  |  | MH-Wtg [48.91 h] | 22,010 | 22,010 | 003 |
| 108310 |  | Enquiry for LT cables | 1d | 2017-08-30 A | 2017-08-30 A | 108300, 107530 | 100% |  |  |  |  |  | MH-Wtg [32.61 h] | 14,675 | 14,675 | 003 |
| 108211 |  | Enquiry for HT Capacitor bank | 2d | 2017-08-31 A | 2017-09-01 A |  | 100% |  |  |  |  | finish on or after 2017-08-16 |  |  |  | 003 |
| 108370 |  | Enquiry for Cable tray | 1d | 2017-08-31 A | 2017-08-31 A | 108120 | 100% |  |  |  |  |  | MH-Wtg [32.61 h] | 14,675 | 14,675 | 003 |
| 108420 |  | Enquiry for CCTV | 1d | 2017-08-31 A | 2017-08-31 A | 108410 | 100% |  |  |  |  |  | MH-Wtg [48.91 h] | 22,010 | 22,010 | 003 |
| 108430 |  | Tender for Electrical installation | 7d | 2017-09-26 A | 2017-10-04 A | 108130 FF | 100% |  |  |  |  | finish on or after 2017-11-07 | MH-Wtg [81.52 h] | 36,684 | 36,684 | 003 |
| 108410.1 |  | Enquiry for EPBAX system | 5d | 2017-09-29 A | 2017-10-05 A |  | 100% |  |  |  |  | finish on or after 2017-09-29 |  |  |  | 003 |
| 108230.1 |  | Enquiry for UMPS | 1d | 2017-11-06 A | 2017-11-06 A |  | 100% |  |  |  |  | finish on or after 2017-10-12 |  |  |  | 003 |
| 108420.1 |  | Enquiry for Electrical heat tracing | 1d | 2017-11-30 A | 2017-11-30 A | 111380.1 SF-1d | 100% |  |  |  |  |  | MH-Wtg [48.91 h] | 22,010 | 22,010 | 002 |
| 108380 |  | Enquiry for Light fittings | 1d | 2017-12-29 A | 2017-12-29 A |  | 100% |  |  |  |  |  | MH-Wtg [24.46 h] | 11,007 | 11,007 | 003 |
| 108320 |  | Enquiry for Control cables (Deleted) | 5d | 2018-01-01 | 2018-01-05 | 108310 |  |  |  | 212d |  |  | MH-Wtg |  |  | 003 |
| 108330 |  | Enquiry for Jointing kits (Deleted) | 5d | 2018-01-01 | 2018-01-05 | 108300 |  |  |  | 212d |  |  | MH-Wtg |  |  | 003 |
| 108360 |  | Enquiry for Lighting transformers (Deleted) | 8d | 2018-01-01 | 2018-01-10 |  |  |  |  | 209d |  |  | MH-Wtg |  |  | 003 |
| 108390 |  | Enquiry for Earthing strips (Deleted) | 5d | 2018-01-01 | 2018-01-05 | 108370 |  |  |  | 212d |  |  | MH-Wtg |  |  | 003 |
| 108400 |  | Enquiry for Lightening arrestors (Deleted) | 8d | 2018-01-01 | 2018-01-10 |  |  |  |  | 209d |  |  | MH-Wtg |  |  | 003 |
| 108350 |  | Enquiry for Misc. panels | 10d | 2018-01-08 | 2018-01-19 | 108240, 106890 |  |  |  | 54d | 0d |  | MH-Wtg [24.46 h] | 11,007 |  | 003 |

| ID | WBS | Activity | Duration | Start | Finish | Predecessors | Complete | Planned start | Planned finish | Total float | Constraint | Resources | Cost | Actual cost | UNIT DESCRIPTION |
| --- | --- | --- | --- | --- | --- | --- | --- | --- | --- | --- | --- | --- | --- | --- | --- |
|  | 6 | **Instrumentation** |  | 2016-10-12 | 2018-02-19 |  |  |  |  |  |  |  |  |  |  |
|  | 1 | **Basic Documents** |  | 2016-10-12 | 2017-08-31 |  |  |  |  |  |  |  |  |  |  |
| 108440 |  | Design basis | 28d | 2016-10-12 A | 2016-11-20 A | 100050 SS | 100% | 2016-10-12 | 2016-11-18 |  | start on 2016-10-12 | MH-Wtg [64.36 h] | 28,962 | 28,962 | 003 |
| 108450 |  | Instrument index | 99d | 2016-12-07 A | 2017-04-21 A | 100090 FF | 100% |  |  |  | start on 2016-12-07 | MH-Wtg [107.26 h] | 48,267 | 48,267 | 003 |
| 108441 |  | Control room layout | 152d | 2016-12-15 A | 2017-07-13 A | 108440 | 100% |  |  |  | start on 2016-12-15 | MH-Wtg [85.81 h] | 38,615 | 38,615 | 003 |
| 108460 |  | Hook-up drawings | 1d | 2017-07-14 A | 2017-07-14 A | 112720 FS-36d | 100% |  |  |  |  | MH-Wtg [128.72 h] | 57,924 | 57,924 | 003 |
| 108470 |  | Standard drawings | 1d | 2017-08-31 A | 2017-08-31 A | 108540 FF | 100% |  |  |  |  | MH-Wtg [42.91 h] | 19,310 | 19,310 | 003 |
|  | 2 | **Detail Documents** |  | 2016-12-05 | 2018-02-19 |  |  |  |  |  |  |  |  |  |  |
|  | 1 | **DCS Configuration Documents** |  | 2016-12-05 | 2018-01-12 |  |  |  |  |  |  |  |  |  |  |
| 108490 |  | Control system architecture | 1d | 2016-12-05 A | 2016-12-05 A |  | 100% |  |  |  | start on 2016-12-05 | MH-Wtg [232 h] | 104,400 | 104,400 | 003 |
| 108480 |  | Instrument I/O List | 15d | 2017-03-09 A | 2017-03-29 A | 108490, 100090 FF | 100% |  |  |  |  | MH-Wtg [309 h] | 139,050 | 139,050 | 003 |
| 108520 |  | Instrument interlock diagrams | 67d | 2017-03-29 A | 2017-06-29 A | 100110 | 100% |  |  |  |  | MH-Wtg [232 h] | 104,400 | 104,400 | 003 |
| 108500 |  | Instrument configuration diagrams (Deleted) | 10d | 2018-01-01 | 2018-01-12 | 108480 |  |  |  | 207d |  | MH-Wtg |  |  | 003 |
| 108510 |  | Cause & Effect matrix (Deleted) | 10d | 2018-01-01 | 2018-01-12 | 100110 |  |  |  | 207d |  | MH-Wtg |  |  | 003 |
|  | 2 | **Construction Drawings** |  | 2017-06-01 | 2018-02-19 |  |  |  |  |  |  |  |  |  |  |
|  | 1 | **B101- WNA Plant** |  | 2017-08-31 | 2018-01-19 |  |  |  |  |  |  |  |  |  |  |
| 108530 |  | JB Schedule | 1d | 2017-08-31 A | 2017-08-31 A | 103560 | 100% |  |  |  |  | MH-Wtg [109.42 h] | 49,239 | 49,239 | 001 |
| 108540 |  | Instrument location drawings | 1d | 2017-09-29 A | 2017-09-29 A | 103570 | 100% |  |  |  |  | MH-Wtg [27.35 h] | 12,308 | 12,308 | 001 |
| 108550 |  | Cable tray layout | 15d | 2018-01-01 | 2018-01-19 | 103540 |  |  |  | 202d | finish on or after 2017-12-29 | MH-Wtg [45.59 h] | 20,516 |  | 001 |
|  | 2 | **B102A- CNA Plant-1** |  | 2017-06-01 | 2017-06-27 |  |  |  |  |  |  |  |  |  |  |
| 108570 |  | Updating Instrument location drawings | 1d | 2017-06-01 A | 2017-06-01 A | 108560 | 100% |  |  |  |  | MH-Wtg [13.75 h] | 6,188 | 6,188 | 002 |
| 108580 |  | Updating Cable tray layout | 1d | 2017-06-01 A | 2017-06-01 A | 108570 | 100% |  |  |  |  | MH-Wtg [22.91 h] | 10,310 | 10,310 | 002 |
| 108560 |  | Updating JB Schedule | 1d | 2017-06-27 A | 2017-06-27 A | 105960 | 100% |  |  |  |  | MH-Wtg [54.99 h] | 24,746 | 24,746 | 002 |
|  | 3 | **B102B- CNA Plant-2** |  | 2017-06-01 | 2017-06-27 |  |  |  |  |  |  |  |  |  |  |
| 108600 |  | Updating Instrument location drawings | 1d | 2017-06-01 A | 2017-06-01 A | 108570 SS | 100% |  |  |  |  | MH-Wtg [13.75 h] | 6,188 | 6,188 | 002 |
| 108610 |  | Updating Cable tray layout | 1d | 2017-06-08 A | 2017-06-08 A | 108580 SS | 100% |  |  |  |  | MH-Wtg [22.91 h] | 10,310 | 10,310 | 002 |
| 108590 |  | Updating JB Schedule | 1d | 2017-06-27 A | 2017-06-27 A | 108560 SS | 100% |  |  |  |  | MH-Wtg [54.99 h] | 24,746 | 24,746 | 002 |

| ID | WBS | Activity | Duration | Start | Finish | Predecessors | Complete | Remaining | Planned start | Planned finish | Total float | Constraint | Resources | Cost | Actual cost | UNIT DESCRIPTION |
| --- | --- | --- | --- | --- | --- | --- | --- | --- | --- | --- | --- | --- | --- | --- | --- | --- |
|  | 4 | **B103A- WNA Storage Tanks** |  | 2017-07-27 | 2018-01-12 |  |  |  |  |  |  |  |  |  |  |  |
| 108630 |  | Instrument location drawings | 1d | 2017-07-27 A | 2017-07-27 A | 103780 | 100% |  |  |  |  |  | MH-Wtg [8.22 h] | 3,699 | 3,699 | 003 |
| 108620 |  | JB Schedule | 1d | 2017-07-28 A | 2017-07-28 A | 103770 | 100% |  |  |  |  |  | MH-Wtg [32.88 h] | 14,796 | 14,796 | 003 |
| 108640 |  | Cable tray layout | 10d | 2018-01-01 | 2018-01-12 | 103750 |  |  |  |  | 207d | finish on or after 2017-12-29 | MH-Wtg [13.7 h] | 6,165 |  | 003 |
|  | 18 | **B103B- CNA Storage Tanks** |  | 2017-07-27 | 2018-01-12 |  |  |  |  |  |  |  |  |  |  |  |
| 108642 |  | Instrument location drawings | 1d | 2017-07-27 A | 2017-07-27 A | 105360 | 100% |  |  |  |  |  | MH-Wtg [8.22 h] | 3,699 | 3,699 | 003 |
| 108641 |  | JB Schedule | 1d | 2017-07-28 A | 2017-07-28 A | 105350 | 100% |  |  |  |  |  | MH-Wtg [32.88 h] | 14,796 | 14,796 | 003 |
| 108643 |  | Cable tray layout | 10d | 2018-01-01 | 2018-01-12 | 105330 |  |  |  |  | 207d | finish on or after 2017-12-29 | MH-Wtg [13.7 h] | 6,165 |  | 003 |
|  | 19 | **B103C- WWS Storage Tanks** |  | 2017-07-27 | 2018-01-12 |  |  |  |  |  |  |  |  |  |  |  |
| 108645 |  | Instrument location drawings | 1d | 2017-07-27 A | 2017-07-27 A | 105630 | 100% |  |  |  |  |  | MH-Wtg [2.69 h] | 1,211 | 1,211 | 003 |
| 108644 |  | JB Schedule | 1d | 2017-07-28 A | 2017-07-28 A | 105620 | 100% |  |  |  |  |  | MH-Wtg [10.77 h] | 4,847 | 4,847 | 003 |
| 108646 |  | Cable tray layout | 10d | 2018-01-01 | 2018-01-12 | 105600 |  |  |  |  | 207d | finish on or after 2017-12-29 | MH-Wtg [4.49 h] | 2,021 |  | 003 |
|  | 5 | **B103D- WNA/CNA Tanker Loading Bays** |  | 2017-09-25 | 2018-01-05 |  |  |  |  |  |  |  |  |  |  |  |
| 108650 |  | Instrument location drawings (Deleted) | 3d | 2017-09-25 A | 2018-01-03 | 103970 |  | 3d | 2017-09-25 | 2017-09-27 | 214d |  | MH-Wtg |  |  | 003 |
| 108660 |  | Cable tray layout (Deleted) | 5d | 2018-01-01 | 2018-01-05 |  |  |  |  |  | 212d |  | MH-Wtg |  |  | 003 |
|  | 6 | **B104A- Caustic, Sulphuric Storage** |  | 2017-07-27 | 2018-01-12 |  |  |  |  |  |  |  |  |  |  |  |
| 108680 |  | Instrument location drawings | 1d | 2017-07-27 A | 2017-07-27 A | 104150 | 100% |  |  |  |  |  | MH-Wtg [6.24 h] | 2,808 | 2,808 | 003 |
| 108670 |  | JB Schedule | 1d | 2017-07-28 A | 2017-07-28 A | 104140 | 100% |  |  |  |  |  | MH-Wtg [24.94 h] | 11,223 | 11,223 | 003 |
| 108690 |  | Cable tray layout | 10d | 2018-01-01 | 2018-01-12 | 104120 |  |  |  |  | 207d | finish on or after 2017-12-29 | MH-Wtg [10.39 h] | 4,676 |  | 003 |
|  | 7 | **B104B- HSD Storage (Deleted)** |  | 2018-01-01 | 2018-01-05 |  |  |  |  |  |  |  |  |  |  |  |
| 108700 |  | Instrument location drawings (Deleted) | 3d | 2018-01-01 | 2018-01-03 |  |  |  |  |  | 214d |  | MH-Wtg |  |  | 003 |
| 108710 |  | Cable tray layout (Deleted) | 5d | 2018-01-01 | 2018-01-05 |  |  |  |  |  | 212d |  | MH-Wtg |  |  | 003 |
|  | 8 | **B104C-Liquid NH3 Storage** |  | 2017-07-27 | 2018-01-12 |  |  |  |  |  |  |  |  |  |  |  |
| 108730 |  | Instrument location drawings | 1d | 2017-07-27 A | 2017-07-27 A | 104510 | 100% |  |  |  |  |  | MH-Wtg [2.69 h] | 1,211 | 1,211 | 003 |
| 108720 |  | JB Schedule | 1d | 2017-07-28 A | 2017-07-28 A | 104500 | 100% |  |  |  |  |  | MH-Wtg [10.77 h] | 4,847 | 4,847 | 003 |
| 108740 |  | Cable tray layout | 10d | 2018-01-01 | 2018-01-12 | 104480 |  |  |  |  | 207d | finish on or after 2017-12-29 | MH-Wtg [4.49 h] | 2,021 |  | 003 |

| ID | WBS | Activity | Duration | Start | Finish | Predecessors | Complete | Total float | Constraint | Resources | Cost | Actual cost | UNIT DESCRIPTION |
| --- | --- | --- | --- | --- | --- | --- | --- | --- | --- | --- | --- | --- | --- |
|  | 20 | **B104E- SNA** |  | 2017-07-27 | 2018-01-12 |  |  |  |  |  |  |  |  |
| 108655 |  | Instrument location drawings | 1d | 2017-07-27 A | 2017-07-27 A | 113890 | 100% |  |  | MH-Wtg [2.69 h] | 1,211 | 1,211 | 003 |
| 108654 |  | JB Schedule | 1d | 2017-07-28 A | 2017-07-28 A | 113870 | 100% |  |  | MH-Wtg [10.77 h] | 4,847 | 4,847 | 003 |
| 108656 |  | Cable tray layout | 10d | 2018-01-01 | 2018-01-12 | 113850 |  | 207d | finish on or after 2017-12-29 | MH-Wtg [4.49 h] | 2,021 |  | 003 |
|  | 21 | **B104F- SNA Tanker Unloading** |  | 2018-01-01 | 2018-01-05 |  |  |  |  |  |  |  |  |
| 114310 |  | Instrument location drawings (Deleted) | 3d | 2018-01-01 | 2018-01-03 | 114100 |  | 214d |  | MH-Wtg |  |  | 003 |
| 114320 |  | Cable tray layout (Deleted) | 5d | 2018-01-01 | 2018-01-05 |  |  | 212d |  | MH-Wtg |  |  | 003 |
|  | 9 | **B105A- Air Compressor** |  | 2017-07-28 | 2018-01-10 |  |  |  |  |  |  |  |  |
| 108750 |  | JB Schedule | 1d | 2017-07-28 A | 2017-07-28 A | 104680 | 100% |  |  | MH-Wtg [32.88 h] | 14,796 | 14,796 | 003 |
| 108760 |  | Instrument location drawings | 1d | 2017-09-28 A | 2017-09-28 A | 104690 | 100% |  |  | MH-Wtg [8.22 h] | 3,699 | 3,699 | 003 |
| 108770 |  | Cable tray layout | 8d | 2018-01-01 | 2018-01-10 | 104660 |  | 209d | finish on or after 2017-12-29 | MH-Wtg [13.7 h] | 6,165 |  | 003 |
|  | 10 | **B105B- Air Drier** |  | 2017-09-28 | 2018-01-10 |  |  |  |  |  |  |  |  |
| 108780 |  | Instrument location drawings | 1d | 2017-09-28 A | 2017-09-28 A | 104850 | 100% |  |  | MH-Wtg [5.39 h] | 2,426 | 2,426 | 003 |
| 108790 |  | Cable tray layout | 8d | 2018-01-01 | 2018-01-10 | 104820 |  | 209d | finish on or after 2017-12-29 | MH-Wtg [12.57 h] | 5,657 |  | 003 |
|  | 11 | **B105C- VAM Unit (Package)** |  | 2018-01-01 | 2018-01-12 |  |  |  |  |  |  |  |  |
| 108800 |  | JB Schedule (Package vendor) | 10d | 2018-01-01 | 2018-01-12 |  |  | 207d |  | MH-Wtg |  |  | 003 |
| 108810 |  | Instrument location drawings (Package vendor) | 8d | 2018-01-01 | 2018-01-10 |  |  | 209d |  | MH-Wtg |  |  | 003 |
| 108820 |  | Cable tray layout (Package vendor) | 8d | 2018-01-01 | 2018-01-10 |  |  | 209d |  | MH-Wtg |  |  | 003 |
|  | 12 | **B105D- Hot Well/Cold Well, Pumps (Package)** |  | 2018-01-01 | 2018-01-12 |  |  |  |  |  |  |  |  |
| 108830 |  | Instrument location drawings (Package vendor) | 8d | 2018-01-01 | 2018-01-10 |  |  | 209d |  | MH-Wtg |  |  | 003 |
| 108840 |  | Cable tray layout (Package vendor) | 10d | 2018-01-01 | 2018-01-12 |  |  | 207d |  | MH-Wtg |  |  | 003 |
|  | 22 | **B106D- Condensate Storage, Pumps** |  | 2018-01-01 | 2018-01-16 |  |  |  |  |  |  |  |  |
| 108854 |  | JB Schedule | 12d | 2018-01-01 | 2018-01-16 | 114660 |  | 205d |  | MH-Wtg [10.77 h] | 4,847 |  | 003 |
| 108855 |  | Instrument location drawings | 0d | 2018-01-01 | 2018-01-01 | 114670 |  | 217d |  | MH-Wtg [2.69 h] | 1,211 |  | 003 |
| 108856 |  | Cable tray layout | 10d | 2018-01-01 | 2018-01-12 |  |  | 207d | finish on or after 2017-12-29 | MH-Wtg [4.49 h] | 2,021 |  | 003 |

| ID | WBS | Activity | Duration | Start | Finish | Predecessors | Complete | Planned start | Planned finish | Total float | Constraint | Resources | Cost | Actual cost | UNIT DESCRIPTION |
| --- | --- | --- | --- | --- | --- | --- | --- | --- | --- | --- | --- | --- | --- | --- | --- |
|  | 13 | **B107C- Pump House** |  | 2017-07-28 | 2018-01-16 |  |  |  |  |  |  |  |  |  |  |
| 108841 |  | JB Schedule | 1d | 2017-07-28 A | 2017-07-28 A | 109430 | 100% |  |  |  |  | MH-Wtg [21.54 h] | 9,693 | 9,693 | 003 |
| 108842 |  | Instrument location drawings | 1d | 2017-08-31 A | 2017-08-31 A | 109440 | 100% |  |  |  |  | MH-Wtg [5.39 h] | 2,426 | 2,426 | 003 |
| 108843 |  | Cable tray layout | 12d | 2018-01-01 | 2018-01-16 | 108890 |  |  |  | 205d | finish on or after 2017-12-29 | MH-Wtg [8.98 h] | 4,041 |  | 003 |
|  | 14 | **B108D- DM Storage** |  | 2017-07-27 | 2018-01-12 |  |  |  |  |  |  |  |  |  |  |
| 108845 |  | Instrument location drawings | 1d | 2017-07-27 A | 2017-07-27 A | 109630 | 100% |  |  |  |  | MH-Wtg [2.69 h] | 1,211 | 1,211 | 003 |
| 108844 |  | JB Schedule | 1d | 2017-07-28 A | 2017-07-28 A | 109620 | 100% |  |  |  |  | MH-Wtg [10.77 h] | 4,847 | 4,847 | 003 |
| 108846 |  | Cable tray layout | 10d | 2018-01-01 | 2018-01-12 | 109600 |  |  |  | 207d | finish on or after 2017-12-29 | MH-Wtg [4.49 h] | 2,021 |  | 003 |
|  | 15 | **B109- Cooling Tower with Pumps** |  | 2017-07-27 | 2018-01-10 |  |  |  |  |  |  |  |  |  |  |
| 108910 |  | JB Schedule | 1d | 2017-07-27 A | 2017-07-27 A | 105720 | 100% |  |  |  |  | MH-Wtg [16.44 h] | 7,398 | 7,398 | 003 |
| 108920 |  | Instrument location drawings | 1d | 2017-09-29 A | 2017-09-29 A | 105730 | 100% |  |  |  |  | MH-Wtg [4.11 h] | 1,850 | 1,850 | 003 |
| 108930 |  | Cable tray layout | 8d | 2018-01-01 | 2018-01-10 | 105700 |  |  |  | 209d | finish on or after 2017-12-29 | MH-Wtg [6.85 h] | 3,083 |  | 003 |
|  | 16 | **B112- Control Room & QC** |  | 2017-06-27 | 2018-02-19 |  |  |  |  |  |  |  |  |  |  |
| 108940 |  | Cable list/schedule | 48d | 2017-06-27 A | 2017-09-01 A | 108530 FF, 108560 FF, 108590 FF, 108620 FF, 108670 FF, 108720 FF, 108750 FF, 108910 FF | 100% |  |  |  |  | MH-Wtg [54.99 h] | 24,746 | 24,746 | 003 |
| 108960 |  | Cable termination details | 10d | 2018-01-01 | 2018-01-12 | 113600 FS+15d, 108940 |  |  |  | 207d |  | MH-Wtg [27.5 h] | 12,375 |  | 003 |
| 108950 |  | Drum schedule | 10d | 2018-02-06 | 2018-02-19 | 108940, 113682 FS+10d |  |  |  | 182d |  | MH-Wtg [9.17 h] | 4,127 |  | 003 |
|  | 17 | **B117- Piperack** |  | 2018-01-01 | 2018-02-05 |  |  |  |  |  |  |  |  |  |  |
| 108970 |  | Cable tray layout | 25d | 2018-01-01 | 2018-02-05 | 105850 |  |  |  | 192d | finish on or after 2017-12-29 | MH-Wtg [72.75 h] | 32,738 |  | 003 |
|  | 3 | **Material Take Off (MTO)** |  | 2017-08-31 | 2018-01-29 |  |  |  |  |  |  |  |  |  |  |
| 108980 |  | MTO for instrument cable trays | 1d | 2017-08-31 A | 2017-08-31 A | 103540 | 100% |  |  |  |  | MH-Wtg [85.81 h] | 38,615 | 38,615 | 003 |
| 108990 |  | MTO for instrument cables | 1d | 2017-10-11 A | 2017-10-11 A | 108940, 108980 | 100% |  |  |  |  | MH-Wtg [107.26 h] | 48,267 | 48,267 | 003 |
| 109000 |  | MTO for other instrument bulk materials (Deleted) | 20d | 2018-01-01 | 2018-01-29 | 108990 |  |  |  | 197d |  | MH-Wtg |  |  | 003 |
|  | 4 | **Enquiry/Tenders** |  | 2016-12-05 | 2018-01-25 |  |  |  |  |  |  |  |  |  |  |
| 109010 |  | Enquiry for DCS system | 70d | 2016-12-05 A | 2017-03-09 A | 108490 | 100% |  |  |  |  | MH-Wtg [172 h] | 77,400 | 77,400 | 003 |
| 109021 |  | Enquiry for Control valves- CNA Plants | 81d | 2016-12-20 A | 2017-04-10 A | 100081 | 100% |  |  |  | start on 2016-12-20 | MH-Wtg [25.74 h] | 11,583 | 11,583 | 002 |
| 109031 |  | Enquiry for On/off valves- CNA Plants | 85d | 2016-12-23 A | 2017-04-19 A | 109021 | 100% |  |  |  | start on 2016-12-23 | MH-Wtg [25.74 h] | 11,583 | 11,583 | 002 |
| 109051 |  | Enquiry for Flow meters- CNA Plants | 121d | 2017-01-17 A | 2017-07-03 A | 109041 | 100% |  |  |  | start on 2017-01-17 | MH-Wtg [25.74 h] | 11,583 | 11,583 | 002 |
| 109041 |  | Enquiry for Transmitters- CNA Plants | 81d | 2017-02-01 A | 2017-05-23 A | 109031 | 100% |  |  |  | start on 2017-02-01 | MH-Wtg [226 h] | 101,700 | 101,700 | 002 |
| 109020 |  | Enquiry for Control valves- WNA Plant | 33d | 2017-02-13 A | 2017-03-28 A | 100080 SS | 100% |  |  |  |  | MH-Wtg [102.97 h] | 46,337 | 46,337 | 001 |
| 109090.3 |  | Enquiry for Vibration monitoring system | 18d | 2017-03-01 A | 2017-03-23 A |  | 100% |  |  |  |  | MH-Wtg [68.65 h] | 30,893 | 30,893 | 001 |
| 109120 |  | Enquiry for Weigh bridge | 4d | 2017-03-17 A | 2017-03-22 A |  | 100% |  |  |  | finish on 2017-03-20 | MH-Wtg [51.49 h] | 23,171 | 23,171 | 003 |
| 109090.1 |  | Enquiry for Gauges- CNA Plants | 156d | 2017-03-27 A | 2017-10-31 A |  | 100% |  |  |  |  | MH-Wtg [12.01 h] | 5,405 | 5,405 | 002 |
| 109022 |  | Enquiry for Control valves- Offsites & Utilities | 2d | 2017-04-07 A | 2017-04-10 A | 100090 | 100% |  |  |  |  | MH-Wtg [42.91 h] | 19,310 | 19,310 | 003 |
| 109040 |  | Enquiry for Transmitters- WNA Plant | 103d | 2017-04-08 A | 2017-08-31 A | 109030 | 100% | 2017-04-10 | 2017-08-31 |  |  | MH-Wtg [46 h] | 20,700 | 20,700 | 001 |
| 109061 |  | Enquiry for Analysers/Gas detectors- CNA Plants | 11d | 2017-04-08 A | 2017-04-24 A | 109051 | 100% | 2017-04-10 | 2017-04-24 |  |  | MH-Wtg [20.59 h] | 9,266 | 9,266 | 002 |
| 109062 |  | Enquiry for Analysers/Gas detectors- Offsites & Utilities | 11d | 2017-04-08 A | 2017-04-24 A | 109052 | 100% | 2017-04-10 | 2017-04-24 |  |  | MH-Wtg [34.32 h] | 15,444 | 15,444 | 003 |
| 109050 |  | Enquiry for Flow meters- WNA Plant | 2d | 2017-05-02 A | 2017-05-03 A | 109040 | 100% |  |  |  |  | MH-Wtg [42.91 h] | 19,310 | 19,310 | 001 |
| 109042 |  | Enquiry for Transmitters- Offsites & Utilities | 72d | 2017-05-23 A | 2017-08-31 A | 109032 | 100% |  |  |  |  | MH-Wtg [182 h] | 81,900 | 81,900 | 003 |
| 109052 |  | Enquiry for Flow meters- Offsites & Utilities | 44d | 2017-05-26 A | 2017-07-26 A | 109042 | 100% |  |  |  |  | MH-Wtg [85.81 h] | 38,615 | 38,615 | 003 |
| 109090.4 |  | Enquiry for Anti surge controller | 51d | 2017-05-26 A | 2017-08-04 A |  | 100% |  |  |  | finish on or after 2017-03-10 | MH-Wtg [51.49 h] | 23,171 | 23,171 | 001 |
| 109090.5 |  | Enquiry for Governer | 51d | 2017-05-26 A | 2017-08-04 A |  | 100% |  |  |  | finish on or after 2017-03-15 | MH-Wtg [51.49 h] | 23,171 | 23,171 | 001 |
| 109070 |  | Enquiry for Saftey items- WNA Plant | 55d | 2017-05-31 A | 2017-08-16 A | 109050 | 100% |  |  |  |  | MH-Wtg [51.49 h] | 23,171 | 23,171 | 001 |
| 109071 |  | Enquiry for Saftey items- CNA Plants | 55d | 2017-05-31 A | 2017-08-16 A | 109051 | 100% |  |  |  |  | MH-Wtg [12.01 h] | 5,405 | 5,405 | 002 |
| 109090 |  | Enquiry for Gauges- WNA Plant | 109d | 2017-05-31 A | 2017-10-31 A |  | 100% |  |  |  |  | MH-Wtg [48.05 h] | 21,623 | 21,623 | 001 |
| 109090.2 |  | Enquiry for Gauges- Offsites & Utilities | 109d | 2017-05-31 A | 2017-10-31 A | 109082 | 100% |  |  |  |  | MH-Wtg [25.74 h] | 11,583 | 11,583 | 003 |
| 109041.1 |  | Enquiry for DIN Rail Transmitter- CNA Plant (Deleted) | 6d | 2017-06-01 A | 2017-06-01 A | 109041 | 100% | 2017-05-23 | 2017-05-30 |  |  |  |  |  | 002 |
| 109030 |  | Enquiry for On/Off valves- WNA Plant | 1d | 2017-07-10 A | 2017-07-10 A | 109020 | 100% |  |  |  |  | MH-Wtg [43 h] | 19,350 | 19,350 | 001 |
| 109032 |  | Enquiry for On/off valves- Offsites & Utilities | 1d | 2017-07-10 A | 2017-07-10 A | 109022 | 100% |  |  |  |  | MH-Wtg [86 h] | 38,700 | 38,700 | 003 |
| 109130 |  | Enquiry of Fire alarm system | 1d | 2017-07-31 A | 2017-07-31 A | 109120 | 100% |  |  |  |  | MH-Wtg [51.49 h] | 23,171 | 23,171 | 003 |
| 109072 |  | Enquiry for Saftey items- Offsites & Utilities | 1d | 2017-08-16 A | 2017-08-16 A | 109052 | 100% |  |  |  |  | MH-Wtg [22.31 h] | 10,040 | 10,040 | 003 |
| 109091 |  | Enquiry for Cable trays | 1d | 2017-08-31 A | 2017-08-31 A | 108980 SS | 100% |  |  |  |  | MH-Wtg [34.32 h] | 15,444 | 15,444 | 003 |
| 109100 |  | Enquiry for Junction boxes | 1d | 2017-09-27 A | 2017-09-27 A | 109092 | 100% |  |  |  |  | MH-Wtg [34.32 h] | 15,444 | 15,444 | 003 |
| 109140 |  | Tender for Instrument installation | 1d | 2017-09-28 A | 2017-09-28 A | 109091 | 100% |  |  |  | finish on or after 2017-11-20 | MH-Wtg [85.81 h] | 38,615 | 38,615 | 003 |
| 109092 |  | Enquiry for Instrument cables | 1d | 2017-10-11 A | 2017-10-11 A | 109091 | 100% |  |  |  |  | MH-Wtg [34.32 h] | 15,444 | 15,444 | 003 |
| 109082 |  | Enquiry for Switches- Offsites & Utilities | 2d | 2017-12-22 A | 2017-12-25 A | 109072 | 100% |  |  |  | finish on or after 2017-11-20 | MH-Wtg [13.73 h] | 6,179 | 6,179 | 003 |
| 109110 |  | Enquiry for bulk materials (Deleted) | 5d | 2017-12-28 A | 2017-12-28 A |  | 100% | 2018-01-01 | 2018-01-05 |  | finish on or after 2017-11-25 | MH-Wtg |  |  | 003 |
| 109060 |  | Enquiry for Analysers/Gas detectors- WNA plant (Deleted) | 19d | 2018-01-01 | 2018-01-25 | 109050 |  |  |  | 198d |  | MH-Wtg |  |  | 001 |
| 109080 |  | Enquiry for Switches- WNA Plant (Deleted) | 10d | 2018-01-01 | 2018-01-12 | 109070 |  |  |  | 207d |  | MH-Wtg |  |  | 001 |
| 109081 |  | Enquiry for Switches- CNA Plants (Deleted) | 5d | 2018-01-01 | 2018-01-05 | 109071 |  |  |  | 212d |  | MH-Wtg |  |  | 002 |

| ID | WBS | Activity | Duration | Start | Finish | Predecessors | Complete | Planned start | Planned finish | Total float | Constraint | Resources | Cost | Actual cost | UNIT DESCRIPTION |
| --- | --- | --- | --- | --- | --- | --- | --- | --- | --- | --- | --- | --- | --- | --- | --- |
|  | 2 | **Procurement Assistance** |  | 2016-12-12 | 2018-05-18 |  |  |  |  |  |  |  |  |  |  |
|  | 1 | **Process** |  | 2017-01-30 | 2018-02-12 |  |  |  |  |  |  |  |  |  |  |
|  | 1 | **Floating of Enquiry & Receipt of Offers** |  | 2017-01-30 | 2018-01-29 |  |  |  |  |  |  |  |  |  |  |
| 109160 |  | Enq. floating & receipt of offers for Raw water treatment plant | 26d | 2017-01-30 A | 2017-03-04 A | 100150 | 100% |  |  |  | start on 2017-01-30 | MH-Wtg [22.6 h] | 10,170 | 10,170 | 003 |
| 109300 |  | Enq. floating & receipt of offers for Agitators | 33d | 2017-01-30 A | 2017-03-14 A | 100290 | 100% |  |  |  |  | MH-Wtg [1 h] | 450 | 450 | 002 |
| 109190 |  | Enq. floating & receipt of offers for Boiler package (Deleted) | 20d | 2017-02-01 A | 2017-03-07 A |  | 100% | 2017-04-25 | 2017-05-22 |  | start on 2017-02-01 | MH-Wtg |  |  | 003 |
| 109330 |  | Enq. floating & receipt of offers for Chiller unit | 45d | 2017-02-06 A | 2017-04-06 A | 100320 | 100% |  |  |  |  | MH-Wtg [8.47 h] | 3,812 | 3,812 | 003 |
| 109150 |  | Enq. floating & receipt of offers for Fire fighting package | 19d | 2017-02-22 A | 2017-03-17 A | 100140 | 100% |  |  |  |  | MH-Wtg [28.25 h] | 12,713 | 12,713 | 003 |
| 109170 |  | Enq. floating & receipt of offers for Cooling tower package | 22d | 2017-02-28 A | 2017-03-28 A | 100160 | 100% |  |  |  |  | MH-Wtg [22.6 h] | 10,170 | 10,170 | 003 |
| 109180 |  | Enq. floating & receipt of offers for DM plant | 38d | 2017-03-06 A | 2017-04-26 A | 100170 | 100% |  |  |  |  | MH-Wtg [8.47 h] | 3,812 | 3,812 | 003 |
| 109251 |  | Enq. floating & receipt of offers for API pumps- CNA Plants | 30d | 2017-04-11 A | 2017-05-22 A | 100241 | 100% |  |  |  |  | MH-Wtg [5 h] | 2,250 | 2,250 | 002 |
| 109420.1 |  | Enq. floating & receipt of offers for Ejectors | 31d | 2017-04-19 A | 2017-05-31 A | 100410.1 | 100% |  |  |  |  | MH-Wtg [7.06 h] | 3,177 | 3,177 | 001 |
| 109310 |  | Enq. floating & receipt of offers for Air compressor | 22d | 2017-04-26 A | 2017-05-25 A | 100300 | 100% |  |  |  |  | MH-Wtg [8.47 h] | 3,812 | 3,812 | 003 |
| 109320 |  | Enq. floating & receipt of offers for Air drier | 22d | 2017-04-26 A | 2017-05-25 A | 100310 | 100% |  |  |  |  | MH-Wtg [5.65 h] | 2,543 | 2,543 | 003 |
| 109250 |  | Enq. floating & receipt of offers for Non API pumps- WNA Plant | 32d | 2017-04-28 A | 2017-06-12 A | 100240 | 100% |  |  |  |  | MH-Wtg [10 h] | 4,500 | 4,500 | 001 |
| 109210 |  | Enq. floating & receipt of offers for ETP package | 65d | 2017-05-08 A | 2017-08-04 A | 100200 | 100% |  |  |  |  | MH-Wtg [22.6 h] | 10,170 | 10,170 | 003 |
| 109420.7 |  | Enq. floating & receipt of offers for Deareator | 25d | 2017-05-17 A | 2017-06-20 A | 100410.7 | 100% |  |  |  |  |  |  |  | 001 |
| 109420.3 |  | Enq. floating & receipt of offers for Inlet air filter | 36d | 2017-05-22 A | 2017-07-10 A | 100410.3 | 100% |  |  |  |  |  |  |  | 001 |
| 109260 |  | Enq. floating & receipt of offers for Non-API pumps | 24d | 2017-05-31 A | 2017-07-03 A | 100250 | 100% |  |  |  |  | MH-Wtg [36 h] | 16,200 | 16,200 | 003 |
| 109420.4 |  | Enq. floating & receipt of offers for Filters | 14d | 2017-05-31 A | 2017-06-19 A | 100410.4 | 100% |  |  |  |  |  |  |  | 001 |
| 109230 |  | Enq. floating & receipt of offers for Side stream filter package | 35d | 2017-06-09 A | 2017-07-27 A | 100220 | 100% |  |  |  |  | MH-Wtg [4.24 h] | 1,908 | 1,908 | 003 |
| 109421 |  | Enq. floating & receipt of offers for De-alkalizer | 35d | 2017-06-09 A | 2017-07-27 A | 100411 | 100% |  |  |  |  |  |  |  | 003 |
| 109270 |  | Enq. floating & receipt of offers for Cooling water pumps | 22d | 2017-07-20 A | 2017-08-21 A | 100260 | 100% |  |  |  |  | MH-Wtg [14.12 h] | 6,354 | 6,354 | 003 |
| 109240 |  | Enq. floating & receipt of offers for Chlorination package | 11d | 2017-08-03 A | 2017-08-18 A | 100230 | 100% |  |  |  |  | MH-Wtg [1 h] | 450 | 450 | 003 |
| 109421.1 |  | Enq. floating & receipt of offers for Ammonia compressor | 34d | 2017-08-03 A | 2017-09-20 A | 100411.1 | 100% |  |  |  |  |  |  |  | 003 |
| 109420.2 |  | Enq. floating & receipt of offers for Ammonia scrubber | 46d | 2017-08-04 A | 2017-10-09 A | 100410.2 | 100% |  |  |  |  | MH-Wtg [7.06 h] | 3,177 | 3,177 | 003 |
| 109421.4 |  | Enq. floating & receipt of offers for PFA lined pumps | 10d | 2017-08-09 A | 2017-08-23 A | 100411.4 | 100% |  |  |  |  |  |  |  | 003 |
| 109420.6 |  | Enq. floating & receipt of offers for Mist separator | 36d | 2017-08-10 A | 2017-09-29 A | 100410.6 | 100% |  |  |  |  |  |  |  | 001 |
| 109421.2 |  | Enq. floating & receipt of offers for Packing/Internals (By DFPCL) | 1d | 2017-08-16 A | 2017-08-16 A | 100411.2 | 100% |  |  |  |  |  |  |  | 002 |
| 109280 |  | Enq. floating & receipt of offers for Metering pumps | 18d | 2017-08-23 A | 2017-09-15 A | 100270 | 100% |  |  |  |  | MH-Wtg [5.65 h] | 2,543 | 2,543 | 003 |
| 109421.9.1 |  | Enq. floating & receipt of offers for Platinum filter (Internals) | 47d | 2017-08-24 A | 2017-10-27 A | 100411.9.1 | 100% |  |  |  |  |  |  |  | 001 |
| 109420.8 |  | Enq. floating & receipt of offers for Vacuum jet | 18d | 2017-08-28 A | 2017-09-20 A | 100410.8 | 100% |  |  |  |  |  |  |  | 001 |
| 109421.8 |  | Enq. floating & receipt of offers for Lift (CNA) | 16d | 2017-08-29 A | 2017-09-19 A | 100411.8 | 100% |  |  |  |  |  |  |  | 002 |
| 109290 |  | Enq. floating & receipt of offers for Extended shaft pumps | 18d | 2017-09-01 A | 2017-09-26 A | 100280 | 100% |  |  |  |  | MH-Wtg [4 h] | 1,800 | 1,800 | 003 |
| 109380 |  | Enq. floating & receipt of offers for Desuperheater | 16d | 2017-09-02 A | 2017-09-25 A | 100370 | 100% | 2017-09-04 | 2017-09-25 |  |  | MH-Wtg [1 h] | 450 | 450 | 003 |
| 109421.3 |  | Enq. floating & receipt of offers for Surface condenser pump | 17d | 2017-09-05 A | 2017-09-27 A | 100411.3 | 100% |  |  |  |  |  |  |  | 001 |
| 109220 |  | Enq. floating & receipt of offers for HVAC package | 34d | 2017-09-18 A | 2017-11-02 A | 100210 | 100% |  |  |  |  | MH-Wtg [4 h] | 1,800 | 1,800 | 003 |
| 109421.9.2 |  | Enq. floating & receipt of offers for Rotary vane pumps | 14d | 2017-09-19 A | 2017-10-06 A | 100411.9.2 | 100% |  |  |  |  |  |  |  | 003 |
| 109421.9.3 |  | Enq. floating & receipt of offers for Ammonia transfer pumps | 27d | 2017-09-22 A | 2017-10-30 A | 100411.9.3 | 100% |  |  |  |  |  |  |  | 003 |
| 109350 |  | Enq. floating & receipt of offers for Non-metallic tanks | 26d | 2017-09-29 A | 2017-11-03 A | 100340 | 100% |  |  |  |  | MH-Wtg [0.85 h] | 383 | 383 | 003 |
| 109360 |  | Enq. floating & receipt of offers for Safety shower/Eye wash | 26d | 2017-09-29 A | 2017-11-03 A | 100350 | 100% |  |  |  |  | MH-Wtg [0.85 h] | 383 | 383 | 001 |
| 109370 |  | Enq. floating & receipt of offers for Loading arms | 41d | 2017-09-29 A | 2017-11-24 A | 100360 | 100% |  |  |  |  | MH-Wtg [1.41 h] | 635 | 635 | 003 |
| 109421.5 |  | Enq. floating & receipt of offers for Lube oil pumps | 23d | 2017-10-03 A | 2017-11-02 A | 100411.5 | 100% |  |  |  |  |  |  |  | 001 |
| 109421.6 |  | Enq. floating & receipt of offers for Lube oil filters | 52d | 2017-10-05 A | 2017-12-15 A | 100411.6 | 100% |  |  |  |  |  |  |  | 001 |
| 109421.7 |  | Enq. floating & receipt of offers for Inlet air silencer (Deleted) | 20d | 2017-10-05 A | 2017-10-05 A | 100411.7 | 100% | 2017-10-02 | 2017-10-27 |  |  |  |  |  | 001 |
| 109420.5 |  | Enq. floating & receipt of offers for Mixer | 13d | 2017-10-06 A | 2017-10-24 A | 100410.5 | 100% |  |  |  |  |  |  |  | 001 |
| 109420 |  | Enq. floating & receipt of offers for EOT Cranes | 27d | 2017-10-07 A | 2017-11-14 A | 100410 | 100% | 2017-10-09 | 2017-11-14 |  |  | MH-Wtg [1.41 h] | 635 | 635 | 003 |
| 109421.9 |  | Enq. floating & receipt of offers for Chemical skids | 43d | 2017-10-10 A | 2017-12-07 A | 100411.9 | 100% |  |  |  |  |  |  |  | 001 |
| 109421.9.5 |  | Enq. floating & receipt of offers Condensate transfer pumps | 30d | 2017-10-10 A | 2017-11-20 A | 100411.9.5 | 100% |  |  |  |  |  |  |  | 003 |
| 109421.9.4 |  | Enq. floating & receipt of offers for Silica gel | 15d | 2017-11-15 A | 2017-12-05 A | 100411.9.4 | 100% |  |  |  | start on or after 2017-10-05 |  |  |  | 003 |
| 109421.9.6 |  | Enq. floating & receipt of offers Ammonia effluent transfer pumps (Mobile) | 21d | 2017-11-18 A | 2017-12-18 A | 100411.9.6 | 100% | 2017-11-20 | 2017-12-18 |  |  |  |  |  | 003 |
| 109252 |  | Enq. floating & receipt of offers for API pumps- Offsites & Utilities (Deleted) | 20d | 2018-01-01 | 2018-01-29 |  |  |  |  | 197d |  | MH-Wtg |  |  | 003 |
| 109340 |  | Enq. floating & receipt of offers for Plate type exchangers (Deleted) | 20d | 2018-01-01 | 2018-01-29 |  |  |  |  | 197d |  | MH-Wtg |  |  | 003 |
| 109390 |  | Enq. floating & receipt of offers for Flame arrestors (Deleted) | 20d | 2018-01-01 | 2018-01-29 |  |  |  |  | 197d |  | MH-Wtg |  |  | 003 |
| 109400 |  | Enq. floating & receipt of offers for Breather valves (Deleted) | 20d | 2018-01-01 | 2018-01-29 |  |  |  |  | 197d |  | MH-Wtg |  |  | 003 |
| 109410 |  | Enq. floating & receipt of offers for NG station (Deleted) | 20d | 2018-01-01 | 2018-01-29 |  |  |  |  | 197d |  | MH-Wtg |  |  | 003 |
| 109420.9 |  | Enq. floating & receipt of offers for Roof vent fan (Deleted) | 20d | 2018-01-01 | 2018-01-29 |  |  |  |  | 197d |  |  |  |  | 001 |

Notes:
- 109250: Explanation: Consdered deleted in progress report. However kept for / activity relations

| ID | WBS | Activity | Duration | Start | Finish | Predecessors | Complete | Planned start | Planned finish | Total float | Constraint | Resources | Cost | Actual cost | UNIT DESCRIPTION |
| --- | --- | --- | --- | --- | --- | --- | --- | --- | --- | --- | --- | --- | --- | --- | --- |
|  | 3 | **Bid Evaluation & Technical Recomendation** |  | 2017-03-14 | 2018-01-29 |  |  |  |  |  |  |  |  |  |  |
| 109860 |  | Bid evaluation & TR for Agitators | 1d | 2017-03-14 A | 2017-03-14 A | 109300 | 100% |  |  |  |  | MH-Wtg [3 h] | 1,350 | 1,350 | 002 |
| 109750 |  | Bid evaluation & TR for Boiler package (Deleted) | 20d | 2017-04-11 A | 2017-04-11 A |  | 100% | 2017-04-03 | 2017-04-28 |  |  | MH-Wtg |  |  | 003 |
| 109890 |  | Bid evaluation & TR for Chiller unit | 1d | 2017-04-11 A | 2017-04-11 A | 109330 | 100% |  |  |  |  | MH-Wtg [20.34 h] | 9,153 | 9,153 | 003 |
| 109720 |  | Bid evaluation & TR for Raw water treatment plant | 10d | 2017-04-19 A | 2017-05-02 A | 109160 | 100% |  |  |  |  | MH-Wtg [54.24 h] | 24,408 | 24,408 | 003 |
| 109730 |  | Bid evaluation & TR for Cooling tower package | 5d | 2017-05-04 A | 2017-05-10 A | 109170 | 100% |  |  |  |  | MH-Wtg [54.24 h] | 24,408 | 24,408 | 003 |
| 109740 |  | Bid evaluation & TR for DM plant | 12d | 2017-05-18 A | 2017-06-02 A | 109180 | 100% |  |  |  |  | MH-Wtg [20.34 h] | 9,153 | 9,153 | 003 |
| 109710 |  | Bid evaluation & TR for Fire fighting package | 1d | 2017-05-19 A | 2017-05-19 A | 109150 | 100% |  |  |  |  | MH-Wtg [67.8 h] | 30,510 | 30,510 | 003 |
| 109980.1 |  | Bid evaluation & TR for Ejectors | 57d | 2017-05-31 A | 2017-08-19 A | 109420.1 | 100% | 2017-05-31 | 2017-08-18 |  |  | MH-Wtg [16.95 h] | 7,628 | 7,628 | 001 |
| 109811 |  | Bid evaluation & TR for API pumps- CNA Plants | 1d | 2017-06-13 A | 2017-06-13 A | 109251 | 100% |  |  |  |  | MH-Wtg [12 h] | 5,400 | 5,400 | 002 |
| 109980.4 |  | Bid evaluation & TR for Filters | 74d | 2017-06-19 A | 2017-09-29 A | 109420.4 | 100% |  |  |  |  |  |  |  | 001 |
| 109820 |  | Bid evaluation & TR for Non-API pumps | 30d | 2017-07-03 A | 2017-08-11 A | 109260 | 100% |  |  |  |  | MH-Wtg [85 h] | 38,250 | 38,250 | 003 |
| 109870 |  | Bid evaluation & TR for Air compressor | 1d | 2017-07-05 A | 2017-07-05 A | 109310 | 100% |  |  |  |  | MH-Wtg [20.34 h] | 9,153 | 9,153 | 003 |
| 109880 |  | Bid evaluation & TR for Air drier | 1d | 2017-07-05 A | 2017-07-05 A | 109320 | 100% |  |  |  |  | MH-Wtg [13.56 h] | 6,102 | 6,102 | 003 |
| 109830 |  | Bid evaluation & TR for Cooling water pumps | 25d | 2017-07-20 A | 2017-08-24 A | 109270 | 100% |  |  |  |  | MH-Wtg [33.9 h] | 15,255 | 15,255 | 003 |
| 109810 |  | Bid evaluation & TR for Non-API pumps- WNA Plant | 15d | 2017-07-24 A | 2017-08-11 A | 109250 | 100% |  |  |  |  | MH-Wtg [25 h] | 11,250 | 11,250 | 001 |
| 109980.7 |  | Bid evaluation & TR for Deareator | 1d | 2017-07-25 A | 2017-07-25 A | 109420.7 | 100% |  |  |  |  |  |  |  | 001 |
| 109790 |  | Bid evaluation & TR for Side stream filter package | 25d | 2017-07-27 A | 2017-08-31 A | 109230 | 100% |  |  |  |  | MH-Wtg [10.17 h] | 4,577 | 4,577 | 003 |
| 109981 |  | Bid evaluation & TR for De-alkalizer | 25d | 2017-07-27 A | 2017-08-31 A | 109421 | 100% |  |  |  |  |  |  |  | 003 |
| 109980.3 |  | Bid evaluation & TR for Inlet air filter | 4d | 2017-07-28 A | 2017-08-02 A | 109420.3 | 100% |  |  |  |  |  |  |  | 001 |
| 109770 |  | Bid evaluation & TR for ETP package | 39d | 2017-08-04 A | 2017-09-28 A | 109210 | 100% |  |  |  |  | MH-Wtg [54.24 h] | 24,408 | 24,408 | 003 |
| 109800 |  | Bid evaluation & TR for Chlorination package | 31d | 2017-08-18 A | 2017-09-29 A | 109240 | 100% |  |  |  |  | MH-Wtg [3 h] | 1,350 | 1,350 | 003 |
| 109981.4 |  | Bid evaluation & TR for PFA lined pumps | 19d | 2017-08-23 A | 2017-09-18 A | 109421.4 | 100% |  |  |  |  |  |  |  | 003 |
| 109980.2 |  | Bid evaluation & TR for Ammonia Scrubber | 73d | 2017-08-28 A | 2017-12-06 A | 109420.2 | 100% |  |  |  |  | MH-Wtg [16.95 h] | 7,628 | 7,628 | 003 |
| 109840 |  | Bid evaluation & TR for Metering pumps | 9d | 2017-09-15 A | 2017-09-27 A | 109280 | 100% |  |  |  |  | MH-Wtg [13.56 h] | 6,102 | 6,102 | 003 |
| 109981.8 |  | Bid evaluation & TR for Lift (CNA) | 44d | 2017-09-19 A | 2017-11-17 A | 109421.8 | 100% |  |  |  | finish on or after 2018-01-01 |  |  |  | 002 |
| 109980.8 |  | Bid evaluation & TR for Vacuum jet | 30d | 2017-09-20 A | 2017-10-31 A | 109420.8 | 100% |  |  |  |  |  |  |  | 001 |
| 109981.1 |  | Bid evaluation & TR for Ammonia compressor | 7d | 2017-09-20 A | 2017-09-28 A | 109421.1 | 100% |  |  |  |  |  |  |  | 003 |
| 109940 |  | Bid evaluation & TR for Desuperheater | 27d | 2017-09-25 A | 2017-10-31 A | 109380 | 100% |  |  |  |  | MH-Wtg [3 h] | 1,350 | 1,350 | 003 |
| 109850 |  | Bid evaluation & TR for Extended shaft pumps | 26d | 2017-09-26 A | 2017-10-31 A | 109290 | 100% |  |  |  |  | MH-Wtg [10 h] | 4,500 | 4,500 | 003 |
| 109981.9.3 |  | Bid evaluation & TR for Ammonia transfer pumps | 25d | 2017-09-26 A | 2017-10-30 A | 109421.9.3 | 100% |  |  |  |  |  |  |  | 003 |
| 109980.6 |  | Bid evaluation & TR for Mist separator | 2d | 2017-10-06 A | 2017-10-09 A | 109420.6 | 100% |  |  |  |  |  |  |  | 001 |
| 109981.9.2 |  | Bid evaluation & TR for Rotary vane pumps | 9d | 2017-10-06 A | 2017-10-18 A | 109421.9.2 | 100% |  |  |  |  |  |  |  | 003 |
| 109981.3 |  | Bid evaluation & TR for Surface condenser pump | 1d | 2017-10-13 A | 2017-10-13 A | 109421.3 | 100% |  |  |  |  |  |  |  | 001 |
| 109980.5 |  | Bid evaluation & TR for Mixer | 28d | 2017-10-25 A | 2017-12-01 A | 109420.5 | 100% |  |  |  |  |  |  |  | 001 |
| 109981.9.1 |  | Bid evaluation & TR for Platinum filter (Internals) | 1d | 2017-10-27 A | 2017-10-27 A | 109421.9.1 | 100% |  |  |  |  |  |  |  | 001 |
| 109981.5 |  | Bid evaluation & TR for Lube oil pumps | 2d | 2017-11-02 A | 2017-11-03 A | 109421.5 | 100% |  |  |  |  |  |  |  | 001 |
| 109780 |  | Bid evaluation & TR for HVAC package | 14d | 2017-11-03 A | 2017-11-22 A | 109220 | 100% |  |  |  |  | MH-Wtg [10 h] | 4,500 | 4,500 | 003 |
| 109910 |  | Bid evaluation & TR for Non-metallic tanks | 1d | 2017-11-03 A | 2017-11-04 A | 109350 | 100% | 2017-11-03 | 2017-11-03 |  | finish on or after 2018-01-31 | MH-Wtg [1 h] | 450 | 450 | 003 |
| 109920 |  | Bid evaluation & TR for Safety shower/Eye wash | 1d | 2017-11-03 A | 2017-11-04 A | 109360 | 100% | 2017-11-03 | 2017-11-03 |  | finish on or after 2017-12-10 | MH-Wtg [1 h] | 450 | 450 | 001 |
| 109980 |  | Bid evaluation & TR for EOT Cranes | 37d | 2017-11-14 A | 2018-01-03 A | 109420 | 100% |  |  |  |  | MH-Wtg [3.39 h] | 1,526 | 1,526 | 003 |
| 109981.9.5 |  | Bid evaluation & TR for Condensate transfer pumps | 1d | 2017-11-20 A | 2017-11-20 A | 109421.9.5 | 100% |  |  |  |  |  |  |  | 003 |
| 109981.9.4 |  | Bid evaluation & TR for Silica gel | 18d | 2017-12-06 A | 2017-12-29 A | 109421.9.4 | 100% |  |  |  | start on or after 2017-01-31 |  |  |  | 003 |
| 109981.9 |  | Bid evaluation & TR for Chemical skids | 15d | 2017-12-07 A | 2017-12-27 A | 109421.9 | 100% |  |  |  |  |  |  |  | 001 |
| 109981.6 |  | Bid evaluation & TR for Lube oil filters | 1d | 2017-12-15 A | 2017-12-15 A | 109421.6 | 100% |  |  |  |  |  |  |  | 001 |
| 109981.9.6 |  | Bid evaluation & TR for Ammonia effluent transfer pumps (Mobile) | 9d | 2017-12-19 A | 2017-12-29 A | 109421.9.6 | 100% |  |  |  |  |  |  |  | 001 |
| 109930 |  | Bid evaluation & TR for Loading arms | 1d | 2017-12-27 A | 2017-12-27 A | 109370 | 100% |  |  |  |  | MH-Wtg [2 h] | 900 | 900 | 003 |
| 109812 |  | Bid evaluation & TR for API pumps- Offsites & Utilities (Deleted) | 20d | 2018-01-01 | 2018-01-29 |  |  |  |  | 197d |  | MH-Wtg |  |  | 003 |
| 109900 |  | Bid evaluation & TR for Plate type exchangers (Deleted) | 20d | 2018-01-01 | 2018-01-29 |  |  |  |  | 197d |  | MH-Wtg |  |  | 003 |
| 109950 |  | Bid evaluation & TR for Flame arrestors (Deleted) | 15d | 2018-01-01 | 2018-01-19 |  |  |  |  | 202d |  | MH-Wtg |  |  | 003 |
| 109960 |  | Bid evaluation & TR for Breather valves (Deleted) | 15d | 2018-01-01 | 2018-01-19 |  |  |  |  | 202d |  | MH-Wtg |  |  | 003 |
| 109970 |  | Bid evaluation & TR for NG station (Deleted) | 15d | 2018-01-01 | 2018-01-19 |  |  |  |  | 202d |  | MH-Wtg |  |  | 003 |
| 109980.9 |  | Bid evaluation & TR for Roof vent fan (Deleted) | 15d | 2018-01-01 | 2018-01-19 |  |  |  |  | 202d |  |  |  |  | 001 |
| 109981.2 |  | Bid evaluation & TR for Packing/Internals (Deleted) | 0d | 2018-01-01 | 2018-01-01 | 109421.2 |  |  |  | 217d |  |  |  |  | 002 |
| 109981.7 |  | Bid evaluation & TR for Inlet air silencer (Deleted) | 15d | 2018-01-01 | 2018-01-19 |  |  |  |  | 202d |  |  |  |  | 001 |

| ID | WBS | Activity | Duration | Start | Finish | Predecessors | Complete | Planned start | Planned finish | Total float | Resources | Cost | Actual cost | UNIT DESCRIPTION |
| --- | --- | --- | --- | --- | --- | --- | --- | --- | --- | --- | --- | --- | --- | --- |
|  | 4 | **Technical Order Specifications** |  | 2017-05-10 | 2018-02-12 |  |  |  |  |  |  |  |  |  |
| 110140 |  | TOS for Agitators | 1d | 2017-05-10 A | 2017-05-10 A | 112980 | 100% |  |  |  | MH-Wtg [1 h] | 450 | 450 | 002 |
| 110170 |  | TOS for Chiller unit | 1d | 2017-07-14 A | 2017-07-14 A | 113010 | 100% |  |  |  | MH-Wtg [5.08 h] | 2,286 | 2,286 | 003 |
| 110000 |  | TOS for Raw water treatment plant | 1d | 2017-07-19 A | 2017-07-19 A | 112840 | 100% |  |  |  | MH-Wtg [13.56 h] | 6,102 | 6,102 | 003 |
| 110020 |  | TOS for DM plant | 1d | 2017-07-19 A | 2017-07-19 A | 112860 | 100% |  |  |  | MH-Wtg [5.08 h] | 2,286 | 2,286 | 003 |
| 110010 |  | TOS for Cooling tower package | 1d | 2017-07-27 A | 2017-07-27 A | 112850 | 100% |  |  |  | MH-Wtg [13.56 h] | 6,102 | 6,102 | 003 |
| 109990 |  | TOS for Fire fighting package | 10d | 2017-09-02 A | 2017-09-02 A | 112830 | 100% | 2017-09-04 | 2017-09-15 |  | MH-Wtg [16.95 h] | 7,628 | 7,628 | 003 |
| 110150 |  | TOS for Air compressor | 1d | 2017-09-08 A | 2017-09-08 A | 112990 | 100% |  |  |  | MH-Wtg [5.08 h] | 2,286 | 2,286 | 003 |
| 110160 |  | TOS for Air drier | 1d | 2017-09-08 A | 2017-09-08 A | 113000 | 100% |  |  |  | MH-Wtg [3.39 h] | 1,526 | 1,526 | 003 |
| 110090 |  | TOS for Non-API pumps- WNA Plant | 20d | 2017-09-21 A | 2017-10-18 A | 112930 | 100% |  |  |  | MH-Wtg [5 h] | 2,250 | 2,250 | 001 |
| 110110 |  | TOS for Cooling water pumps | 16d | 2017-09-21 A | 2017-10-12 A | 112950 | 100% |  |  |  | MH-Wtg [8.47 h] | 3,812 | 3,812 | 003 |
| 110260.7 |  | TOS for Deareator | 1d | 2017-09-29 A | 2017-09-29 A | 113100.7 | 100% |  |  |  |  |  |  | 001 |
| 110260.3 |  | TOS for Inlet air filter | 1d | 2017-10-06 A | 2017-10-06 A | 113100.3 | 100% |  |  |  |  |  |  | 001 |
| 110100 |  | TOS for Non-API pumps | 1d | 2017-10-10 A | 2017-10-10 A | 112940 | 100% |  |  |  | MH-Wtg [18 h] | 8,100 | 8,100 | 003 |
| 110261.4 |  | TOS for PFA lined pumps | 5d | 2017-10-12 A | 2017-10-18 A | 113101.4 | 100% |  |  |  |  |  |  | 003 |
| 110091 |  | TOS for API pumps- CNA Plants | 1d | 2017-10-13 A | 2017-10-13 A | 112931 | 100% |  |  |  | MH-Wtg [3.39 h] | 1,526 | 1,526 | 002 |
| 110260.6 |  | TOS for Mist separator | 3d | 2017-10-27 A | 2017-10-31 A | 113100.6 | 100% |  |  |  |  |  |  | 001 |
| 110070 |  | TOS for Side stream filter package | 9d | 2017-10-31 A | 2017-11-10 A | 112910 | 100% |  |  |  | MH-Wtg [2.54 h] | 1,143 | 1,143 | 003 |
| 110261.3 |  | TOS for Surface condenser pump | 25d | 2017-11-14 A | 2017-12-18 A | 113101.3 | 100% |  |  |  |  |  |  | 001 |
| 110261.1 |  | TOS for Ammonia compressor | 18d | 2017-11-25 A | 2017-12-20 A | 113101.1 | 100% | 2017-11-27 | 2017-12-20 |  |  |  |  | 003 |
| 110080 |  | TOS for Chlorination package | 7d | 2017-12-01 A | 2017-12-11 A | 112910.1 | 100% |  |  |  | MH-Wtg [1 h] | 450 | 450 | 003 |
| 110261.5 |  | TOS for Lube oil pumps | 5d | 2017-12-15 A | 2017-12-21 A | 113101.5 | 100% |  |  |  |  |  |  | 001 |
| 110261.9.1 |  | TOS for Platinum filter (Internals) | 3d | 2017-12-15 A | 2017-12-19 A | 113101.9.1 | 100% |  |  |  |  |  |  | 001 |
| 110260.1 |  | TOS for Ejectors | 1d | 2017-12-18 A | 2017-12-18 A | 113100.1 | 100% |  |  |  | MH-Wtg [4.24 h] | 1,908 | 1,908 | 001 |
| 110050 |  | TOS for ETP package | 4d | 2017-12-20 A | 2017-12-25 A | 112890 | 100% |  |  |  | MH-Wtg [13.56 h] | 6,102 | 6,102 | 003 |
| 110200 |  | TOS for Safety shower/Eye wash | 3d | 2017-12-21 A | 2017-12-25 A | 113040 | 100% |  |  |  | MH-Wtg [1 h] | 450 | 450 | 001 |
| 110260.4 |  | TOS for Filters | 2d | 2018-01-01 A | 2018-01-02 A | 113100.4 | 100% |  |  |  |  |  |  | 001 |
| 110030 |  | TOS for Boiler package (Deleted) | 10d | 2018-01-01 | 2018-01-12 | 112870 |  |  |  | 207d | MH-Wtg |  |  | 003 |
| 110092 |  | TOS for API pumps- Offsites & Utilities (Deleted) | 9d | 2018-01-01 | 2018-01-11 |  |  |  |  | 208d | MH-Wtg |  |  | 003 |
| 110180 |  | TOS for Plate type exchangers (Deleted) | 9d | 2018-01-01 | 2018-01-11 |  |  |  |  | 208d | MH-Wtg |  |  | 003 |
| 110220 |  | TOS for Desuperheater | 10d | 2018-01-01 | 2018-01-12 | 113060 |  |  |  | 207d | MH-Wtg [1 h] | 450 |  | 003 |
| 110230 |  | TOS for Flame arrestors (Deleted) | 9d | 2018-01-01 | 2018-01-11 |  |  |  |  | 208d | MH-Wtg |  |  | 003 |
| 110240 |  | TOS for Breather valves (Deleted) | 10d | 2018-01-01 | 2018-01-12 |  |  |  |  | 207d | MH-Wtg |  |  | 003 |
| 110250 |  | TOS for NG station (Deleted) | 9d | 2018-01-01 | 2018-01-11 |  |  |  |  | 208d | MH-Wtg |  |  | 003 |
| 110260.8 |  | TOS for Vacuum jet | 10d | 2018-01-01 | 2018-01-12 | 113100.8 |  |  |  | 207d |  |  |  | 001 |
| 110260.9 |  | TOS for Roof vent fan (Deleted) | 10d | 2018-01-01 | 2018-01-12 |  |  |  |  | 207d |  |  |  | 001 |
| 110261 |  | TOS for De-alkalizer (Deleted) | 10d | 2018-01-01 | 2018-01-12 |  |  |  |  | 207d |  |  |  | 003 |
| 110261.2 |  | TOS for Packing/Internals (Deleted) | 10d | 2018-01-01 | 2018-01-12 | 113101.2 |  |  |  | 207d |  |  |  | 002 |
| 110261.7 |  | TOS for Inlet air silencer (Deleted) | 10d | 2018-01-01 | 2018-01-12 |  |  |  |  | 207d |  |  |  | 001 |
| 110261.9.2 |  | TOS for Rotary vane pumps | 10d | 2018-01-01 | 2018-01-12 | 113101.9.2 |  |  |  | 207d |  |  |  | 003 |
| 110261.9.3 |  | TOS for Ammonia transfer pumps | 10d | 2018-01-01 | 2018-01-12 | 113101.9.3 |  |  |  | 207d |  |  |  | 003 |
| 110130 |  | TOS for Extended shaft pumps | 10d | 2018-01-11 | 2018-01-24 | 112970 |  |  |  | 199d | MH-Wtg [3.39 h] | 1,526 |  | 003 |
| 110060 |  | TOS for HVAC package | 10d | 2018-01-15 | 2018-01-29 | 112900 |  |  |  | 197d | MH-Wtg [3 h] | 1,350 |  | 003 |
| 110120 |  | TOS for Metering pumps | 10d | 2018-01-15 | 2018-01-29 | 112960 |  |  |  | 197d | MH-Wtg [3.39 h] | 1,526 |  | 003 |
| 110190 |  | TOS for Non-metallic tanks | 10d | 2018-01-15 | 2018-01-29 | 113030 |  |  |  | 197d | MH-Wtg [1 h] | 450 |  | 003 |
| 110260.11 |  | TOS for Ammonia scrubber | 10d | 2018-01-15 | 2018-01-29 | 113100.2 |  |  |  | 197d | MH-Wtg [4.24 h] | 1,908 |  | 003 |
| 110210 |  | TOS for Loading arms | 10d | 2018-01-22 | 2018-02-05 | 113050 |  |  |  | 192d | MH-Wtg [0.85 h] | 383 |  | 003 |
| 110260 |  | TOS for EOT Cranes | 10d | 2018-01-22 | 2018-02-05 | 113100 |  |  |  | 192d | MH-Wtg [0.85 h] | 383 |  | 003 |
| 110260.5 |  | TOS for Mixer | 10d | 2018-01-30 | 2018-02-12 | 113100.5 |  |  |  | 187d |  |  |  | 001 |
| 110261.6 |  | TOS for Lube oil filters | 10d | 2018-01-30 | 2018-02-12 | 113101.6 |  |  |  | 187d |  |  |  | 001 |
| 110261.8 |  | TOS for Lift (CNA) | 10d | 2018-01-30 | 2018-02-12 | 113101.8 |  |  |  | 187d |  |  |  | 002 |
| 110261.9 |  | TOS for Chemical skids | 10d | 2018-01-30 | 2018-02-12 | 113101.9 |  |  |  | 187d |  |  |  | 001 |
| 110261.9.4 |  | TOS for Silica gel | 10d | 2018-01-30 | 2018-02-12 | 113101.9.4 |  |  |  | 187d |  |  |  | 003 |
| 110261.9.5 |  | TOS for Condensate transfer pumps | 10d | 2018-01-30 | 2018-02-12 | 113101.9.5 |  |  |  | 187d |  |  |  | 003 |
| 110261.9.6 |  | TOS for Ammonia effluent transfer pumps (Mobile) | 10d | 2018-01-30 | 2018-02-12 | 113101.9.6 |  |  |  | 187d |  |  |  | 003 |

| ID | WBS | Activity | Duration | Start | Finish | Predecessors | Complete | Planned start | Planned finish | Total float | Constraint | Resources | Cost | Actual cost | UNIT DESCRIPTION |
| --- | --- | --- | --- | --- | --- | --- | --- | --- | --- | --- | --- | --- | --- | --- | --- |
|  | 2 | **Civil & Structural** |  | 2016-12-12 | 2018-01-01 |  |  |  |  |  |  |  |  |  |  |
|  | 1 | **Floating of Enquiry & Receipt of Offers** |  | 2016-12-12 | 2017-08-18 |  |  |  |  |  |  |  |  |  |  |
| 110271 |  | Tender floating & receipt of offers for Boundary wall | 37d | 2016-12-12 A | 2017-01-31 A | 103251 | 100% |  |  |  | start on 2016-12-12 | MH-Wtg [10.78 h] | 4,851 | 4,851 | 003 |
| 110272 |  | Tender floating & receipt of offers for Pre-fabricated structure | 33d | 2017-01-03 A | 2017-02-16 A | 103252 | 100% |  |  |  | start on 2017-01-03 | MH-Wtg [5.39 h] | 2,426 | 2,426 | 003 |
| 110270 |  | Tender floating & receipt of offers for Piling work | 20d | 2017-02-13 A | 2017-03-09 A | 103250 | 100% |  |  |  |  | MH-Wtg [26.96 h] | 12,132 | 12,132 | 003 |
| 110272.1 |  | Tender floating & receipt of offers for Civil & structural work (Part-I) | 16d | 2017-03-23 A | 2017-04-13 A | 103252.1 | 100% |  |  |  |  | MH-Wtg [16.17 h] | 7,277 | 7,277 | 003 |
| 110281 |  | Tender floating & receipt of offers for Roads & drains (Covered in Part I & II) | 106d | 2017-03-23 A | 2017-08-18 A | 103261 | 100% |  |  |  |  | MH-Wtg [16.17 h] | 7,277 | 7,277 | 003 |
| 110280 |  | Tender floating & receipt of offers for Civil & structural work (Part-II) | 12d | 2017-08-02 A | 2017-08-18 A | 103260 | 100% |  |  |  |  | MH-Wtg [21.57 h] | 9,707 | 9,707 | 003 |
| 110290 |  | Tender floating & receipt of offers for Architectural work (Covered in Part I & II) | 12d | 2017-08-02 A | 2017-08-18 A | 103270 | 100% |  |  |  |  | MH-Wtg [5.39 h] | 2,426 | 2,426 | 003 |
| 110300 |  | Tender floating & receipt of offers for Acid resistant tiling (Covered in Part-II) | 12d | 2017-08-02 A | 2017-08-18 A | 103280 | 100% |  |  |  |  | MH-Wtg [5.39 h] | 2,426 | 2,426 | 003 |
| 110310 |  | Tender floating & receipt of offers for Industrial painting (Covered in Part I & II) | 12d | 2017-08-02 A | 2017-08-18 A | 103290 | 100% |  |  |  |  | MH-Wtg [5.39 h] | 2,426 | 2,426 | 003 |
|  | 3 | **Bid Evaluation & Technical Recomendation** |  | 2017-01-31 | 2017-12-18 |  |  |  |  |  |  |  |  |  |  |
| 110371 |  | Bid evaluation & TR for Boundary wall | 1d | 2017-01-31 A | 2017-01-31 A | 110271 | 100% |  |  |  | start on 2017-01-31 | MH-Wtg [25.88 h] | 11,646 | 11,646 | 003 |
| 110372 |  | Bid evaluation & TR for Pre-fabricated structure | 7d | 2017-02-16 A | 2017-02-25 A | 110272 | 100% | 2017-02-16 | 2017-02-24 |  |  | MH-Wtg [12.94 h] | 5,823 | 5,823 | 003 |
| 110370 |  | Bid evaluation & TR for Piling work | 1d | 2017-03-15 A | 2017-03-15 A | 110270 | 100% |  |  |  |  | MH-Wtg [64.7 h] | 29,115 | 29,115 | 003 |
| 110372.1 |  | Bid evaluation & TR for Civil & structural work (Part-I) | 1d | 2017-04-19 A | 2017-04-19 A | 110272.1 | 100% |  |  |  |  | MH-Wtg [38.82 h] | 17,469 | 17,469 | 003 |
| 110381 |  | Bid evaluation & TR for Roads & drains (Covered in Part I & II) | 91d | 2017-04-19 A | 2017-08-24 A | 110281 | 100% |  |  |  |  | MH-Wtg [38.82 h] | 17,469 | 17,469 | 003 |
| 110380 |  | Bid evaluation & TR for Civil & structural work (part-II) | 5d | 2017-08-18 A | 2017-08-24 A | 110280 | 100% |  |  |  |  | MH-Wtg [51.76 h] | 23,292 | 23,292 | 003 |
| 110390 |  | Bid evaluation & TR for Architectural work (Covered in Part I & II) | 5d | 2017-08-18 A | 2017-08-24 A | 110290 | 100% |  |  |  |  | MH-Wtg [12.94 h] | 5,823 | 5,823 | 003 |
| 110400 |  | Bid evaluation & TR for Acid resistant tiling (Covered in Part-II) | 5d | 2017-08-18 A | 2017-08-24 A | 110300 | 100% |  |  |  |  | MH-Wtg [12.94 h] | 5,823 | 5,823 | 003 |
| 110410 |  | Bid evaluation & TR for Industrial painting (Covered in Part I & II) | 5d | 2017-08-18 A | 2017-08-24 A | 110310 | 100% |  |  |  |  | MH-Wtg [12.94 h] | 5,823 | 5,823 | 003 |
| 112920 |  | TR for Boiler precast chimney | 9d | 2017-12-05 A | 2017-12-18 A |  | 100% | 2017-12-05 | 2017-12-15 |  |  |  |  |  | 003 |
|  | 4 | **Technical Order Specifications** |  | 2017-03-31 | 2018-01-01 |  |  |  |  |  |  |  |  |  |  |
| 110422 |  | TOS for Pre-fabricated structure | 4d | 2017-03-31 A | 2017-04-05 A | 113112 | 100% |  |  |  |  | MH-Wtg [3.23 h] | 1,454 | 1,454 | 003 |
| 110421 |  | TOS for Boundary wall | 1d | 2017-04-05 A | 2017-04-05 A | 113111 | 100% |  |  |  |  | MH-Wtg [6.47 h] | 2,912 | 2,912 | 003 |
| 110420 |  | TOS for Piling work | 1d | 2017-04-21 A | 2017-04-21 A | 113110 | 100% |  |  |  |  | MH-Wtg [16.17 h] | 7,277 | 7,277 | 003 |
| 110422.1 |  | TOS for Civil & structural work (Part-I) | 122d | 2017-05-12 A | 2017-10-31 A | 113112.1 | 100% |  |  |  |  | MH-Wtg [9.7 h] | 4,365 | 4,365 | 003 |
| 110430 |  | TOS for Civil & structural work (Part-II) | 6d | 2017-10-24 A | 2017-10-31 A | 113120 | 100% |  |  |  |  | MH-Wtg [12.94 h] | 5,823 | 5,823 | 003 |
| 110431 |  | TOS for Roads & drains (Covered in Part I & II) | 6d | 2017-10-24 A | 2017-10-31 A | 113121 | 100% |  |  |  |  | MH-Wtg [9.7 h] | 4,365 | 4,365 | 003 |
| 110440 |  | TOS for Architectural work (Covered in Part I & II) | 6d | 2017-10-24 A | 2017-10-31 A | 113130 | 100% |  |  |  |  | MH-Wtg [3.23 h] | 1,454 | 1,454 | 003 |
| 110450 |  | TOS for Acid resistant tiling (Covered in Part-II) | 6d | 2017-10-24 A | 2017-10-31 A | 113140 | 100% |  |  |  |  | MH-Wtg [3.23 h] | 1,454 | 1,454 | 003 |
| 110460 |  | TOS for Industrial painting (Covered in Part I & II) | 6d | 2017-10-24 A | 2017-10-31 A | 113150 | 100% |  |  |  |  | MH-Wtg [3.23 h] | 1,454 | 1,454 | 003 |
| 113620 |  | TOS for Boiler precast chimney | 1d | 2018-01-01 | 2018-01-01 |  |  |  |  | 216d |  |  |  |  | 003 |

| ID | WBS | Activity | Duration | Start | Finish | Predecessors | Complete | Remaining | Planned start | Planned finish | Total float | Free float | Constraint | Resources | Cost | Actual cost | UNIT DESCRIPTION |
| --- | --- | --- | --- | --- | --- | --- | --- | --- | --- | --- | --- | --- | --- | --- | --- | --- | --- |
|  | 3 | **Mechanical** |  | 2017-01-27 | 2018-04-09 |  |  |  |  |  |  |  |  |  |  |  |  |
|  | 1 | **Floating of Enquiry & Receipt of Offers** |  | 2017-01-27 | 2018-02-05 |  |  |  |  |  |  |  |  |  |  |  |  |
| 110480 |  | Enq. floating & receipt of offers for WNA Plant equipments | 219d | 2017-01-27 A | 2017-11-29 A | 103360 SS | 100% |  |  |  |  |  |  | MH-Wtg [67.93 h] | 30,569 | 30,569 | 001 |
| 110490 |  | Enq. floating & receipt of offers for CNA Plant equipments | 30d | 2017-01-30 A | 2017-03-09 A | 103370 | 100% |  |  |  |  |  |  | MH-Wtg [45.29 h] | 20,381 | 20,381 | 002 |
| 110470 |  | Enq. floating & receipt of offers for OSBL equipments | 167d | 2017-02-15 A | 2017-10-05 A | 103350 SS | 100% |  |  |  |  |  |  | MH-Wtg [45.29 h] | 20,381 | 20,381 | 003 |
| 110491 |  | Enq. floating & receipt of offers for Absorber foundation bolts & templates | 8d | 2017-07-15 A | 2017-07-26 A | 103371 | 100% |  | 2017-07-17 | 2017-07-26 |  |  |  |  |  |  | 001 |
| 110500 |  | Tender floating & receipt of offers for Mechanical erection & piping | 31d | 2017-10-06 A | 2017-11-17 A | 103380 | 100% |  |  |  |  |  |  | MH-Wtg [45.29 h] | 20,381 | 20,381 | 003 |
| 110490.1 |  | Enq. floating for additional scope (MOM-078) equipments | 15d | 2018-01-11 | 2018-02-01 | 103370.1 |  |  |  |  | 10d | 0d |  |  |  |  | 003 |
| 110510 |  | Tender floating & receipt of offers for Insulation | 15d | 2018-01-15 | 2018-02-05 | 103390 |  |  |  |  | 67d | 0d |  | MH-Wtg [22.64 h] | 10,188 |  | 003 |
|  | 3 | **Bid Evaluation & Technical Recomendation** |  | 2017-03-15 | 2018-02-26 |  |  |  |  |  |  |  |  |  |  |  |  |
| 110590 |  | Bid evaluation & TR for CNA Plant equipments | 68d | 2017-03-15 A | 2017-06-16 A | 110490 SS+20d, 110490 FF+10d | 100% |  |  |  |  |  |  | MH-Wtg [108.69 h] | 48,911 | 48,911 | 002 |
| 110580 |  | Bid evaluation & TR for WNA Plant equipments | 173d | 2017-03-31 A | 2017-11-29 A | 110480 FF+20d | 100% |  |  |  |  |  |  | MH-Wtg [163.04 h] | 73,368 | 73,368 | 001 |
| 110570 |  | Bid evaluation & TR for OSBL equipments | 131d | 2017-04-28 A | 2017-10-30 A | 110470 FF+20d | 100% |  |  |  |  |  | start on or after 2017-04-21 | MH-Wtg [108.69 h] | 48,911 | 48,911 | 003 |
| 110591 |  | Bid evaluation & TR for Absorber foundation bolts & template | 14d | 2017-07-26 A | 2017-08-14 A | 110491 | 100% |  |  |  |  |  |  |  |  |  | 001 |
| 110600 |  | Bid evaluation & TR for Mechanical erection & piping | 10d | 2017-11-18 A | 2017-12-01 A | 110500 | 100% |  | 2017-11-20 | 2017-12-01 |  |  |  | MH-Wtg [108.69 h] | 48,911 | 48,911 | 003 |
| 110590.1 |  | Bid evaluation & TR for additional scope (MOM-078) equipments | 15d | 2018-02-02 | 2018-02-22 | 110490.1 |  |  |  |  | 10d | 0d |  |  |  |  | 003 |
| 110610 |  | Bid evaluation & TR for Insulation | 15d | 2018-02-06 | 2018-02-26 | 110510 |  |  |  |  | 67d | 0d |  | MH-Wtg [54.35 h] | 24,458 |  | 003 |
|  | 4 | **Technical Order Specifications** |  | 2017-05-05 | 2018-04-09 |  |  |  |  |  |  |  |  |  |  |  |  |
| 110640 |  | TOS for CNA Plant equipments | 31d | 2017-05-05 A | 2017-06-16 A | 113180 SS+10d | 100% |  |  |  |  |  |  | MH-Wtg [27.17 h] | 12,227 | 12,227 | 002 |
| 110620 |  | TOS for OSBL equipments | 170d | 2017-06-16 A | 2018-02-12 | 113160 FF+10d | 97% | 5d |  |  | 187d |  |  | MH-Wtg [27.17 h] | 12,227 | 11,867 | 003 |
| 110630 |  | TOS for WNA Plant equipments | 160d | 2017-06-30 A | 2018-02-12 | 113170 FF+10d | 94% | 10d |  |  | 187d |  |  | MH-Wtg [40.76 h] | 18,342 | 17,196 | 001 |
| 110641 |  | TOS for Abosrber foundation bolts & templates | 1d | 2017-09-12 A | 2017-09-12 A | 113181 | 100% |  |  |  |  |  |  |  |  |  | 001 |
| 110650 |  | TOS for Mechanical erection & piping | 10d | 2018-01-01 | 2018-01-12 | 113190 |  |  |  |  | 207d |  |  | MH-Wtg [27.17 h] | 12,227 |  | 003 |
| 110640.1 |  | TOS for additional scope (MOM-078) equipments | 10d | 2018-03-23 | 2018-04-05 | 113180.1 |  |  |  |  | 149d |  |  |  |  |  | 003 |
| 110660 |  | TOS for Insulation | 10d | 2018-03-27 | 2018-04-09 | 113200 |  |  |  |  | 147d |  |  | MH-Wtg [13.59 h] | 6,116 |  | 003 |

Notes:
- 110570: Explanation: Ellimetal offer to be awaited till 14.Apr.17

| ID | WBS | Activity | Duration | Start | Finish | Predecessors | Complete | Remaining | Total float | Free float | Constraint | Resources | Cost | Actual cost | UNIT DESCRIPTION |
| --- | --- | --- | --- | --- | --- | --- | --- | --- | --- | --- | --- | --- | --- | --- | --- |
|  | 4 | **Piping** |  | 2017-09-29 | 2018-04-17 |  |  |  |  |  |  |  |  |  |  |
|  | 1 | **Floating of Enquiry & Receipt of Offers** |  | 2017-09-29 | 2018-02-20 |  |  |  |  |  |  |  |  |  |  |
| 110700 |  | Enq. floating & receipt of offers for Valves | 29d | 2017-09-29 A | 2017-11-08 A | 106610 | 100% |  |  |  |  | MH-Wtg [33.63 h] | 15,134 | 15,134 | 003 |
| 110670 |  | Enq. floating & receipt of offers for Pipes | 82d | 2017-10-05 A | 2018-01-29 | 106580 | 76% | 20d | 197d |  |  | MH-Wtg [25.22 h] | 11,349 | 8,581 | 003 |
| 110680 |  | Enq. floating & receipt of offers for Fittings | 79d | 2017-10-10 A | 2018-01-29 | 106590 | 75% | 20d | 197d |  |  | MH-Wtg [25.22 h] | 11,349 | 8,476 | 003 |
| 110690 |  | Enq. floating & receipt of offers for Flanges | 78d | 2017-10-11 A | 2018-01-29 | 106600 | 74% | 20d | 197d |  |  | MH-Wtg [25.22 h] | 11,349 | 8,439 | 003 |
| 110770.1 |  | Enq. floating & receipt of offers for Expansion bellows | 26d | 2017-12-22 A | 2018-01-29 | 106680.1 | 23% | 20d | 24d | 0d |  | MH-Wtg [6.73 h] | 3,029 | 699 | 003 |
| 110720 |  | Enq. floating & receipt of offers for Steam traps | 15d | 2018-01-01 | 2018-01-19 | 106630 |  |  | 29d | 0d |  | MH-Wtg [16.82 h] | 7,569 |  | 003 |
| 110730 |  | Enq. floating & receipt of offers for Sight glass | 20d | 2018-01-08 | 2018-02-05 | 106640 |  |  | 9d | 0d |  | MH-Wtg [4.2 h] | 1,890 |  | 003 |
| 110750 |  | Enq. floating & receipt of offers for Stud bolts | 10d | 2018-01-10 | 2018-01-24 | 106660 |  |  | 40d | 0d |  | MH-Wtg [8.41 h] | 3,785 |  | 003 |
| 110710 |  | Enq. floating & receipt of offers for Strainers | 15d | 2018-01-11 | 2018-02-01 | 106620 |  |  | 1d | 0d |  | MH-Wtg [8.41 h] | 3,785 |  | 003 |
| 110740 |  | Enq. floating & receipt of offers for Gaskets | 10d | 2018-01-17 | 2018-02-01 | 106650 |  |  | 60d | 0d |  | MH-Wtg [8.41 h] | 3,785 |  | 003 |
| 110770 |  | Enq. floating & receipt of offers for Special supports | 20d | 2018-01-22 | 2018-02-20 | 106680 |  |  | 9d | 0d |  | MH-Wtg [5.04 h] | 2,268 |  | 003 |
| 110760 |  | Enq. floating & receipt of offers for Primary supports | 15d | 2018-01-30 | 2018-02-19 | 106670 |  |  | 22d | 0d |  | MH-Wtg [2.52 h] | 1,134 |  | 003 |
|  | 3 | **Bid Evaluation & Technical Recomendation** |  | 2017-11-24 | 2018-03-13 |  |  |  |  |  |  |  |  |  |  |
| 110890 |  | Bid evaluation & TR for Pipes | 41d | 2017-11-24 A | 2018-01-19 | 110670 | 63% | 15d | 29d | 0d |  | MH-Wtg [60.53 h] | 27,239 | 17,273 | 003 |
| 110920 |  | Bid evaluation & TR for Valves | 33d | 2017-12-06 A | 2018-01-19 | 110700 | 55% | 15d | 202d |  |  | MH-Wtg [80.71 h] | 36,320 | 19,811 | 003 |
| 110910 |  | Bid evaluation & TR for Flanges | 21d | 2017-12-22 A | 2018-01-19 | 110690 | 29% | 15d | 202d |  |  | MH-Wtg [60.53 h] | 27,239 | 7,782 | 003 |
| 110900 |  | Bid evaluation & TR for Fittings | 13d | 2018-01-03 A | 2018-01-19 |  |  | 15d | 34d | 202d | start on or before 2018-01-01 | MH-Wtg [60.53 h] | 27,239 |  | 003 |
| 110940 |  | Bid evaluation & TR for Steam traps | 15d | 2018-01-22 | 2018-02-12 | 110720 |  |  | 29d | 0d |  | MH-Wtg [40.36 h] | 18,162 |  | 003 |
| 110970 |  | Bid evaluation & TR for Stud bolts | 10d | 2018-01-24 | 2018-02-08 | 110750 |  |  | 40d | 0d |  | MH-Wtg [20.18 h] | 9,081 |  | 003 |
| 110990.1 |  | Bid evaluation & TR for Expansion bellows | 15d | 2018-01-30 | 2018-02-19 | 110770.1 |  |  | 24d | 0d |  | MH-Wtg [16.14 h] | 7,263 |  | 003 |
| 110960 |  | Bid evaluation & TR for Gaskets | 10d | 2018-02-01 | 2018-02-15 | 110740 |  |  | 60d | 0d |  | MH-Wtg [20.18 h] | 9,081 |  | 003 |
| 110930 |  | Bid evaluation & TR for Strainers | 15d | 2018-02-02 | 2018-02-22 | 110710 |  |  | 1d | 0d |  | MH-Wtg [20.18 h] | 9,081 |  | 003 |
| 110950 |  | Bid evaluation & TR for Sight glass | 20d | 2018-02-06 | 2018-03-05 | 110730 |  |  | 9d | 0d |  | MH-Wtg [10.09 h] | 4,541 |  | 003 |
| 110980 |  | Bid evaluation & TR for Primary supports | 10d | 2018-02-20 | 2018-03-05 | 110760 |  |  | 22d | 0d |  | MH-Wtg [6.05 h] | 2,723 |  | 003 |
| 110990 |  | Bid evaluation & TR for Special supports | 15d | 2018-02-20 | 2018-03-13 | 110770 |  |  | 9d | 0d |  | MH-Wtg [12.11 h] | 5,450 |  | 003 |

| ID | WBS | Activity | Duration | Start | Finish | Predecessors | Complete | Remaining | Planned start | Planned finish | Total float | Free float | Constraint | Resources | Cost | Actual cost | UNIT DESCRIPTION |
| --- | --- | --- | --- | --- | --- | --- | --- | --- | --- | --- | --- | --- | --- | --- | --- | --- | --- |
|  | 4 | **Technical Order Specifications** |  | 2018-01-15 | 2018-04-17 |  |  |  |  |  |  |  |  |  |  |  |  |
| 111020 |  | TOS for Flanges | 10d | 2018-01-15 | 2018-01-29 | 113230 |  |  |  |  | 197d |  |  | MH-Wtg [15.13 h] | 6,809 |  | 003 |
| 111030 |  | TOS for Valves | 10d | 2018-01-30 | 2018-02-12 | 113240 |  |  |  |  | 187d |  |  | MH-Wtg [20.18 h] | 9,081 |  | 003 |
| 111000 |  | TOS for Pipes | 10d | 2018-02-13 | 2018-02-26 | 113210 |  |  |  |  | 177d |  |  | MH-Wtg [15.13 h] | 6,809 |  | 003 |
| 111010 |  | TOS for Fittings | 10d | 2018-02-13 | 2018-02-26 | 113220 |  |  |  |  | 177d |  |  | MH-Wtg [15.13 h] | 6,809 |  | 003 |
| 111080 |  | TOS for Stud bolts | 10d | 2018-02-22 | 2018-03-08 | 113290 |  |  |  |  | 170d |  |  | MH-Wtg [5.04 h] | 2,268 |  | 003 |
| 111070 |  | TOS for Gaskets | 10d | 2018-03-01 | 2018-03-15 | 113280 |  |  |  |  | 165d |  |  | MH-Wtg [5.04 h] | 2,268 |  | 003 |
| 111050 |  | TOS for Steam traps | 10d | 2018-03-06 | 2018-03-19 | 113260 |  |  |  |  | 162d |  |  | MH-Wtg [10.09 h] | 4,541 |  | 003 |
| 111480 |  | TOS for Expansion bellows | 10d | 2018-03-13 | 2018-03-26 | 113310.1 |  |  |  |  | 157d |  |  | MH-Wtg [4.04 h] | 1,818 |  | 003 |
| 111040 |  | TOS for Strainers | 10d | 2018-03-14 | 2018-03-27 | 113250 |  |  |  |  | 156d |  |  | MH-Wtg [5.04 h] | 2,268 |  | 003 |
| 111090 |  | TOS for Primary supports | 10d | 2018-03-20 | 2018-04-02 | 113300 |  |  |  |  | 152d |  |  | MH-Wtg [1.51 h] | 680 |  | 003 |
| 111060 |  | TOS for Sight glass | 10d | 2018-04-03 | 2018-04-16 | 113270 |  |  |  |  | 142d |  |  | MH-Wtg [2.52 h] | 1,134 |  | 003 |
| 111100 |  | TOS for Special supports | 10d | 2018-04-03 | 2018-04-17 | 113310 |  |  |  |  | 142d |  |  | MH-Wtg [3.03 h] | 1,364 |  | 003 |
|  | 5 | **Electrical** |  | 2017-01-23 | 2018-05-18 |  |  |  |  |  |  |  |  |  |  |  |  |
|  | 1 | **Floating of Enquiry & Receipt of Offers** |  | 2017-01-23 | 2018-03-21 |  |  |  |  |  |  |  |  |  |  |  |  |
| 111110 |  | Enq. floating & receipt of offers for Switchyard (Deleted) | 27d | 2017-01-23 A | 2017-03-17 A |  | 100% |  | 2017-07-03 | 2017-08-08 |  |  | start on 2017-01-23 | MH-Wtg |  |  | 003 |
| 111380.2 |  | Enq. floating & receipt of offers for Construction power | 84d | 2017-02-20 A | 2017-06-14 A |  | 100% |  |  |  |  |  |  |  |  |  | 003 |
| 111380.3 |  | Enq. floating & receipt of offers for Compact substation | 20d | 2017-03-27 A | 2017-04-22 A |  | 100% |  | 2017-03-27 | 2017-04-21 |  |  |  |  |  |  | 003 |
| 111120 |  | Enq. floating & receipt of offers for Transformers | 24d | 2017-05-17 A | 2017-06-19 A | 108160 | 100% |  |  |  |  |  |  | MH-Wtg [16.98 h] | 7,641 | 7,641 | 003 |
| 111130 |  | Enq. floating & receipt of offers for HT panel | 16d | 2017-05-19 A | 2017-06-09 A | 108170 | 100% |  |  |  |  |  |  | MH-Wtg [8.49 h] | 3,821 | 3,821 | 003 |
| 111140 |  | Enq. floating & receipt of offers HT PCC | 16d | 2017-05-19 A | 2017-06-09 A | 108180 | 100% |  |  |  |  |  |  | MH-Wtg [8.49 h] | 3,821 | 3,821 | 003 |
| 111150 |  | Enq. floating & receipt of offers for LT PCC | 16d | 2017-05-26 A | 2017-06-16 A | 108190 | 100% |  |  |  |  |  |  | MH-Wtg [8.49 h] | 3,821 | 3,821 | 003 |
| 111160 |  | Enq. floating & receipt of offers for MCC | 16d | 2017-05-26 A | 2017-06-16 A | 108200 | 100% |  |  |  |  |  |  | MH-Wtg [8.49 h] | 3,821 | 3,821 | 003 |
| 111230 |  | Enq. floating & receipt of offers for HT motors | 16d | 2017-06-27 A | 2017-07-18 A | 108270 | 100% |  |  |  |  |  |  | MH-Wtg [5.1 h] | 2,295 | 2,295 | 003 |
| 111240 |  | Enq. floating & receipt of offers for LT motors | 14d | 2017-06-28 A | 2017-07-17 A | 108280 | 100% |  |  |  |  |  |  | MH-Wtg [5.1 h] | 2,295 | 2,295 | 003 |
| 111210 |  | Enq. floating & receipt of offers for NGR | 11d | 2017-06-30 A | 2017-07-16 A | 108250 | 100% |  | 2017-06-30 | 2017-07-14 |  |  |  | MH-Wtg [3.4 h] | 1,530 | 1,530 | 003 |
| 111180 |  | Enq. floating & receipt of offers for DG | 27d | 2017-07-04 A | 2017-08-09 A | 108220 | 100% |  |  |  |  |  |  | MH-Wtg [5.1 h] | 2,295 | 2,295 | 003 |
| 111250 |  | Enq. floating & receipt of offers for VFD | 13d | 2017-07-27 A | 2017-08-14 A | 108290 | 100% |  |  |  |  |  |  | MH-Wtg [8.49 h] | 3,821 | 3,821 | 003 |
| 111190 |  | Enq. floating & receipt of offers for UPS | 17d | 2017-07-28 A | 2017-08-22 A | 108230 | 100% |  |  |  |  |  |  | MH-Wtg [2.55 h] | 1,148 | 1,148 | 003 |
| 111260 |  | Enq. floating & receipt of offers for HT cables | 13d | 2017-07-29 A | 2017-08-17 A | 108300 | 100% |  | 2017-07-31 | 2017-08-17 |  |  |  | MH-Wtg [3.4 h] | 1,530 | 1,530 | 003 |
| 111300 |  | Enq. floating & receipt of offers Local control stations | 10d | 2017-07-29 A | 2017-08-13 A | 108340 | 100% |  | 2017-07-31 | 2017-08-11 |  |  |  | MH-Wtg [3.4 h] | 1,530 | 1,530 | 003 |
| 111200 |  | Enq. floating & receipt of offers for Battery and battery charger | 13d | 2017-08-17 A | 2017-09-04 A | 108240 | 100% |  |  |  |  |  |  | MH-Wtg [2.55 h] | 1,148 | 1,148 | 003 |
| 111170 |  | Enq. floating & receipt of offers APFC panel | 16d | 2017-08-23 A | 2017-09-13 A | 108210 | 100% |  |  |  |  |  |  | MH-Wtg [2.55 h] | 1,148 | 1,148 | 003 |
| 111220 |  | Enq. floating & receipt of offers for Buss duct | 12d | 2017-08-23 A | 2017-09-07 A | 108260 | 100% |  |  |  |  |  |  | MH-Wtg [3.4 h] | 1,530 | 1,530 | 003 |
| 111270 |  | Enq. floating & receipt of offers for LT cables | 9d | 2017-08-30 A | 2017-09-11 A | 108310 | 100% |  |  |  |  |  |  | MH-Wtg [3.4 h] | 1,530 | 1,530 | 003 |
| 111370 |  | Enq. floating & receipt of offers for PA system | 33d | 2017-08-30 A | 2017-10-13 A | 108410 | 100% |  |  |  |  |  |  | MH-Wtg [5.1 h] | 2,295 | 2,295 | 003 |
| 111330 |  | Enq. floating & receipt of offers for Cable tray | 24d | 2017-08-31 A | 2017-10-03 A | 108370 | 100% |  |  |  |  |  |  | MH-Wtg [3.4 h] | 1,530 | 1,530 | 003 |
| 111171 |  | Enq. floating & receipt of offers for HT Capacitor bank | 59d | 2017-09-01 A | 2017-11-22 A | 108211 | 100% |  |  |  |  |  |  |  |  |  | 003 |
| 111370.1 |  | Enq. floating & receipt of offers for EPBAX system | 17d | 2017-10-25 A | 2017-11-16 A | 108410.1 | 100% |  |  |  |  |  | start on or after 2017-10-12 |  |  |  | 003 |
| 111190.1 |  | Enq. floating & receipt of offers for UMPS | 35d | 2017-12-11 A | 2018-01-29 | 108230.1 | 43% | 20d |  |  | 16d | 0d |  |  |  |  | 003 |
| 111380.1 |  | Enq. floating & receipt of offers for Electrical heat tracing | 68d | 2017-12-14 A | 2018-03-21 | 111960.1 SF-1d | 85% | 10d |  |  | 161d |  |  | MH-Wtg [5.1 h] | 2,295 | 1,958 | 002 |
| 111390 |  | Tender floating & receipt of offers for Electrical installation | 15d | 2017-12-25 A | 2018-01-12 | 108430 | 33% | 10d |  |  | 40d | 0d |  | MH-Wtg [8.49 h] | 3,821 | 1,274 | 003 |
| 111280 |  | Enq. floating & receipt of offers for Control cables (Deleted) | 20d | 2018-01-01 | 2018-01-29 |  |  |  |  |  | 197d |  |  | MH-Wtg |  |  | 003 |
| 111290 |  | Enq. floating & receipt of offers for Jointing kits (Deleted) | 20d | 2018-01-01 | 2018-01-29 |  |  |  |  |  | 197d |  |  | MH-Wtg |  |  | 003 |
| 111320 |  | Enq. floating & receipt of offers for Lighting transformers (Deleted) | 20d | 2018-01-01 | 2018-01-29 |  |  |  |  |  | 197d |  |  | MH-Wtg |  |  | 003 |
| 111340 |  | Enq. floating & receipt of offers for Light fittings | 15d | 2018-01-01 | 2018-01-19 | 108380 |  |  |  |  | 82d | 0d |  | MH-Wtg [2.55 h] | 1,148 |  | 003 |
| 111350 |  | Enq. floating & receipt of offers for Earthing strips (Deleted) | 20d | 2018-01-01 | 2018-01-29 |  |  |  |  |  | 197d |  |  | MH-Wtg |  |  | 003 |
| 111360 |  | Enq. floating & receipt of offers for Lightening arrestors (Deleted) | 20d | 2018-01-01 | 2018-01-29 |  |  |  |  |  | 197d |  |  | MH-Wtg |  |  | 003 |
| 111380 |  | Enq. floating & receipt of offers for CCTV | 20d | 2018-01-01 | 2018-01-29 | 108420 |  |  |  |  | 25d | 0d |  | MH-Wtg [5.1 h] | 2,295 |  | 003 |
| 111310 |  | Enq. floating & receipt of offers for Misc. panels | 20d | 2018-01-22 | 2018-02-19 | 108350 |  |  |  |  | 54d | 0d |  | MH-Wtg [2.55 h] | 1,148 |  | 003 |

| ID | WBS | Activity | Duration | Start | Finish | Predecessors | Complete | Remaining | Planned start | Planned finish | Total float | Free float | Constraint | Resources | Cost | Actual cost | UNIT DESCRIPTION |
| --- | --- | --- | --- | --- | --- | --- | --- | --- | --- | --- | --- | --- | --- | --- | --- | --- | --- |
|  | 3 | **Bid Evaluation & Technical Recomendation** |  | 2017-04-04 | 2018-04-05 |  |  |  |  |  |  |  |  |  |  |  |  |
| 111690 |  | Bid evaluation & TR for Switchyard (Deleted) | 20d | 2017-04-04 A | 2017-04-04 A |  | 100% |  | 2017-05-01 | 2017-05-26 |  |  |  | MH-Wtg |  |  | 003 |
| 111960.3 |  | Bid evaluation & TR for Compact susbstation | 1d | 2017-04-27 A | 2017-04-27 A |  | 100% |  |  |  |  |  |  |  |  |  | 003 |
| 111710 |  | Bid evaluation & TR for HT panel | 50d | 2017-06-09 A | 2017-08-19 A | 111130 | 100% |  | 2017-06-09 | 2017-08-18 |  |  |  | MH-Wtg [20.38 h] | 9,171 | 9,171 | 003 |
| 111720 |  | Bid evaluation & TR for HT PCC | 50d | 2017-06-09 A | 2017-08-19 A | 111140 | 100% |  | 2017-06-09 | 2017-08-18 |  |  |  | MH-Wtg [20.38 h] | 9,171 | 9,171 | 003 |
| 111960.2 |  | Bid evaluation & TR for Construction power | 1d | 2017-06-14 A | 2017-06-14 A | 111380.3 | 100% |  |  |  |  |  |  |  |  |  | 003 |
| 111730 |  | Bid evaluation & TR for LT PCC | 87d | 2017-06-16 A | 2017-10-17 A | 111150 | 100% |  |  |  |  |  |  | MH-Wtg [20.38 h] | 9,171 | 9,171 | 003 |
| 111740 |  | Bid evaluation & TR for MCC | 87d | 2017-06-16 A | 2017-10-17 A | 111160 | 100% |  |  |  |  |  |  | MH-Wtg [20.38 h] | 9,171 | 9,171 | 003 |
| 111790 |  | Bid evaluation & TR for NGR | 27d | 2017-07-16 A | 2017-08-23 A | 111210 | 100% |  | 2017-07-17 | 2017-08-23 |  |  |  | MH-Wtg [8.15 h] | 3,668 | 3,668 | 003 |
| 111820 |  | Bid evaluation & TR for LT motors | 107d | 2017-07-17 A | 2017-12-13 A | 111240 | 100% |  |  |  |  |  |  | MH-Wtg [12.23 h] | 5,504 | 5,504 | 003 |
| 111810 |  | Bid evaluation & TR for HT motors | 75d | 2017-07-18 A | 2017-10-31 A | 111230 | 100% |  |  |  |  |  |  | MH-Wtg [12.23 h] | 5,504 | 5,504 | 003 |
| 111700 |  | Bid evaluation & TR for Transformers | 2d | 2017-07-26 A | 2017-07-27 A | 111120 | 100% |  |  |  |  |  |  | MH-Wtg [40.76 h] | 18,342 | 18,342 | 003 |
| 111760 |  | Bid evaluation & TR for DG | 29d | 2017-08-09 A | 2017-09-19 A | 111180 | 100% |  |  |  |  |  |  | MH-Wtg [12.23 h] | 5,504 | 5,504 | 003 |
| 111880 |  | Bid evaluation & TR for Local control stations | 98d | 2017-08-13 A | 2017-12-28 A | 111300 | 100% |  | 2017-08-14 | 2017-12-28 |  |  |  | MH-Wtg [8.15 h] | 3,668 | 3,668 | 003 |
| 111840 |  | Bid evaluation & TR for HT cables | 17d | 2017-08-17 A | 2017-09-09 A | 111260 | 100% |  | 2017-08-17 | 2017-09-08 |  |  |  | MH-Wtg [8.15 h] | 3,668 | 3,668 | 003 |
| 111770 |  | Bid evaluation & TR for UPS | 24d | 2017-08-22 A | 2017-09-23 A | 111190 | 100% |  | 2017-08-22 | 2017-09-22 |  |  |  | MH-Wtg [6.11 h] | 2,750 | 2,750 | 003 |
| 111780 |  | Bid evaluation & TR for Battery and battery charger | 33d | 2017-09-04 A | 2017-10-18 A | 111200 | 100% |  |  |  |  |  |  | MH-Wtg [6.11 h] | 2,750 | 2,750 | 003 |
| 111800 |  | Bid evaluation & TR for Buss duct | 34d | 2017-09-07 A | 2017-10-24 A | 111220 | 100% |  |  |  |  |  |  | MH-Wtg [8.15 h] | 3,668 | 3,668 | 003 |
| 111850 |  | Bid evaluation & TR for LT cables | 95d | 2017-09-11 A | 2018-01-19 | 111270 | 84% | 15d |  |  | 61d | 0d |  | MH-Wtg [8.15 h] | 3,668 | 3,088 | 003 |
| 111750 |  | Bid evaluation & TR for APFC panel | 48d | 2017-09-13 A | 2017-11-17 A | 111170 | 100% |  |  |  |  |  |  | MH-Wtg [6.11 h] | 2,750 | 2,750 | 003 |
| 111830 |  | Bid evaluation & TR for VFD | 1d | 2017-09-29 A | 2017-09-29 A | 111250 | 100% |  |  |  |  |  |  | MH-Wtg [20.38 h] | 9,171 | 9,171 | 003 |
| 111910 |  | Bid evaluation & TR for Cable tray | 58d | 2017-10-04 A | 2017-12-22 A | 111330 | 100% |  |  |  |  |  |  | MH-Wtg [8.15 h] | 3,668 | 3,668 | 003 |
| 111950 |  | Bid evaluation & TR for PA system | 45d | 2017-10-14 A | 2017-12-15 A | 111370 | 100% |  | 2017-10-16 | 2017-12-15 |  |  | finish on or after 2017-12-05 | MH-Wtg [12.23 h] | 5,504 | 5,504 | 003 |
| 111751 |  | Bid evaluation & TR for HT Capacitor bank | 15d | 2018-01-01 | 2018-01-19 | 111171 |  |  |  |  | 21d | 0d |  |  |  |  | 003 |
| 111860 |  | Bid evaluation & TR for Control cables (Deleted) | 20d | 2018-01-01 | 2018-01-29 |  |  |  |  |  | 197d |  |  | MH-Wtg |  |  | 003 |
| 111870 |  | Bid evaluation & TR for Jointing kits (Deleted) | 20d | 2018-01-01 | 2018-01-29 |  |  |  |  |  | 197d |  |  | MH-Wtg |  |  | 003 |
| 111900 |  | Bid evaluation & TR for Lighting transformers (Deleted) | 20d | 2018-01-01 | 2018-01-29 |  |  |  |  |  | 197d |  |  | MH-Wtg |  |  | 003 |
| 111930 |  | Bid evaluation & TR for Earthing strips (Deleted) | 20d | 2018-01-01 | 2018-01-29 |  |  |  |  |  | 197d |  |  | MH-Wtg |  |  | 003 |
| 111940 |  | Bid evaluation & TR for Lightening arrestors (Deleted) | 20d | 2018-01-01 | 2018-01-29 |  |  |  |  |  | 197d |  |  | MH-Wtg |  |  | 003 |
| 111950.1 |  | Bid evaluation & TR for EPBAX system | 20d | 2018-01-01 | 2018-01-29 | 111370.1 |  |  |  |  | 40d | 0d | finish on or after 2017-12-20 |  |  |  | 003 |
| 111970 |  | Bid evaluation & TR for Electrical installation | 15d | 2018-01-10 | 2018-01-31 | 111390 FS-3d |  |  |  |  | 40d | 0d |  | MH-Wtg [20.38 h] | 9,171 |  | 003 |
| 111920 |  | Bid evaluation & TR for Light fittings | 10d | 2018-01-22 | 2018-02-05 | 111340 |  |  |  |  | 82d | 0d |  | MH-Wtg [6.11 h] | 2,750 |  | 003 |
| 111770.1 |  | Bid evaluation & TR for UMPS | 20d | 2018-01-30 | 2018-02-26 | 111190.1 |  |  |  |  | 16d | 0d |  |  |  |  | 003 |
| 111960 |  | Bid evaluation & TR for CCTV | 20d | 2018-01-30 | 2018-02-26 | 111380 |  |  |  |  | 25d | 0d | finish on or after 2017-12-12 | MH-Wtg [12.23 h] | 5,504 |  | 003 |
| 111890 |  | Bid evaluation & TR for Misc. panels | 20d | 2018-02-20 | 2018-03-19 | 111310 |  |  |  |  | 54d | 0d |  | MH-Wtg [6.11 h] | 2,750 |  | 003 |
| 111960.1 |  | Bid evaluation & TR for Electrical heat tracing | 10d | 2018-03-22 | 2018-04-05 | 113580.1 SF-1d |  |  |  |  | 150d | 0d |  | MH-Wtg [12.23 h] | 5,504 |  | 002 |

| ID | WBS | Activity | Duration | Start | Finish | Predecessors | Complete | Planned start | Planned finish | Total float | Resources | Cost | Actual cost | UNIT DESCRIPTION |
| --- | --- | --- | --- | --- | --- | --- | --- | --- | --- | --- | --- | --- | --- | --- |
|  | 4 | **Technical Order Specifications** |  | 2017-06-28 | 2018-05-18 |  |  |  |  |  |  |  |  |  |
| 112250.3 |  | TOS for Compact substation | 1d | 2017-06-28 A | 2017-06-28 A |  | 100% |  |  |  |  |  |  | 003 |
| 111990 |  | TOS for Transformers | 1d | 2017-09-22 A | 2017-09-22 A | 113320 | 100% |  |  |  | MH-Wtg [10.19 h] | 4,586 | 4,586 | 003 |
| 112130 |  | TOS for HT cables | 15d | 2017-10-07 A | 2017-10-27 A | 113460 | 100% | 2017-10-09 | 2017-10-27 |  | MH-Wtg [2.04 h] | 918 | 918 | 003 |
| 112000 |  | TOS for HT panel | 21d | 2017-10-14 A | 2017-11-13 A | 113330 | 100% | 2017-10-16 | 2017-11-13 |  | MH-Wtg [5.1 h] | 2,295 | 2,295 | 003 |
| 112010 |  | TOS HT PCC | 21d | 2017-10-14 A | 2017-11-13 A | 113340 | 100% | 2017-10-16 | 2017-11-13 |  | MH-Wtg [5.1 h] | 2,295 | 2,295 | 003 |
| 112060 |  | TOS for UPS | 12d | 2017-11-04 A | 2017-11-22 A | 113390 | 100% | 2017-11-06 | 2017-11-21 |  | MH-Wtg [1.53 h] | 689 | 689 | 003 |
| 112080 |  | TOS for NGR | 12d | 2017-11-30 A | 2017-12-15 A | 113410 | 100% |  |  |  | MH-Wtg [2.04 h] | 918 | 918 | 003 |
| 112120 |  | TOS for VFD | 13d | 2017-12-02 A | 2017-12-20 A | 113450 | 100% | 2017-12-04 | 2017-12-20 |  | MH-Wtg [5.1 h] | 2,295 | 2,295 | 003 |
| 112090 |  | TOS for Buss duct | 13d | 2017-12-04 A | 2017-12-20 A | 113420 | 100% |  |  |  | MH-Wtg [2.04 h] | 918 | 918 | 003 |
| 112100 |  | TOS for HT motors | 5d | 2017-12-25 A | 2017-12-29 A | 113430 | 100% |  |  |  | MH-Wtg [3.06 h] | 1,377 | 1,377 | 003 |
| 111980 |  | TOS for Switchyard (Deleted) | 10d | 2018-01-01 | 2018-01-12 |  |  |  |  | 207d | MH-Wtg |  |  | 003 |
| 112020 |  | TOS for LT PCC | 10d | 2018-01-01 | 2018-01-12 | 113350 |  |  |  | 207d | MH-Wtg [5.1 h] | 2,295 |  | 003 |
| 112030 |  | TOS for MCC | 10d | 2018-01-01 | 2018-01-12 | 113360 |  |  |  | 207d | MH-Wtg [5.1 h] | 2,295 |  | 003 |
| 112040 |  | TOS for APFC panel | 10d | 2018-01-01 | 2018-01-12 | 113370 |  |  |  | 207d | MH-Wtg [1.53 h] | 689 |  | 003 |
| 112050 |  | TOS for DG | 10d | 2018-01-01 | 2018-01-12 | 113380 |  |  |  | 207d | MH-Wtg [3.06 h] | 1,377 |  | 003 |
| 112070 |  | TOS for Battery and battery charger | 10d | 2018-01-01 | 2018-01-12 | 113400 |  |  |  | 207d | MH-Wtg [1.53 h] | 689 |  | 003 |
| 112150 |  | TOS for Control cables (Deleted) | 10d | 2018-01-01 | 2018-01-12 |  |  |  |  | 207d | MH-Wtg |  |  | 003 |
| 112160 |  | TOS for Jointing kits (Deleted) | 10d | 2018-01-01 | 2018-01-12 |  |  |  |  | 207d | MH-Wtg |  |  | 003 |
| 112190 |  | TOS for Lighting transformers (Deleted) | 10d | 2018-01-01 | 2018-01-12 |  |  |  |  | 207d | MH-Wtg |  |  | 003 |
| 112220 |  | TOS for Earthing strips (Deleted) | 10d | 2018-01-01 | 2018-01-12 |  |  |  |  | 207d | MH-Wtg |  |  | 003 |
| 112230 |  | TOS for Lightening arrestors (Deleted) | 10d | 2018-01-01 | 2018-01-12 |  |  |  |  | 207d | MH-Wtg |  |  | 003 |
| 112250.2 |  | TOS for Construction power (Deleted) | 1d | 2018-01-01 | 2018-01-01 |  |  |  |  | 216d |  |  |  | 003 |
| 112200 |  | TOS for Cable tray | 10d | 2018-01-23 | 2018-02-06 | 113530 |  |  |  | 191d | MH-Wtg [2.04 h] | 918 |  | 003 |
| 112110 |  | TOS for LT motors | 10d | 2018-01-30 | 2018-02-12 | 113440 |  |  |  | 187d | MH-Wtg [3.06 h] | 1,377 |  | 003 |
| 112170 |  | TOS for Local control stations | 10d | 2018-01-30 | 2018-02-12 | 113500 |  |  |  | 187d | MH-Wtg [2.04 h] | 918 |  | 003 |
| 112240 |  | TOS for PA system | 10d | 2018-01-30 | 2018-02-12 | 113570 |  |  |  | 187d | MH-Wtg [3.06 h] | 1,377 |  | 003 |
| 112041 |  | TOS for HT Capacitor bank | 10d | 2018-02-16 | 2018-03-01 | 113371 |  |  |  | 174d |  |  |  | 003 |
| 112140 |  | TOS for LT cables | 10d | 2018-02-20 | 2018-03-05 | 113470 |  |  |  | 172d | MH-Wtg [2.04 h] | 918 |  | 003 |
| 112210 |  | TOS for Light fittings | 10d | 2018-02-21 | 2018-03-06 | 113540 |  |  |  | 171d | MH-Wtg [1.53 h] | 689 |  | 003 |
| 112240.1 |  | TOS for EPBAX system | 10d | 2018-02-27 | 2018-03-12 | 113570.1 |  |  |  | 167d |  |  |  | 003 |
| 112260 |  | TOS for Electrical installation | 10d | 2018-03-01 | 2018-03-14 | 113590 |  |  |  | 165d | MH-Wtg [5.1 h] | 2,295 |  | 003 |
| 112250 |  | TOS for CCTV | 10d | 2018-03-20 | 2018-04-02 | 113580 |  |  |  | 152d | MH-Wtg [3.06 h] | 1,377 |  | 003 |
| 112060.1 |  | TOS for UMPS | 10d | 2018-03-27 | 2018-04-09 | 113390.1 |  |  |  | 147d |  |  |  | 003 |
| 112180 |  | TOS for Misc. panels | 10d | 2018-04-17 | 2018-04-30 | 113510 |  |  |  | 132d | MH-Wtg [1.53 h] | 689 |  | 003 |
| 112250.1 |  | TOS for Electrical heat tracing | 10d | 2018-05-04 | 2018-05-18 | 113580.1 |  |  |  | 119d | MH-Wtg [3.06 h] | 1,377 |  | 002 |

| ID | WBS | Activity | Duration | Start | Finish | Predecessors | Complete | Remaining | Planned start | Planned finish | Total float | Free float | Resources | Cost | Actual cost | UNIT DESCRIPTION |
| --- | --- | --- | --- | --- | --- | --- | --- | --- | --- | --- | --- | --- | --- | --- | --- | --- |
|  | 6 | **Instrumentation** |  | 2017-03-23 | 2018-04-09 |  |  |  |  |  |  |  |  |  |  |  |
|  | 1 | **Floating of Enquiry & Receipt of Offers** |  | 2017-03-23 | 2018-01-29 |  |  |  |  |  |  |  |  |  |  |  |
| 112270 |  | Enq. floating & receipt of offers for DCS system | 12d | 2017-03-23 A | 2017-04-08 A | 109010 | 100% |  | 2017-03-23 | 2017-04-07 |  |  | MH-Wtg [17 h] | 7,650 | 7,650 | 003 |
| 112350.3 |  | Enq. floating & receipt of offers for Vibration monitoring system | 15d | 2017-03-23 A | 2017-04-12 A | 109090.3 | 100% |  |  |  |  |  |  |  |  | 001 |
| 112380 |  | Enq. floating & receipt of offers for Weigh bridge | 15d | 2017-03-23 A | 2017-04-12 A | 109120 | 100% |  |  |  |  |  | MH-Wtg [5 h] | 2,250 | 2,250 | 003 |
| 112280 |  | Enq. floating & receipt of offers for Control valves- WNA Plant | 30d | 2017-03-28 A | 2017-05-08 A | 109020 | 100% |  |  |  |  |  | MH-Wtg [10 h] | 4,500 | 4,500 | 001 |
| 112281 |  | Enq. floating & receipt of offers for Control valves- CNA Plants | 14d | 2017-04-10 A | 2017-04-27 A | 109021 | 100% |  |  |  |  |  | MH-Wtg [2.83 h] | 1,274 | 1,274 | 002 |
| 112282 |  | Enq. floating & receipt of offers for Control valves- Offsites & Utilities | 14d | 2017-04-10 A | 2017-04-27 A | 109022 | 100% |  |  |  |  |  | MH-Wtg [4 h] | 1,800 | 1,800 | 003 |
| 112291 |  | Enq. floating & receipt of offers for On/Off valves- CNA Plants | 11d | 2017-04-19 A | 2017-05-03 A | 109031 | 100% |  |  |  |  |  | MH-Wtg [3 h] | 1,350 | 1,350 | 002 |
| 112321 |  | Enq. floating & receipt of offers for Analysers/Gas detectors- CNA Plants | 40d | 2017-04-24 A | 2017-06-16 A | 109061 | 100% |  |  |  |  |  | MH-Wtg [2.26 h] | 1,017 | 1,017 | 002 |
| 112322 |  | Enq. floating & receipt of offers for Analysers/Gas detectors- Offsites & Utilities | 40d | 2017-04-24 A | 2017-06-16 A | 109062 | 100% |  |  |  |  |  | MH-Wtg [3 h] | 1,350 | 1,350 | 003 |
| 112310 |  | Enq. floating & receipt of offers for Flow meters-WNA Plants | 10d | 2017-05-03 A | 2017-05-16 A | 109050 | 100% |  |  |  |  |  | MH-Wtg [4 h] | 1,800 | 1,800 | 001 |
| 112311 |  | Enq. floating & receipt of offers for Flow meters- CNA Plants | 111d | 2017-05-03 A | 2017-10-05 A | 109051 | 100% |  |  |  |  |  | MH-Wtg [2.83 h] | 1,274 | 1,274 | 002 |
| 112300 |  | Enq. floating & receipt of offers for Transmitters- WNA Plant | 126d | 2017-05-25 A | 2017-11-17 A | 109040 | 100% |  |  |  |  |  | MH-Wtg [5 h] | 2,250 | 2,250 | 001 |
| 112301 |  | Enq. floating & receipt of offers for Transmitters- CNA Plants | 17d | 2017-05-25 A | 2017-06-16 A | 109041 | 100% |  |  |  |  |  | MH-Wtg [22 h] | 9,900 | 9,900 | 002 |
| 112302 |  | Enq. floating & receipt of offers for Transmitters- Offsites & Utilities | 126d | 2017-05-25 A | 2017-11-17 A | 109042 | 100% |  |  |  |  |  | MH-Wtg [18 h] | 8,100 | 8,100 | 003 |
| 112350 |  | Enq. floating & receipt of offers for Gauges- WNA Plant | 137d | 2017-05-31 A | 2017-12-08 A | 109090 | 100% |  |  |  |  |  | MH-Wtg [5.28 h] | 2,376 | 2,376 | 001 |
| 112350.1 |  | Enq. floating & receipt of offers for Gauges- CNA Plants | 137d | 2017-05-31 A | 2017-12-08 A | 109090.1 | 100% |  |  |  |  |  | MH-Wtg [1.32 h] | 594 | 594 | 002 |
| 112350.2 |  | Enq. floating & receipt of offers for Gauges- Offsites & Utilities | 137d | 2017-05-31 A | 2017-12-08 A | 109090.2 | 100% |  |  |  |  |  | MH-Wtg [2.83 h] | 1,274 | 1,274 | 003 |
| 112290 |  | Enq. floating & receipt of offers for On/Off valves- WNA Plant | 12d | 2017-07-10 A | 2017-07-25 A | 109030 | 100% |  |  |  |  |  | MH-Wtg [5 h] | 2,250 | 2,250 | 001 |
| 112292 |  | Enq. floating & receipt of offers for On/Off valves- Offsites & Utilities | 12d | 2017-07-10 A | 2017-07-25 A | 109032 | 100% |  |  |  |  |  | MH-Wtg [9 h] | 4,050 | 4,050 | 003 |
| 112312 |  | Enq. floating & receipt of offers for Flow meters- Offsites & Utlities | 51d | 2017-07-26 A | 2017-10-05 A | 109052 | 100% |  |  |  |  |  | MH-Wtg [9 h] | 4,050 | 4,050 | 003 |
| 112350.4 |  | Enq. floating & receipt of offers for Anti surge controller | 20d | 2017-08-04 A | 2017-09-01 A | 109090.4 | 100% |  |  |  |  |  |  |  |  | 001 |
| 112350.5 |  | Enq. floating & receipt of offers for Governor | 20d | 2017-08-04 A | 2017-09-01 A | 109090.5 | 100% |  |  |  |  |  |  |  |  | 001 |
| 112330 |  | Enq. floating & receipt of offers for Saftey items- WNA Plant | 16d | 2017-08-16 A | 2017-09-06 A | 109070 | 100% |  |  |  |  |  | MH-Wtg [5 h] | 2,250 | 2,250 | 001 |
| 112331 |  | Enq. floating & receipt of offers for Saftey items- CNA Plants | 16d | 2017-08-16 A | 2017-09-06 A | 109071 | 100% |  |  |  |  |  | MH-Wtg [1.32 h] | 594 | 594 | 002 |
| 112332 |  | Enq. floating & receipt of offers for Saftey items- Offsites & Utilities | 16d | 2017-08-16 A | 2017-09-06 A | 109072 | 100% |  |  |  |  |  | MH-Wtg [2.45 h] | 1,103 | 1,103 | 003 |
| 112351 |  | Enq. floating & receipt of offers for Cable trays | 24d | 2017-08-31 A | 2017-10-03 A | 109091, 111330 FF | 100% |  |  |  |  |  | MH-Wtg [3 h] | 1,350 | 1,350 | 003 |
| 112352 |  | Enq. floating & receipt of offers for Instrument cables | 19d | 2017-10-27 A | 2017-11-22 A | 109092 | 100% |  |  |  |  |  | MH-Wtg [3 h] | 1,350 | 1,350 | 003 |
| 112390 |  | Enq. floating & receipt of offers for Fire alarm system | 29d | 2017-11-01 A | 2017-12-11 A | 109130 | 100% |  |  |  |  |  | MH-Wtg [5 h] | 2,250 | 2,250 | 003 |
| 112370 |  | Enq. floating & receipt of offers for bulk materials (Deleted) | 20d | 2017-12-29 A | 2018-01-29 |  |  | 20d | 2018-01-08 | 2018-02-05 | 197d |  | MH-Wtg |  |  | 003 |
| 112400 |  | Tender floating & receipt of offers for Instrument installation | 16d | 2017-12-29 A | 2018-01-19 | 109140 | 6% | 15d |  |  | 49d | 0d | MH-Wtg [9 h] | 4,050 | 253 | 003 |
| 112301.1 |  | Enq. floating & receipt of offers for DIN Rail Transmitters- CNA Plants (Deleted) | 20d | 2018-01-01 | 2018-01-29 |  |  |  |  |  | 197d |  |  |  |  | 002 |
| 112320 |  | Enq. floating & receipt of offers for Analysers/Gas detectors- WNA Plant (Deleted) | 20d | 2018-01-01 | 2018-01-29 |  |  |  |  |  | 197d |  | MH-Wtg |  |  | 001 |
| 112340 |  | Enq. floating & receipt of offers for Switches- WNA Plant (Deleted) | 20d | 2018-01-01 | 2018-01-29 |  |  |  |  |  | 197d |  | MH-Wtg |  |  | 001 |
| 112341 |  | Enq. floating & receipt of offers for Switches- CNA Plants (Deleted) | 20d | 2018-01-01 | 2018-01-29 |  |  |  |  |  | 197d |  | MH-Wtg |  |  | 002 |
| 112342 |  | Enq. floating & receipt of offers for Switches- Offsites & Utilities | 20d | 2018-01-01 | 2018-01-29 | 109082 |  |  |  |  | 147d | 0d | MH-Wtg [1 h] | 450 |  | 003 |
| 112360 |  | Enq. floating & receipt of offers for Junction boxes | 15d | 2018-01-01 | 2018-01-19 | 109100 |  |  |  |  | 62d | 0d | MH-Wtg [3 h] | 1,350 |  | 003 |

| ID | WBS | Activity | Duration | Start | Finish | Predecessors | Complete | Remaining | Planned start | Planned finish | Total float | Free float | Resources | Cost | Actual cost | UNIT DESCRIPTION |
| --- | --- | --- | --- | --- | --- | --- | --- | --- | --- | --- | --- | --- | --- | --- | --- | --- |
|  | 3 | **Bid Evaluation & Technical Recomendation** |  | 2017-04-27 | 2018-02-26 |  |  |  |  |  |  |  |  |  |  |  |
| 112561 |  | Bid evaluation & TR for Control valves- CNA Plants | 82d | 2017-04-27 A | 2017-08-21 A | 112281 | 100% |  |  |  |  |  | MH-Wtg [6 h] | 2,700 | 2,700 | 002 |
| 112562 |  | Bid evaluation & TR for Control valves- Offsites & Utilities | 106d | 2017-04-27 A | 2017-09-22 A | 112282 | 100% |  |  |  |  |  | MH-Wtg [10 h] | 4,500 | 4,500 | 003 |
| 112550 |  | Bid evaluation & TR for DCS system | 33d | 2017-05-01 A | 2017-06-14 A | 112270 | 100% |  |  |  |  |  | MH-Wtg [40 h] | 18,000 | 18,000 | 003 |
| 112570 |  | Bid evaluation & TR for On/Off valves- WNA Plant | 84d | 2017-05-03 A | 2017-08-29 A | 112290 | 100% |  |  |  |  |  | MH-Wtg [11 h] | 4,950 | 4,950 | 001 |
| 112571 |  | Bid evaluation & TR for On/Off valves- CNA Plants | 84d | 2017-05-03 A | 2017-08-29 A | 112291 | 100% |  |  |  |  |  | MH-Wtg [6 h] | 2,700 | 2,700 | 002 |
| 112572 |  | Bid evaluation & TR for On/Off valves- Offstites & Utilities | 84d | 2017-05-03 A | 2017-08-29 A | 112292 | 100% |  |  |  |  |  | MH-Wtg [23 h] | 10,350 | 10,350 | 003 |
| 112560 |  | Bid evaluation & TR for Control valves- WNA Plant | 76d | 2017-05-08 A | 2017-08-22 A | 112280 | 100% |  |  |  |  |  | MH-Wtg [24 h] | 10,800 | 10,800 | 001 |
| 112660 |  | Bid evaluation & TR for Weigh bridge | 1d | 2017-05-09 A | 2017-05-09 A | 112380 | 100% |  |  |  |  |  | MH-Wtg [18 h] | 8,100 | 8,100 | 003 |
| 112590 |  | Bid evaluation & TR for Flow meters- WNA Plant | 89d | 2017-05-16 A | 2017-09-18 A | 112310 | 100% |  |  |  |  |  | MH-Wtg [10 h] | 4,500 | 4,500 | 001 |
| 112591 |  | Bid evaluation & TR for Flow meters- CNA Plants | 120d | 2017-05-16 A | 2017-10-31 A | 112311 | 100% |  |  |  |  |  | MH-Wtg [6 h] | 2,700 | 2,700 | 002 |
| 112630.3 |  | Bid evaluation & TR for Vibration monitoring system | 1d | 2017-05-18 A | 2017-05-18 A | 112350.3 | 100% |  |  |  |  |  |  |  |  | 001 |
| 112601 |  | Bid evaluation & TR for Analysers/Gas detectors- CNA Plants | 98d | 2017-06-17 A | 2017-11-02 A | 112321 | 100% |  | 2017-06-19 | 2017-11-02 |  |  | MH-Wtg [5.43 h] | 2,444 | 2,444 | 002 |
| 112602 |  | Bid evaluation & TR for Analysers/Gas detectors- Offsites & Utilities | 98d | 2017-06-17 A | 2017-11-02 A | 112322 | 100% |  | 2017-06-19 | 2017-11-02 |  |  | MH-Wtg [8 h] | 3,600 | 3,600 | 003 |
| 112630.4 |  | Bid evaluation & TR for Anti surge controller | 16d | 2017-09-01 A | 2017-09-22 A | 112350.4 | 100% |  |  |  |  |  |  |  |  | 001 |
| 112630.5 |  | Bid evaluation & TR for Governor | 16d | 2017-09-01 A | 2017-09-22 A | 112350.5 | 100% |  |  |  |  |  |  |  |  | 001 |
| 112592 |  | Bid evaluation & TR for Flow meters- Offsites & Utilities | 32d | 2017-09-18 A | 2017-10-31 A | 112312 | 100% |  |  |  |  |  | MH-Wtg [20 h] | 9,000 | 9,000 | 003 |
| 112631 |  | Bid evaluation & TR for Cable trays | 58d | 2017-10-04 A | 2017-12-22 A | 112351 | 100% |  |  |  |  |  | MH-Wtg [8 h] | 3,600 | 3,600 | 003 |
| 112632 |  | Bid evaluation & TR for Instrument cables | 1d | 2017-11-22 A | 2017-11-22 A | 112352 | 100% |  |  |  |  |  | MH-Wtg [8 h] | 3,600 | 3,600 | 003 |
| 112581 |  | Bid evaluation & TR for Transmitters- CNA Plants | 24d | 2017-12-26 A | 2018-01-29 | 112301 | 17% | 20d |  |  | 167d | 0d | MH-Wtg [53 h] | 23,850 | 3,975 | 002 |
| 112582 |  | Bid evaluation & TR for Transmitters- Offsites & Utilities | 24d | 2017-12-26 A | 2018-01-29 | 112302 | 17% | 20d |  |  | 167d | 0d | MH-Wtg [43 h] | 19,350 | 3,225 | 003 |
| 112580 |  | Bid evaluation & TR for Transmitters- WNA Plant | 12d | 2018-01-01 | 2018-01-16 | 112300 |  |  |  |  | 25d | 0d | MH-Wtg [11 h] | 4,950 |  | 001 |
| 112581.1 |  | Bid evaluation & TR for DIN Rail Transmitters- CNA Plants (Deleted) | 20d | 2018-01-01 | 2018-01-29 |  |  |  |  |  | 197d |  |  |  |  | 002 |
| 112600 |  | Bid evaluation & TR for Analysers/Gas detectors- WNA Plant (Deleted) | 20d | 2018-01-01 | 2018-01-29 |  |  |  |  |  | 197d |  | MH-Wtg |  |  | 001 |
| 112610 |  | Bid evaluation & TR for Saftey items- WNA Plant | 20d | 2018-01-01 | 2018-01-29 | 112330 |  |  |  |  | 21d | 0d | MH-Wtg [12 h] | 5,400 |  | 001 |
| 112611 |  | Bid evaluation & TR for Saftey items- CNA Plants | 20d | 2018-01-01 | 2018-01-29 | 112331 |  |  |  |  | 172d | 0d | MH-Wtg [3.17 h] | 1,427 |  | 002 |
| 112612 |  | Bid evaluation & TR for Saftey items- Offsites & Utilities | 20d | 2018-01-01 | 2018-01-29 | 112332 |  |  |  |  | 172d | 0d | MH-Wtg [5 h] | 2,250 |  | 003 |
| 112620 |  | Bid evaluation & TR for Switches- WNA Plant (Deleted) | 19d | 2018-01-01 | 2018-01-25 |  |  |  |  |  | 198d |  | MH-Wtg |  |  | 001 |
| 112621 |  | Bid evaluation & TR for Switches- CNA Plants (Deleted) | 19d | 2018-01-01 | 2018-01-25 |  |  |  |  |  | 198d |  | MH-Wtg |  |  | 002 |
| 112630 |  | Bid evaluation & TR for Gauges- WNA Plant | 20d | 2018-01-01 | 2018-01-29 | 112350 |  |  |  |  | 16d | 0d | MH-Wtg [11 h] | 4,950 |  | 001 |
| 112630.1 |  | Bid evaluation & TR for Gauges- CNA Plants | 20d | 2018-01-01 | 2018-01-29 | 112350.1 |  |  |  |  | 167d | 0d | MH-Wtg [3.17 h] | 1,427 |  | 002 |
| 112630.2 |  | Bid evaluation & TR for Gauges- Offsites & Utilities | 20d | 2018-01-01 | 2018-01-29 | 112350.2 |  |  |  |  | 167d | 0d | MH-Wtg [6 h] | 2,700 |  | 003 |
| 112650 |  | Bid evaluation & TR for bulk materials (Deleted) | 20d | 2018-01-01 | 2018-01-29 |  |  |  |  |  | 197d |  | MH-Wtg |  |  | 003 |
| 112670 |  | Bid evaluation & TR for Fire alarm system | 20d | 2018-01-01 | 2018-01-29 | 112390 |  |  |  |  | 30d | 0d | MH-Wtg [12 h] | 5,400 |  | 003 |
| 112640 |  | Bid evaluation & TR for Junction boxes | 10d | 2018-01-22 | 2018-02-05 | 112360 |  |  |  |  | 62d | 0d | MH-Wtg [8 h] | 3,600 |  | 003 |
| 112680 |  | Bid evaluation & TR for Instrument installation | 15d | 2018-01-22 | 2018-02-12 | 112400 |  |  |  |  | 49d | 0d | MH-Wtg [20 h] | 9,000 |  | 003 |
| 112622 |  | Bid evaluation & TR for Switches- Offsites & Utilities | 20d | 2018-01-30 | 2018-02-26 | 112342 |  |  |  |  | 147d | 0d | MH-Wtg [3 h] | 1,350 |  | 003 |

| ID | WBS | Activity | Duration | Start | Finish | Predecessors | Complete | Remaining | Planned start | Planned finish | Total float | Resources | Cost | Actual cost | UNIT DESCRIPTION |
| --- | --- | --- | --- | --- | --- | --- | --- | --- | --- | --- | --- | --- | --- | --- | --- |
|  | 4 | **Technical Order Specifications** |  | 2017-09-15 | 2018-04-09 |  |  |  |  |  |  |  |  |  |  |
| 112800 |  | TOS for Weigh bridge | 35d | 2017-09-15 A | 2017-11-02 A | 113710 | 100% |  |  |  |  | MH-Wtg [3.4 h] | 1,530 | 1,530 | 003 |
| 112701 |  | TOS for Control valves- CNA Plants | 18d | 2017-09-20 A | 2017-10-13 A | 113611 | 100% |  |  |  |  | MH-Wtg [1.7 h] | 765 | 765 | 002 |
| 112690 |  | TOS for DCS system | 21d | 2017-10-05 A | 2017-11-02 A | 113600 | 100% |  |  |  |  | MH-Wtg [10 h] | 4,500 | 4,500 | 003 |
| 112710 |  | TOS for On/Off valves- WNA Plant | 26d | 2017-10-07 A | 2017-11-13 A | 113612.1 | 100% |  | 2017-10-09 | 2017-11-13 |  | MH-Wtg [3 h] | 1,350 | 1,350 | 001 |
| 112711 |  | TOS for On/Off valves- CNA Plants | 26d | 2017-10-07 A | 2017-11-13 A | 113621 | 100% |  | 2017-10-09 | 2017-11-13 |  | MH-Wtg [1.7 h] | 765 | 765 | 002 |
| 112712 |  | TOS for On/Off valves- Offsites & Utilities | 26d | 2017-10-07 A | 2017-11-13 A | 113621.1 | 100% |  | 2017-10-09 | 2017-11-13 |  | MH-Wtg [6 h] | 2,700 | 2,700 | 003 |
| 112700 |  | TOS for Control valves- WNA Plant | 52d | 2017-10-13 A | 2017-12-25 A | 113610 | 100% |  |  |  |  | MH-Wtg [6 h] | 2,700 | 2,700 | 001 |
| 112702 |  | TOS for Control valves- Offsites & Utilities | 28d | 2017-10-13 A | 2017-11-21 A | 113612 | 100% |  |  |  |  | MH-Wtg [2 h] | 900 | 900 | 003 |
| 112730 |  | TOS for Flow meters- WNA Plant | 52d | 2017-11-02 A | 2018-01-12 | 113640 | 81% | 10d |  |  | 207d | MH-Wtg [2 h] | 900 | 727 | 001 |
| 112731 |  | TOS for Flow meters- CNA Plants | 52d | 2017-11-02 A | 2018-01-12 | 113641 | 81% | 10d |  |  | 207d | MH-Wtg [1.7 h] | 765 | 618 | 002 |
| 112721.1 |  | TOS for DIN Rail Transmitters- CNA Plants (Deleted) | 10d | 2018-01-01 | 2018-01-12 |  |  |  |  |  | 207d |  |  |  | 002 |
| 112740 |  | TOS for Analysers/Gas detectors- WNA Plant (Deleted) | 10d | 2018-01-01 | 2018-01-12 |  |  |  |  |  | 207d | MH-Wtg |  |  | 001 |
| 112760 |  | TOS for Switches- WNA Plant (Deleted) | 10d | 2018-01-01 | 2018-01-12 |  |  |  |  |  | 207d | MH-Wtg |  |  | 001 |
| 112761 |  | TOS for Switches- CNA Plants (Deleted) | 10d | 2018-01-01 | 2018-01-12 |  |  |  |  |  | 207d | MH-Wtg |  |  | 002 |
| 112770.3 |  | TOS for Vibration monitoring system | 10d | 2018-01-01 | 2018-01-12 | 113680.3 |  |  |  |  | 207d |  |  |  | 001 |
| 112770.4 |  | TOS for Anti surge controller | 10d | 2018-01-01 | 2018-01-12 | 113680.4 |  |  |  |  | 207d |  |  |  | 001 |
| 112770.5 |  | TOS for Governor | 10d | 2018-01-01 | 2018-01-12 | 113680.5 |  |  |  |  | 207d |  |  |  | 001 |
| 112790 |  | TOS for bulk materials (Deleted) | 10d | 2018-01-01 | 2018-01-12 |  |  |  |  |  | 207d | MH-Wtg |  |  | 003 |
| 112741 |  | TOS for Analysers/Gas detectors- CNA Plants | 10d | 2018-01-22 | 2018-02-05 | 113651 |  |  |  |  | 192d | MH-Wtg [1.36 h] | 612 |  | 002 |
| 112742 |  | TOS for Analysers/Gas detectors- Offsites & Utilities | 10d | 2018-01-22 | 2018-02-05 | 113652 |  |  |  |  | 192d | MH-Wtg [2.26 h] | 1,017 |  | 003 |
| 112772 |  | TOS for Instrument cables | 10d | 2018-01-22 | 2018-02-05 | 113682 |  |  |  |  | 192d | MH-Wtg [2.26 h] | 1,017 |  | 003 |
| 112771 |  | TOS for Cable trays | 10d | 2018-01-23 | 2018-02-06 | 113681 |  |  |  |  | 191d | MH-Wtg [2.26 h] | 1,017 |  | 003 |
| 112732 |  | TOS for Flow meters- Offsites & Utilities | 10d | 2018-01-30 | 2018-02-12 | 113642 |  |  |  |  | 187d | MH-Wtg [5 h] | 2,250 |  | 003 |
| 112720 |  | TOS for Transmitters- WNA Plant | 10d | 2018-02-15 | 2018-02-28 | 113630 |  |  |  |  | 175d | MH-Wtg [3 h] | 1,350 |  | 001 |
| 112750 |  | TOS for Saftey items- WNA Plant | 10d | 2018-02-20 | 2018-03-05 | 113660 |  |  |  |  | 172d | MH-Wtg [3.4 h] | 1,530 |  | 001 |
| 112751 |  | TOS for Saftey items- CNA Plants | 10d | 2018-02-20 | 2018-03-05 | 113661 |  |  |  |  | 172d | MH-Wtg [0.79 h] | 356 |  | 002 |
| 112752 |  | TOS for Saftey items- Offsites & Utilities | 10d | 2018-02-20 | 2018-03-05 | 113662 |  |  |  |  | 172d | MH-Wtg [1.47 h] | 662 |  | 003 |
| 112721 |  | TOS for Transmitters- CNA Plants | 10d | 2018-02-27 | 2018-03-12 | 113631 |  |  |  |  | 167d | MH-Wtg [12 h] | 5,400 |  | 002 |
| 112722 |  | TOS for Transmitters- Offsites & Utilities | 10d | 2018-02-27 | 2018-03-12 | 113632 |  |  |  |  | 167d | MH-Wtg [10 h] | 4,500 |  | 003 |
| 112770 |  | TOS for Gauges- WNA Plant | 10d | 2018-02-27 | 2018-03-12 | 113680 |  |  |  |  | 167d | MH-Wtg [3.17 h] | 1,427 |  | 001 |
| 112770.1 |  | TOS for Gauges- CNA Plants | 10d | 2018-02-27 | 2018-03-12 | 113680.1 |  |  |  |  | 167d | MH-Wtg [0.79 h] | 356 |  | 002 |
| 112770.2 |  | TOS for Gauges- Offsites & Utilities | 10d | 2018-02-27 | 2018-03-12 | 113680.2 |  |  |  |  | 167d | MH-Wtg [1.7 h] | 765 |  | 003 |
| 112780 |  | TOS for Junction boxes | 10d | 2018-02-27 | 2018-03-12 | 113690 |  |  |  |  | 167d | MH-Wtg [2.26 h] | 1,017 |  | 003 |
| 112810 |  | TOS for Fire alarm system | 10d | 2018-02-27 | 2018-03-12 | 113720 |  |  |  |  | 167d | MH-Wtg [3.4 h] | 1,530 |  | 003 |
| 112820 |  | TOS for Instrument installation | 10d | 2018-03-13 | 2018-03-26 | 113730 |  |  |  |  | 157d | MH-Wtg [5 h] | 2,250 |  | 003 |
| 112762 |  | TOS for Switches- Offsites & Utilities | 10d | 2018-03-27 | 2018-04-09 | 113672 |  |  |  |  | 147d | MH-Wtg [0.91 h] | 410 |  | 003 |

| ID | WBS | Activity | Duration | Start | Finish | Predecessors | Complete | Remaining | Planned start | Planned finish | Total float | Free float | Constraint | Resources | Cost | Actual cost | UNIT DESCRIPTION |
| --- | --- | --- | --- | --- | --- | --- | --- | --- | --- | --- | --- | --- | --- | --- | --- | --- | --- |
|  | 3 | **Procurement** |  | 2016-09-29 | 2018-09-18 |  |  |  |  |  |  |  |  |  |  |  |  |
|  | 3 | **Refurbishment** |  | 2016-09-29 | 2018-01-31 |  |  |  |  |  |  |  |  |  |  |  |  |
| A112821 |  | Refurbishment of WNA Plant equipments | 349d | 2016-09-29 A | 2018-01-31 | 000001 | 94% | 22d |  |  | 0d |  | finish on 2018-01-31 | MH-Wtg [24154 h] | 10,869,300 | 10,800,783 | 001 |
|  | 1 | **Ordering** |  | 2016-10-25 | 2018-05-04 |  |  |  |  |  |  |  |  |  |  |  |  |
|  | 1 | **Process** |  | 2017-04-11 | 2018-01-29 |  |  |  |  |  |  |  |  |  |  |  |  |
| 113010 |  | Ordering of Chiller unit | 51d | 2017-04-11 A | 2017-06-20 A | 109890 | 100% |  |  |  |  |  |  | MH-Wtg [92 h] | 41,400 | 41,400 | 003 |
| 112980 |  | Ordering of Agitators | 1d | 2017-04-28 A | 2017-04-28 A | 109860 | 100% |  |  |  |  |  |  | MH-Wtg [15 h] | 6,750 | 6,750 | 002 |
| 112840 |  | Ordering of Raw water treatment plant | 42d | 2017-05-02 A | 2017-06-28 A | 109720 | 100% |  |  |  |  |  |  | MH-Wtg [241.06 h] | 108,477 | 108,477 | 003 |
| 112850 |  | Ordering of Cooling tower package | 51d | 2017-05-10 A | 2017-07-19 A | 109730 | 100% |  |  |  |  |  |  | MH-Wtg [241.06 h] | 108,477 | 108,477 | 003 |
| 112830 |  | Ordering of Fire fighting package | 49d | 2017-05-19 A | 2017-07-26 A | 109710 | 100% |  |  |  |  |  |  | MH-Wtg [301 h] | 135,450 | 135,450 | 003 |
| 112860 |  | Ordering of DM plant | 19d | 2017-06-02 A | 2017-06-28 A | 109740 | 100% |  |  |  |  |  |  | MH-Wtg [90.4 h] | 40,680 | 40,680 | 003 |
| 112931 |  | Ordering of API pumps- CNA Plants | 83d | 2017-06-13 A | 2017-10-06 A | 109811 | 100% |  |  |  |  |  |  | MH-Wtg [54 h] | 24,300 | 24,300 | 002 |
| 112990 |  | Ordering of Air compressor | 30d | 2017-07-05 A | 2017-08-16 A | 109870 | 100% |  |  |  |  |  |  | MH-Wtg [92 h] | 41,400 | 41,400 | 003 |
| 113000 |  | Ordering of Air drier | 30d | 2017-07-05 A | 2017-08-16 A | 109880 | 100% |  |  |  |  |  |  | MH-Wtg [60.26 h] | 27,117 | 27,117 | 003 |
| 113100.7 |  | Ordering of Deareator | 31d | 2017-07-25 A | 2017-09-06 A | 109980.7 | 100% |  |  |  |  |  |  |  |  |  | 001 |
| 112870 |  | Ordering of Boiler for CPP package | 1d | 2017-07-27 A | 2017-07-27 A |  | 100% |  |  |  |  |  | finish on or after 2017-07-07 | MH-Wtg [573 h] | 257,850 | 257,850 | 003 |
| 113100.3 |  | Ordering of Inlet air filter | 39d | 2017-08-02 A | 2017-09-26 A | 109980.3 | 100% |  |  |  |  |  |  |  |  |  | 001 |
| 112930 |  | Ordering of Non-API pumps- WNA Plant | 28d | 2017-08-11 A | 2017-09-20 A | 109810 | 100% |  |  |  |  |  |  | MH-Wtg [109 h] | 49,050 | 49,050 | 001 |
| 112940 |  | Ordering of Non-API pumps | 26d | 2017-08-11 A | 2017-09-18 A | 109820 | 100% |  |  |  |  |  |  | MH-Wtg [380 h] | 171,000 | 171,000 | 003 |
| 113100.1 |  | Ordering of Ejectors | 49d | 2017-08-20 A | 2017-10-26 A | 109980.1 | 100% |  | 2017-08-21 | 2017-10-26 |  |  |  | MH-Wtg [75.33 h] | 33,899 | 33,899 | 001 |
| 112950 |  | Ordering of Cooling water pumps | 20d | 2017-08-24 A | 2017-09-20 A | 109830 | 100% |  |  |  |  |  |  | MH-Wtg [150.66 h] | 67,797 | 67,797 | 003 |
| 112910 |  | Ordering of Side stream filter package | 43d | 2017-08-31 A | 2017-10-30 A | 109790 | 100% |  |  |  |  |  |  | MH-Wtg [45.2 h] | 20,340 | 20,340 | 003 |
| 113101 |  | Ordering of De-alkalizer (Deleted) | 20d | 2017-08-31 A | 2018-01-29 | 109981 |  | 20d | 2017-09-29 | 2017-10-26 | 197d |  |  |  |  |  | 003 |
| 112870.1 |  | Ordering of STG for CPP package | 1d | 2017-09-14 A | 2017-09-14 A |  | 100% |  |  |  |  |  |  |  |  |  | 003 |
| 113101.4 |  | Ordering of PFAlined pumps | 17d | 2017-09-19 A | 2017-10-11 A | 109981.4 | 100% |  |  |  |  |  |  |  |  |  | 003 |
| 112960 |  | Ordering of Metering pumps | 77d | 2017-09-28 A | 2018-01-12 | 109840 | 87% | 10d |  |  | 56d | 0d |  | MH-Wtg [60.26 h] | 27,117 | 23,595 | 003 |
| 112890 |  | Ordering of ETP package | 58d | 2017-09-29 A | 2017-12-19 A | 109770 | 100% |  |  |  |  |  |  | MH-Wtg [241.06 h] | 108,477 | 108,477 | 003 |
| 113101.1 |  | Ordering of Ammonia compressor | 41d | 2017-09-29 A | 2017-11-24 A | 109981.1 | 100% |  |  |  |  |  |  |  |  |  | 003 |
| 112910.1 |  | Ordering of Chlorination package | 44d | 2017-09-30 A | 2017-11-30 A | 109800 | 100% |  | 2017-10-02 | 2017-11-30 |  |  |  | MH-Wtg [25 h] | 11,250 | 11,250 | 003 |
| 113100.4 |  | Ordering of Filters | 65d | 2017-09-30 A | 2017-12-29 A | 109980.4 | 100% |  | 2017-10-02 | 2017-12-29 |  |  |  |  |  |  | 001 |
| 113100.6 |  | Ordering of Mist separator | 13d | 2017-10-10 A | 2017-10-26 A | 109980.6 | 100% |  |  |  |  |  |  |  |  |  | 001 |
| 113101.3 |  | Ordering of Surface condenser pump | 21d | 2017-10-14 A | 2017-11-13 A | 109981.3 | 100% |  | 2017-10-16 | 2017-11-13 |  |  |  |  |  |  | 001 |
| 113101.9.2 |  | Ordering of Rotary vane pumps | 47d | 2017-10-19 A | 2017-12-22 A | 109981.9.2 | 100% |  |  |  |  |  |  |  |  |  | 003 |
| 113101.9.1 |  | Ordering of Platinum filter (Internals) | 34d | 2017-10-28 A | 2017-12-14 A | 109981.9.1 | 100% |  | 2017-10-30 | 2017-12-14 |  |  |  |  |  |  | 001 |
| 113101.9.3 |  | Ordering of Ammonia transfer pumps | 44d | 2017-10-31 A | 2017-12-29 A | 109981.9.3 | 100% |  |  |  |  |  |  |  |  |  | 003 |
| 112970 |  | Ordering of Extended shaft pumps | 51d | 2017-11-01 A | 2018-01-10 | 109850 | 84% | 8d |  |  | 1d | 0d |  | MH-Wtg [46 h] | 20,700 | 17,453 | 003 |
| 113060 |  | Ordering of Desuperheater | 36d | 2017-11-01 A | 2017-12-20 A | 109940 | 100% |  |  |  |  |  |  | MH-Wtg [12 h] | 5,400 | 5,400 | 003 |
| 113100.8 |  | Ordering of Vacuum jet | 43d | 2017-11-01 A | 2017-12-29 A | 109980.8 | 100% |  |  |  |  |  |  |  |  |  | 001 |
| 113101.5 |  | Ordering of Lube oil pumps | 29d | 2017-11-04 A | 2017-12-14 A | 109981.5 | 100% |  | 2017-11-06 | 2017-12-14 |  |  |  |  |  |  | 001 |
| 113030 |  | Ordering of Non-metallic tanks | 50d | 2017-11-05 A | 2018-01-12 | 109910 | 80% | 10d | 2017-11-06 | 2018-01-12 | 87d | 0d |  | MH-Wtg [6 h] | 2,700 | 2,160 | 003 |
| 113040 |  | Ordering of Safety shower/Eye wash | 33d | 2017-11-05 A | 2017-12-20 A | 109920 | 100% |  | 2017-11-06 | 2017-12-20 |  |  |  | MH-Wtg [6 h] | 2,700 | 2,700 | 001 |
| 113101.2 |  | Ordering of Packings/Internals | 19d | 2017-11-15 A | 2017-12-11 A |  | 100% |  |  |  |  |  | finish on or after 2018-02-01 |  |  |  | 002 |
| 113101.8 |  | Ordering of Lift (CNA) | 50d | 2017-11-18 A | 2018-01-29 | 109981.8 | 60% | 20d | 2017-11-20 | 2018-01-29 | 24d | 0d |  |  |  |  | 002 |
| 113101.9.5 |  | Ordering of Condensate transfer pumps | 49d | 2017-11-21 A | 2018-01-29 | 109981.9.5 | 59% | 20d |  |  | 15d | 0d |  |  |  |  | 003 |
| 112900 |  | Ordering of HVAC package | 37d | 2017-11-23 A | 2018-01-12 | 109780 | 73% | 10d |  |  | 27d | 0d |  | MH-Wtg [46 h] | 20,700 | 15,105 | 003 |
| 113100.5 |  | Ordering of Mixer | 40d | 2017-12-02 A | 2018-01-29 | 109980.5 | 50% | 20d | 2017-12-04 | 2018-01-29 | 19d | 0d |  |  |  |  | 001 |
| 113100.2 |  | Ordering of Ammonia scrubber | 27d | 2017-12-07 A | 2018-01-12 | 109980.2 | 63% | 10d |  |  | 38d | 0d |  | MH-Wtg [75.33 h] | 33,899 | 21,344 | 003 |
| 113101.6 |  | Ordering of Lube oil filters | 30d | 2017-12-16 A | 2018-01-29 | 109981.6 | 33% | 20d | 2017-12-18 | 2018-01-29 | 19d | 0d |  |  |  |  | 001 |
| 112932 |  | Ordering of API pumps- Offsites & Utilites (Deleted) | 15d | 2018-01-01 | 2018-01-19 |  |  |  |  |  | 202d |  |  | MH-Wtg |  |  | 003 |
| 113020 |  | Ordering of Plate type exchangers (Deleted) | 20d | 2018-01-01 | 2018-01-29 |  |  |  |  |  | 197d |  |  | MH-Wtg |  |  | 003 |
| 113050 |  | Ordering of Loading arms | 15d | 2018-01-01 | 2018-01-19 | 109930 |  |  |  |  | 49d | 0d |  | MH-Wtg [9 h] | 4,050 |  | 003 |
| 113070 |  | Ordering of Flame arrestors (Deleted) | 10d | 2018-01-01 | 2018-01-12 |  |  |  |  |  | 207d |  |  | MH-Wtg |  |  | 003 |
| 113080 |  | Ordering of Breather valves (Deleted) | 9d | 2018-01-01 | 2018-01-11 |  |  |  |  |  | 208d |  |  | MH-Wtg |  |  | 003 |
| 113090 |  | Ordering of NG station (Deleted) | 15d | 2018-01-01 | 2018-01-19 |  |  |  |  |  | 202d |  |  | MH-Wtg |  |  | 003 |
| 113100 |  | Ordering of EOT Cranes | 15d | 2018-01-01 | 2018-01-19 | 109980 |  |  |  |  | 114d | 0d |  | MH-Wtg [15.07 h] | 6,782 |  | 003 |
| 113100.9 |  | Ordering of Roof vent fan (Deleted) | 20d | 2018-01-01 | 2018-01-29 |  |  |  |  |  | 197d |  |  |  |  |  | 001 |
| 113101.7 |  | Ordering of Inlet air silencer (Deleted) | 20d | 2018-01-01 | 2018-01-29 |  |  |  |  |  | 197d |  |  |  |  |  | 001 |
| 113101.9 |  | Ordering of Chemical skids | 20d | 2018-01-01 | 2018-01-29 | 109981.9 |  |  |  |  | 19d | 0d |  |  |  |  | 001 |
| 113101.9.4 |  | Ordering of Silica gel | 20d | 2018-01-01 | 2018-01-29 | 109981.9.4 |  |  |  |  | 74d | 0d |  |  |  |  | 003 |
| 113101.9.6 |  | Ordering of Ammonia effluent transfer pumps (Mobile) | 20d | 2018-01-01 | 2018-01-29 | 109981.9.6 |  |  |  |  | 87d | 0d |  |  |  |  | 003 |

| ID | WBS | Activity | Duration | Start | Finish | Predecessors | Complete | Remaining | Planned start | Planned finish | Total float | Free float | Constraint | Resources | Cost | Actual cost | UNIT DESCRIPTION |
| --- | --- | --- | --- | --- | --- | --- | --- | --- | --- | --- | --- | --- | --- | --- | --- | --- | --- |
|  | 2 | **Civil & Structural** |  | 2016-10-25 | 2018-01-19 |  |  |  |  |  |  |  |  |  |  |  |  |
| 113106 |  | Ordering of Soil testing | 1d | 2016-10-25 A | 2016-10-25 A | 103249 | 100% |  |  |  |  |  | start on 2016-10-25 | MH-Wtg [120.77 h] | 54,347 | 54,347 | 003 |
| 113111 |  | Ordering of Boundary wall | 39d | 2017-02-01 A | 2017-03-24 A | 110371 | 100% |  |  |  |  |  |  | MH-Wtg [120.77 h] | 54,347 | 54,347 | 003 |
| 113112 |  | Ordering of Pre-fabricated structure | 21d | 2017-02-26 A | 2017-03-24 A | 110372 | 100% |  | 2017-02-27 | 2017-03-24 |  |  |  | MH-Wtg [60.39 h] | 27,176 | 27,176 | 003 |
| 113110 |  | Ordering of Piling work | 18d | 2017-03-16 A | 2017-04-10 A | 110370 | 100% |  |  |  |  |  |  | MH-Wtg [241.54 h] | 108,693 | 108,693 | 003 |
| 113112.1 |  | Ordering of Civil & structural work (Part-I) | 17d | 2017-04-19 A | 2017-05-11 A | 110372.1 | 100% |  |  |  |  |  |  | MH-Wtg [181.16 h] | 81,522 | 81,522 | 003 |
| 113121 |  | Ordering of Roads & drain work (Covered in Part I & II) | 133d | 2017-04-19 A | 2017-10-23 A | 113120 FF | 100% |  |  |  |  |  |  | MH-Wtg [120.77 h] | 54,347 | 54,347 | 003 |
| 113130 |  | Ordering of Architectural work (Covered in Part I & II) | 133d | 2017-04-19 A | 2017-10-23 A | 113120 FF | 100% |  |  |  |  |  |  | MH-Wtg [60.39 h] | 27,176 | 27,176 | 003 |
| 113150 |  | Ordering of Industrial painting (Covered in Part I & II) | 133d | 2017-04-19 A | 2017-10-23 A | 113120 FF | 100% |  |  |  |  |  |  | MH-Wtg [60.39 h] | 27,176 | 27,176 | 003 |
| 113120 |  | Ordering of Civil & structural work (Part-II) | 43d | 2017-08-24 A | 2017-10-23 A | 110380 | 100% |  |  |  |  |  |  | MH-Wtg [181.16 h] | 81,522 | 81,522 | 003 |
| 113140 |  | Ordering of Acid resistant tiling (Covered in Part-II) | 43d | 2017-08-24 A | 2017-10-23 A | 113120 FF | 100% |  |  |  |  |  |  | MH-Wtg [60.39 h] | 27,176 | 27,176 | 003 |
| 114370 |  | Ordering of Boiler precast chimney | 9d | 2017-12-19 A | 2017-12-29 A | 112920 | 100% |  |  |  |  |  |  |  |  |  | 003 |
| 113107 |  | Ordering of Cement (Deleted) | 15d | 2018-01-01 | 2018-01-19 | 103250 |  |  |  |  | 202d |  |  | MH-Wtg |  |  | 003 |
| 113108 |  | Ordering of Reinforcement steel (Deleted) | 15d | 2018-01-01 | 2018-01-19 |  |  |  |  |  | 202d |  |  | MH-Wtg |  |  | 003 |
| 113109 |  | Ordering of Structural steel (Deleted) | 15d | 2018-01-01 | 2018-01-19 | 100590 |  |  |  |  | 202d |  |  | MH-Wtg |  |  | 003 |
|  | 3 | **Mechanical** |  | 2017-03-31 | 2018-03-26 |  |  |  |  |  |  |  |  |  |  |  |  |
| 113170 |  | Ordering of WNA Plant equipments | 215d | 2017-03-31 A | 2018-01-29 | 110580 FF+20d | 91% | 20d |  |  | 77d | 0d |  | MH-Wtg [725 h] | 326,250 | 295,901 | 001 |
| 113180 |  | Ordering of CNA Plant equipments | 94d | 2017-04-24 A | 2017-09-01 A | 110590 SS+20d, 110590 FF+20d | 100% |  |  |  |  |  |  | MH-Wtg [483.08 h] | 217,386 | 217,386 | 002 |
| 113160 |  | Ordering of OSBL equipments | 195d | 2017-04-28 A | 2018-01-29 | 110570 FF+20d | 90% | 20d |  |  | 187d | 0d |  | MH-Wtg [483.08 h] | 217,386 | 195,090 | 003 |
| 113181 |  | Ordering of Absorber foundation bolt & template | 18d | 2017-08-14 A | 2017-09-07 A | 110591 | 100% |  |  |  |  |  |  |  |  |  | 001 |
| 113190 |  | Ordering of Mechanical erection & piping | 16d | 2017-12-02 A | 2017-12-25 A | 110600 | 100% |  | 2017-12-04 | 2017-12-25 |  |  |  | MH-Wtg [483.08 h] | 217,386 | 217,386 | 003 |
| 113180.1 |  | Ordering of additional scope (MOM-078) equipments | 20d | 2018-02-23 | 2018-03-22 | 110590.1 |  |  |  |  | 10d | 0d |  |  |  |  | 003 |
| 113200 |  | Ordering of Insulation | 20d | 2018-02-27 | 2018-03-26 | 110610 |  |  |  |  | 67d | 0d |  | MH-Wtg [241.54 h] | 108,693 |  | 003 |
|  | 4 | **Piping** |  | 2017-11-25 | 2018-04-03 |  |  |  |  |  |  |  |  |  |  |  |  |
| 113210 |  | Ordering of Pipes | 55d | 2017-11-25 A | 2018-02-12 | 110890 FF+15d | 82% | 10d | 2017-11-27 | 2018-02-12 | 29d | 0d |  | MH-Wtg [269.04 h] | 121,068 | 99,056 | 003 |
| 113240 |  | Ordering of Valves | 37d | 2017-12-07 A | 2018-01-29 | 110920 | 46% | 20d |  |  | 32d | 0d |  | MH-Wtg [358.73 h] | 161,429 | 74,170 | 003 |
| 113230 |  | Ordering of Flanges | 16d | 2017-12-22 A | 2018-01-12 | 110910 | 38% | 10d |  |  | 40d | 0d |  | MH-Wtg [269.04 h] | 121,068 | 45,401 | 003 |
| 113220 |  | Ordering of Fittings | 30d | 2018-01-01 | 2018-02-12 | 110900 SS |  |  |  |  | 34d | 0d |  | MH-Wtg [269.04 h] | 121,068 |  | 003 |
| 113290 |  | Ordering of Stud bolts | 10d | 2018-02-08 | 2018-02-22 | 110970 |  |  |  |  | 40d | 0d |  | MH-Wtg [89.68 h] | 40,356 |  | 003 |
| 113260 |  | Ordering of Steam traps | 15d | 2018-02-13 | 2018-03-05 | 110940 |  |  |  |  | 29d | 0d |  | MH-Wtg [179.36 h] | 80,712 |  | 003 |
| 113280 |  | Ordering of Gaskets | 10d | 2018-02-15 | 2018-03-01 | 110960 |  |  |  |  | 60d | 0d |  | MH-Wtg [89.68 h] | 40,356 |  | 003 |
| 113310.1 |  | Ordering of Expansion bellows | 15d | 2018-02-20 | 2018-03-12 | 110990.1 |  |  |  |  | 24d | 0d |  | MH-Wtg [71.75 h] | 32,288 |  | 003 |
| 113250 |  | Ordering of Strainers | 13d | 2018-02-23 | 2018-03-13 | 110930 |  |  |  |  | 1d | 0d |  | MH-Wtg [89.68 h] | 40,356 |  | 003 |
| 113270 |  | Ordering of Sight glass | 20d | 2018-03-06 | 2018-04-02 | 110950 |  |  |  |  | 9d | 0d |  | MH-Wtg [44.84 h] | 20,178 |  | 003 |
| 113300 |  | Ordering of Primary supports | 10d | 2018-03-06 | 2018-03-19 | 110980 |  |  |  |  | 22d | 0d |  | MH-Wtg [26.9 h] | 12,105 |  | 003 |
| 113310 |  | Ordering of Special supports | 15d | 2018-03-13 | 2018-04-03 | 110990 |  |  |  |  | 9d | 0d |  | MH-Wtg [53.81 h] | 24,215 |  | 003 |

| ID | WBS | Activity | Duration | Start | Finish | Predecessors | Complete | Remaining | Planned start | Planned finish | Total float | Free float | Resources | Cost | Actual cost | UNIT DESCRIPTION |
| --- | --- | --- | --- | --- | --- | --- | --- | --- | --- | --- | --- | --- | --- | --- | --- | --- |
|  | 5 | **Electrical** |  | 2017-04-27 | 2018-05-04 |  |  |  |  |  |  |  |  |  |  |  |
| 113580.3 |  | Ordering of Compact substation | 29d | 2017-04-27 A | 2017-06-06 A | 111960.3 | 100% |  |  |  |  |  |  |  |  | 003 |
| 113580.2 |  | Ordering of Construction power | 1d | 2017-06-14 A | 2017-06-14 A | 111960.2 | 100% |  |  |  |  |  |  |  |  | 003 |
| 113320 |  | Ordering of Transformers | 32d | 2017-07-27 A | 2017-09-11 A | 111700 | 100% |  |  |  |  |  | MH-Wtg [181.16 h] | 81,522 | 81,522 | 003 |
| 113330 |  | Ordering of HT panel | 40d | 2017-08-19 A | 2017-10-13 A | 111710 | 100% |  | 2017-08-21 | 2017-10-13 |  |  | MH-Wtg [90.58 h] | 40,761 | 40,761 | 003 |
| 113340 |  | Ordering of HT PCC | 40d | 2017-08-19 A | 2017-10-13 A | 111720 | 100% |  | 2017-08-21 | 2017-10-13 |  |  | MH-Wtg [90.58 h] | 40,761 | 40,761 | 003 |
| 113410 |  | Ordering of NGR | 71d | 2017-08-23 A | 2017-11-29 A | 111790 | 100% |  |  |  |  |  | MH-Wtg [36.23 h] | 16,304 | 16,304 | 003 |
| 113460 |  | Ordering of HT cables | 20d | 2017-09-09 A | 2017-10-06 A | 111840 | 100% |  | 2017-09-11 | 2017-10-06 |  |  | MH-Wtg [36.23 h] | 16,304 | 16,304 | 003 |
| 113380 |  | Ordering of DG | 51d | 2017-09-19 A | 2017-11-28 A | 111760 | 100% |  |  |  |  |  | MH-Wtg [54.35 h] | 24,458 | 24,458 | 003 |
| 113390 |  | Ordering of UPS | 30d | 2017-09-23 A | 2017-11-03 A | 111770 | 100% |  | 2017-09-25 | 2017-11-03 |  |  | MH-Wtg [27.17 h] | 12,227 | 12,227 | 003 |
| 113450 |  | Ordering of VFD | 45d | 2017-09-30 A | 2017-12-01 A | 111830 | 100% |  | 2017-10-02 | 2017-12-01 |  |  | MH-Wtg [90.58 h] | 40,761 | 40,761 | 003 |
| 113350 |  | Ordering of LT PCC | 53d | 2017-10-18 A | 2017-12-29 A | 111730 | 100% |  |  |  |  |  | MH-Wtg [90.58 h] | 40,761 | 40,761 | 003 |
| 113360 |  | Ordering of MCC | 53d | 2017-10-18 A | 2017-12-29 A | 111740 | 100% |  |  |  |  |  | MH-Wtg [90.58 h] | 40,761 | 40,761 | 003 |
| 113400 |  | Ordering of Battery and battery charger | 52d | 2017-10-19 A | 2017-12-29 A | 111780 | 100% |  |  |  |  |  | MH-Wtg [27.17 h] | 12,227 | 12,227 | 003 |
| 113420 |  | Ordering of Buss duct | 28d | 2017-10-25 A | 2017-12-02 A | 111800 | 100% |  | 2017-10-25 | 2017-12-01 |  |  | MH-Wtg [36.23 h] | 16,304 | 16,304 | 003 |
| 113430 |  | Ordering of HT motors | 38d | 2017-11-01 A | 2017-12-22 A | 111810 | 100% |  |  |  |  |  | MH-Wtg [54.35 h] | 24,458 | 24,458 | 003 |
| 113370 |  | Ordering of APFC panel | 30d | 2017-11-18 A | 2017-12-29 A | 111750 | 100% |  | 2017-11-20 | 2017-12-29 |  |  | MH-Wtg [27.17 h] | 12,227 | 12,227 | 003 |
| 113440 |  | Ordering of LT motors | 32d | 2017-12-14 A | 2018-01-29 | 111820 | 38% | 20d |  |  | 109d | 0d | MH-Wtg [54.35 h] | 24,458 | 9,172 | 003 |
| 113500 |  | Ordering of Local control stations | 22d | 2017-12-28 A | 2018-01-29 | 111880 | 9% | 20d |  |  | 63d | 0d | MH-Wtg [36.23 h] | 16,304 | 1,482 | 003 |
| 113319 |  | Ordering of Switchyard (Deleted) | 20d | 2018-01-01 | 2018-01-29 |  |  |  |  |  | 197d |  | MH-Wtg |  |  | 003 |
| 113480 |  | Ordering of Control cables (Deleted) | 20d | 2018-01-01 | 2018-01-29 |  |  |  |  |  | 197d |  | MH-Wtg |  |  | 003 |
| 113490 |  | Ordering of Jointing kits (Deleted) | 20d | 2018-01-01 | 2018-01-29 |  |  |  |  |  | 197d |  | MH-Wtg |  |  | 003 |
| 113520 |  | Ordering of Lighting transformers (Deleted) | 20d | 2018-01-01 | 2018-01-29 |  |  |  |  |  | 197d |  | MH-Wtg |  |  | 003 |
| 113530 |  | Ordering of Cable tray | 16d | 2018-01-01 | 2018-01-22 | 111910 |  |  |  |  | 35d | 0d | MH-Wtg [36.23 h] | 16,304 |  | 003 |
| 113550 |  | Ordering of Earthing strips (Deleted) | 20d | 2018-01-01 | 2018-01-29 |  |  |  |  |  | 197d |  | MH-Wtg |  |  | 003 |
| 113560 |  | Ordering of Lightening arrestors (Deleted) | 20d | 2018-01-01 | 2018-01-29 |  |  |  |  |  | 197d |  | MH-Wtg |  |  | 003 |
| 113570 |  | Ordering of PA system | 20d | 2018-01-01 | 2018-01-29 | 111950 |  |  |  |  | 55d | 0d | MH-Wtg [54.35 h] | 24,458 |  | 003 |
| 113371 |  | Ordering of HT Capacitor bank | 18d | 2018-01-22 | 2018-02-15 | 111751 |  |  |  |  | 21d | 0d |  |  |  | 003 |
| 113470 |  | Ordering of LT cables | 20d | 2018-01-22 | 2018-02-19 | 111850 |  |  |  |  | 61d | 0d | MH-Wtg [36.23 h] | 16,304 |  | 003 |
| 113570.1 |  | Ordering of EPBAX system | 20d | 2018-01-30 | 2018-02-26 | 111950.1 |  |  |  |  | 40d | 0d |  |  |  | 003 |
| 113590 |  | Ordering of Electrical installation | 20d | 2018-02-01 | 2018-02-28 | 111970 |  |  |  |  | 40d | 0d | MH-Wtg [90.58 h] | 40,761 |  | 003 |
| 113540 |  | Ordering of Light fittings | 11d | 2018-02-06 | 2018-02-20 | 111920 |  |  |  |  | 82d | 0d | MH-Wtg [27.17 h] | 12,227 |  | 003 |
| 113390.1 |  | Ordering of UMPS | 20d | 2018-02-27 | 2018-03-26 | 111770.1 |  |  |  |  | 16d | 0d |  |  |  | 003 |
| 113580 |  | Ordering of CCTV | 15d | 2018-02-27 | 2018-03-19 | 111960 |  |  |  |  | 25d | 0d | MH-Wtg [54.35 h] | 24,458 |  | 003 |
| 113510 |  | Ordering of Misc. panels | 20d | 2018-03-20 | 2018-04-16 | 111890 |  |  |  |  | 54d | 0d | MH-Wtg [27.17 h] | 12,227 |  | 003 |
| 113580.1 |  | Ordering of Electrical heat tracing | 20d | 2018-04-06 | 2018-05-04 | A113521 SF-41d |  |  |  |  | 119d | 0d | MH-Wtg [54.35 h] | 24,458 |  | 002 |

Notes:
- 113580.2: Explanation: PO copy not provided

| ID | WBS | Activity | Duration | Start | Finish | Predecessors | Complete | Remaining | Planned start | Planned finish | Total float | Free float | Resources | Cost | Actual cost | UNIT DESCRIPTION |
| --- | --- | --- | --- | --- | --- | --- | --- | --- | --- | --- | --- | --- | --- | --- | --- | --- |
|  | 6 | **Instrumentation** |  | 2017-05-09 | 2018-03-26 |  |  |  |  |  |  |  |  |  |  |  |
| 113710 |  | Ordering of Weigh bridge | 92d | 2017-05-09 A | 2017-09-14 A | 112660 | 100% |  |  |  |  |  | MH-Wtg [54.35 h] | 24,458 | 24,458 | 003 |
| 113680.3 |  | Ordering ofVibration montoring system | 140d | 2017-05-19 A | 2017-12-02 A | 112630.3 | 100% |  | 2017-05-19 | 2017-12-01 |  |  | MH-Wtg [73 h] | 32,850 | 32,850 | 001 |
| 113600 |  | Ordering of DCS system | 81d | 2017-06-14 A | 2017-10-05 A | 112550 | 100% |  |  |  |  |  | MH-Wtg [181 h] | 81,450 | 81,450 | 003 |
| 113611 |  | Ordering of Control valves- CNA Plants | 45d | 2017-07-21 A | 2017-09-22 A | 112561 | 100% |  |  |  |  |  | MH-Wtg [27.17 h] | 12,227 | 12,227 | 002 |
| 113612.1 |  | Ordering of On/Off valves- WNA Plant | 29d | 2017-08-29 A | 2017-10-06 A | 112570 | 100% |  |  |  |  |  | MH-Wtg [20 h] | 9,000 | 9,000 | 001 |
| 113621 |  | Ordering of On/Off valves- CNA Plants | 29d | 2017-08-29 A | 2017-10-06 A | 112571 | 100% |  |  |  |  |  | MH-Wtg [27.17 h] | 12,227 | 12,227 | 002 |
| 113621.1 |  | Ordering of On/Off valves- Offsites & Utilities | 29d | 2017-08-29 A | 2017-10-06 A | 112572 | 100% |  |  |  |  |  | MH-Wtg [40 h] | 18,000 | 18,000 | 003 |
| 113642 |  | Ordering of Flow meters- Offsites & Utilities | 94d | 2017-09-19 A | 2018-01-29 | 112592 | 79% | 20d |  |  | 187d | 0d | MH-Wtg [90.58 h] | 40,761 | 32,088 | 003 |
| 113612 |  | Ordering of Control valves- Offsites & Utilities | 34d | 2017-09-22 A | 2017-11-08 A | 112562 | 100% |  |  |  |  |  | MH-Wtg [45.29 h] | 20,381 | 20,381 | 003 |
| 113610 |  | Ordering of Control valves- WNA Plant | 34d | 2017-09-22 A | 2017-11-08 A | 112560 | 100% |  |  |  |  |  | MH-Wtg [108.69 h] | 48,911 | 48,911 | 001 |
| 113680.4 |  | Ordering of Anti surge controller | 50d | 2017-09-23 A | 2017-12-02 A | 112630.4 | 100% |  | 2017-09-25 | 2017-12-01 |  |  | MH-Wtg [54.35 h] | 24,458 | 24,458 | 001 |
| 113680.5 |  | Ordering of Governor | 50d | 2017-09-23 A | 2017-12-02 A | 112630.5 | 100% |  | 2017-09-25 | 2017-12-01 |  |  | MH-Wtg [54.35 h] | 24,458 | 24,458 | 001 |
| 113640 |  | Ordering of Flow meters- WNA Plant | 67d | 2017-10-26 A | 2018-01-29 | 112590 | 70% | 20d |  |  | 197d |  | MH-Wtg [45.29 h] | 20,381 | 14,297 | 001 |
| 113641 |  | Ordering of Flow meters- CNA Plants | 67d | 2017-10-26 A | 2018-01-29 | 112591 | 70% | 20d |  |  | 197d |  | MH-Wtg [27.17 h] | 12,227 | 8,577 | 002 |
| 113651 |  | Ordering of Analysers/Gas detectors- CNA Plants | 57d | 2017-11-02 A | 2018-01-19 | 112601 | 74% | 15d |  |  | 41d | 0d | MH-Wtg [21.74 h] | 9,783 | 7,209 | 002 |
| 113652 |  | Ordering of Analysers/Gas detectors- Offsites & Utilities | 57d | 2017-11-02 A | 2018-01-19 | 112602 | 74% | 15d |  |  | 192d | 0d | MH-Wtg [36.23 h] | 16,304 | 12,013 | 003 |
| 113631.1 |  | Ordering of DIN Rail Transmitters- CNA Plant (Deleted) | 20d | 2018-01-01 | 2018-01-29 |  |  |  |  |  | 197d |  |  |  |  | 002 |
| 113650 |  | Ordering of Analysers/Gas detectors- WNA Plant (Deleted) | 14d | 2018-01-01 | 2018-01-18 |  |  |  |  |  | 203d |  | MH-Wtg |  |  | 001 |
| 113670 |  | Ordering of Switches- WNA Plant (Deleted) | 20d | 2018-01-01 | 2018-01-29 |  |  |  |  |  | 197d |  | MH-Wtg |  |  | 001 |
| 113671 |  | Ordering of Switches- CNA Plants (Deleted) | 20d | 2018-01-01 | 2018-01-29 |  |  |  |  |  | 197d |  | MH-Wtg |  |  | 002 |
| 113681 |  | Ordering of Cable trays | 16d | 2018-01-01 | 2018-01-22 | 112631 |  |  |  |  | 50d | 0d | MH-Wtg [36.23 h] | 16,304 |  | 003 |
| 113682 |  | Ordering of Instrument cables | 15d | 2018-01-01 | 2018-01-19 | 112632 |  |  |  |  | 99d | 0d | MH-Wtg [36.23 h] | 16,304 |  | 003 |
| 113700 |  | Ordering of bulk materials (Deleted) | 20d | 2018-01-01 | 2018-01-29 |  |  |  |  |  | 197d |  | MH-Wtg |  |  | 003 |
| 113630 |  | Ordering of Transmitters- WNA Plant | 20d | 2018-01-17 | 2018-02-14 | 112580 |  |  |  |  | 25d | 0d | MH-Wtg [49 h] | 22,050 |  | 001 |
| 113631 |  | Ordering of Transmitters- CNA Plants | 20d | 2018-01-30 | 2018-02-26 | 112581 |  |  |  |  | 167d | 0d | MH-Wtg [239 h] | 107,550 |  | 002 |
| 113632 |  | Ordering of Transmitters- Offsites & Utilities | 20d | 2018-01-30 | 2018-02-26 | 112582 |  |  |  |  | 167d | 0d | MH-Wtg [192 h] | 86,400 |  | 003 |
| 113660 |  | Ordering of Saftey items- WNA Plant | 15d | 2018-01-30 | 2018-02-19 | 112610 |  |  |  |  | 21d | 0d | MH-Wtg [54.35 h] | 24,458 |  | 001 |
| 113661 |  | Ordering of Saftey items- CNA Plants | 15d | 2018-01-30 | 2018-02-19 | 112611 |  |  |  |  | 172d | 0d | MH-Wtg [12.68 h] | 5,706 |  | 002 |
| 113662 |  | Ordering of Saftey items- Offsites & Utilities | 15d | 2018-01-30 | 2018-02-19 | 112612 |  |  |  |  | 172d | 0d | MH-Wtg [23 h] | 10,350 |  | 003 |
| 113680 |  | Ordering of Gauges- WNA Plant | 20d | 2018-01-30 | 2018-02-26 | 112630 |  |  |  |  | 16d | 0d | MH-Wtg [50.72 h] | 22,824 |  | 001 |
| 113680.1 |  | Ordering of Gauges- CNA Plants | 20d | 2018-01-30 | 2018-02-26 | 112630.1 |  |  |  |  | 167d | 0d | MH-Wtg [12.68 h] | 5,706 |  | 002 |
| 113680.2 |  | Ordering of Gauges- Offsites & Utilities | 20d | 2018-01-30 | 2018-02-26 | 112630.2 |  |  |  |  | 167d | 0d | MH-Wtg [27.17 h] | 12,227 |  | 003 |
| 113720 |  | Ordering of Fire alarm system | 20d | 2018-01-30 | 2018-02-26 | 112670 |  |  |  |  | 30d | 0d | MH-Wtg [54.35 h] | 24,458 |  | 003 |
| 113690 |  | Ordering of Junction boxes | 15d | 2018-02-06 | 2018-02-26 | 112640 |  |  |  |  | 62d | 0d | MH-Wtg [36.23 h] | 16,304 |  | 003 |
| 113730 |  | Ordering of Instrument installation | 20d | 2018-02-13 | 2018-03-12 | 112680 |  |  |  |  | 49d | 0d | MH-Wtg [90.58 h] | 40,761 |  | 003 |
| 113672 |  | Ordering of Switches- Offsites & Utilities | 20d | 2018-02-27 | 2018-03-26 | 112622 |  |  |  |  | 147d | 0d | MH-Wtg [15 h] | 6,750 |  | 003 |

| ID | WBS | Activity | Duration | Start | Finish | Predecessors | Complete | Remaining | Total float | Free float | Resources | Cost | Actual cost | UNIT DESCRIPTION |
| --- | --- | --- | --- | --- | --- | --- | --- | --- | --- | --- | --- | --- | --- | --- |
|  | 2 | **Manufacturing, Inspection, Expediting & Delivery** |  | 2017-03-24 | 2018-09-18 |  |  |  |  |  |  |  |  |  |
|  | 1 | **Process Boughtout & Pakages** |  | 2017-04-28 | 2018-09-14 |  |  |  |  |  |  |  |  |  |
| 114790 |  | Mfg. & delivery of Agitators | 155d | 2017-04-28 A | 2017-12-01 A | 112980 | 100% |  |  |  | MH-Wtg [130 h] | 58,500 | 58,500 | 002 |
| 115000 |  | Mfg. & delivery of Chiller unit | 124d | 2017-06-20 A | 2017-12-11 A | 113010 | 100% |  |  |  | MH-Wtg [759 h] | 341,550 | 341,550 | 003 |
| 113810 |  | Mfg. & delivery of Raw water treatment plant | 142d | 2017-06-28 A | 2018-01-12 | 112840 | 93% | 10d | 57d | 41d | MH-Wtg [2028 h] | 912,600 | 848,332 | 003 |
| 113950 |  | Mfg. & delivery of DM plant | 142d | 2017-06-28 A | 2018-01-12 | 112860 | 93% | 10d | 65d | 54d | MH-Wtg [757 h] | 340,650 | 316,661 | 003 |
| 113880 |  | Mfg. & delivery of Cooling tower package | 186d | 2017-07-19 A | 2018-04-06 | 112850 | 63% | 69d | 51d | 36d | MH-Wtg [2028 h] | 912,600 | 574,055 | 003 |
| 113740 |  | Mfg. & delivery of Fire fighting package | 186d | 2017-07-26 A | 2018-04-13 | 112830 | 60% | 74d | 4d | 0d | MH-Wtg [2530 h] | 1,138,500 | 685,548 | 003 |
| 114020 |  | Mfg. & delivery of Boiler for CPP package | 176d | 2017-07-27 A | 2018-04-02 | 112870 | 63% | 65d | 1d | 0d | MH-Wtg [2530 h] | 1,138,500 | 718,031 | 003 |
| 114860 |  | Mfg. & delivery of Air compressors | 140d | 2017-08-16 A | 2018-02-28 | 112990 | 70% | 42d | 23d | 13d | MH-Wtg [757 h] | 340,650 | 238,455 | 003 |
| 114930 |  | Mfg. & delivery of Air drier | 140d | 2017-08-16 A | 2018-02-28 | 113000 | 70% | 42d | 53d | 0d | MH-Wtg [508 h] | 228,600 | 160,020 | 003 |
| 119590.5 |  | Mfg. & delivery of Deareator | 88d | 2017-09-06 A | 2018-01-05 | 113100.7 | 94% | 5d | 112d |  |  |  |  | 001 |
| 114020.1 |  | Mfg. & delivery of STG for CPP package | 176d | 2017-09-14 A | 2018-05-18 |  | 44% | 99d | 21d | 0d |  |  |  | 003 |
| 114440 |  | Mfg. & delivery of Non-API pumps (WNA) | 154d | 2017-09-18 A | 2018-04-20 | 112930 | 49% | 79d | 33d |  | MH-Wtg [912 h] | 410,400 | 199,870 | 002 |
| 114510 |  | Mfg. & delivery of Non-API pumps (Offsites) | 142d | 2017-09-18 A | 2018-04-04 | 112940 | 53% | 67d | 55d | 7d | MH-Wtg [3190 h] | 1,435,500 | 758,187 | 003 |
| 114580 |  | Mfg. & delivery of Cooling water pumps | 142d | 2017-09-20 A | 2018-04-06 | 112950 | 51% | 69d | 36d | 21d | MH-Wtg [1265 h] | 569,250 | 292,643 | 003 |
| 119590.1 |  | Mfg. & delivery of Inlet air filter | 132d | 2017-09-26 A | 2018-03-29 | 113100.3 | 52% | 63d | 54d | 22d |  |  |  | 001 |
| 114440.1 |  | Mfg. & delivery ofAPI pumps (CNA) | 132d | 2017-10-06 A | 2018-04-10 | 112931 | 46% | 71d | 23d | 0d |  |  |  | 002 |
| 119590.93 |  | Mfg. & delivery of PFA lined pumps | 132d | 2017-10-11 A | 2018-04-13 | 113101.4 | 44% | 74d | 53d | 6d |  |  |  | 003 |
| 119390 |  | Mfg. & delivery of Ejectors | 96d | 2017-10-26 A | 2018-03-09 | 113100.1 | 49% | 49d | 75d | 60d | MH-Wtg [633 h] | 284,850 | 139,458 | 001 |
| 119590.4 |  | Mfg. & delivery of Mist separator | 88d | 2017-10-26 A | 2018-02-27 | 113100.6 | 53% | 41d | 81d |  |  |  |  | 001 |
| 114300 |  | Mfg. & delivery of Side stream filter package | 120d | 2017-10-30 A | 2018-04-16 | 112910 | 38% | 75d | 35d | 20d | MH-Wtg [379 h] | 170,550 | 63,956 | 003 |
| 119590.92 |  | Mfg. & delivery of Surface condenser pump | 132d | 2017-11-14 A | 2018-05-17 | 113101.3 | 26% | 98d | 29d |  |  |  |  | 001 |
| 119590.91 |  | Mfg. & delivery of Packings/Internals | 88d | 2017-11-15 A | 2018-03-19 | 113101.2 | 38% | 55d | 74d | 59d |  |  |  | 002 |
| 119590.9 |  | Mfg. & delivery of Ammonia compressor | 110d | 2017-11-24 A | 2018-04-27 | 113101.1 | 24% | 84d | 57d | 0d |  |  |  | 003 |
| 114300.1 |  | Mfg. & delivery of Chlorination package | 120d | 2017-11-30 A | 2018-05-17 | 112910.1 | 18% | 98d | 119d |  | MH-Wtg [250 h] | 112,500 | 20,625 | 003 |
| 119590.94 |  | Mfg. & delivery of Lube oil pumps | 87d | 2017-12-14 A | 2018-04-16 | 113101.5 | 14% | 75d | 52d |  |  |  |  | 001 |
| 114160 |  | Mfg. & delivery of ETP package | 108d | 2017-12-19 A | 2018-05-18 | 112890 | 8% | 99d | 0d |  | MH-Wtg [2028 h] | 912,600 | 76,050 | 003 |
| 115210 |  | Mfg. & delivery of Safety shower/Eye wash | 88d | 2017-12-20 A | 2018-04-23 | 113040 | 9% | 80d | 47d |  | MH-Wtg [52 h] | 23,400 | 2,127 | 003 |
| 115350 |  | Mfg. & delivery of Desuperheater | 98d | 2017-12-20 A | 2018-05-07 | 113060 | 8% | 90d | 86d |  | MH-Wtg [104 h] | 46,800 | 3,820 | 003 |
| 119590.99.1 |  | Mfg. & delivery of Rotary vane pumps | 88d | 2017-12-22 A | 2018-04-25 | 113101.9.2 | 7% | 82d | 69d | 67d |  |  |  | 003 |
| 119590.2 |  | Mfg. & delivery of Filters | 150d | 2017-12-29 A | 2018-07-27 | 113100.4 | 1% | 149d | 3d |  |  |  |  | 001 |
| 119590.6 |  | Mfg. & delivery of Vacuum jet | 88d | 2017-12-29 A | 2018-05-02 | 113100.8 | 1% | 87d | 40d |  |  |  |  | 001 |
| 119590.99.2 |  | Mfg. & delivery of Ammonia transfer pumps | 150d | 2017-12-29 A | 2018-07-27 | 113101.9.3 | 1% | 149d | 2d | 0d |  |  |  | 003 |
| 115070 |  | Mfg. & delivery of Plate type exchangers (Deleted) | 184d | 2018-01-01 | 2018-09-14 |  |  |  | 33d |  | MH-Wtg |  |  | 003 |
| 115420 |  | Mfg. & delivery of Flame arrestors (Deleted) | 118d | 2018-01-01 | 2018-06-14 |  |  |  | 99d |  | MH-Wtg |  |  | 003 |
| 115490 |  | Mfg. & delivery of Breather valves (Deleted) | 119d | 2018-01-01 | 2018-06-15 |  |  |  | 98d |  | MH-Wtg |  |  | 003 |
| 115560 |  | Mfg. & delivery of NG Station (Deleted) | 140d | 2018-01-01 | 2018-07-16 |  |  |  | 77d |  | MH-Wtg |  |  | 003 |
| 119590.7 |  | Mfg. & delivery of Roof vent fan (Deleted) | 88d | 2018-01-01 | 2018-05-03 |  |  |  | 129d |  |  |  |  | 001 |
| 119590.8 |  | Mfg. & delivery of De-alkalizer (Deleted) | 88d | 2018-01-01 | 2018-05-03 |  |  |  | 129d |  |  |  |  | 003 |
| 119590.96 |  | Mfg. & delivery of Inlet air silencer (Deleted) | 88d | 2018-01-01 | 2018-05-03 |  |  |  | 129d |  |  |  |  | 001 |
| 119590.99 |  | Mfg. & delivery of Platinum filter (Internals) | 88d | 2018-01-01 | 2018-05-03 | 113101.9.1 |  |  | 39d |  |  |  |  | 001 |
| 114720 |  | Mfg. & delivery of Extended shaft pumps | 80d | 2018-01-11 | 2018-05-03 | 112970 |  |  | 1d | 0d | MH-Wtg [389 h] | 175,050 |  | 003 |
| 114230 |  | Mfg. & delivery of HVAC package | 88d | 2018-01-15 | 2018-05-17 | 112900 |  |  | 27d | 0d | MH-Wtg [385 h] | 173,250 |  | 003 |
| 114650 |  | Mfg. & delivery of Metering pumps | 88d | 2018-01-15 | 2018-05-17 | 112960 |  |  | 56d | 0d | MH-Wtg [508 h] | 228,600 |  | 003 |
| 115140 |  | Mfg. & delivery of Non-metallic tanks | 120d | 2018-01-15 | 2018-07-02 | 113030 |  |  | 87d |  | MH-Wtg [52 h] | 23,400 |  | 003 |
| 119590 |  | Mfg. & delivery of Ammonia scrubber | 88d | 2018-01-15 | 2018-05-17 | 113100.2 |  |  | 38d | 0d | MH-Wtg [633 h] | 284,850 |  | 003 |
| 115280 |  | Mfg. & delivery of Loading arms | 88d | 2018-01-22 | 2018-05-24 | 113050 |  |  | 49d | 0d | MH-Wtg [78 h] | 35,100 |  | 003 |
| 115630 |  | Mfg. & delivery of EOT Cranes | 88d | 2018-01-22 | 2018-05-24 | 113100 |  |  | 114d |  | MH-Wtg [124 h] | 55,800 |  | 003 |
| 119590.3 |  | Mfg. & delivery of Mixer | 88d | 2018-01-30 | 2018-05-31 | 113100.5 |  |  | 19d |  |  |  |  | 001 |
| 119590.95 |  | Mfg. & delivery of Lube oil filters | 88d | 2018-01-30 | 2018-05-31 | 113101.6 |  |  | 19d |  |  |  |  | 001 |
| 119590.97 |  | Mfg. & delivery of Lift (CNA) | 110d | 2018-01-30 | 2018-07-02 | 113101.8 |  |  | 24d |  |  |  |  | 002 |
| 119590.98 |  | Mfg. & delivery of Chemical skids | 88d | 2018-01-30 | 2018-05-31 | 113101.9 |  |  | 19d |  |  |  |  | 001 |
| 119590.99.3 |  | Mfg. & delivery of Silica gel | 88d | 2018-01-30 | 2018-05-31 | 113101.9.4 |  |  | 74d | 25d |  |  |  | 003 |
| 119590.99.4 |  | Mfg. & delivery of Condensate transfer pumps | 88d | 2018-01-30 | 2018-05-31 | 113101.9.5 |  |  | 15d | 5d |  |  |  | 003 |
| 119590.99.5 |  | Mfg. & delivery of Ammonia effluent transfer pumps (Mobile) | 110d | 2018-01-30 | 2018-07-02 | 113101.9.6 |  |  | 87d |  |  |  |  | 003 |

Notes:
- 115420: Steps: (New step)

| ID | WBS | Activity | Duration | Start | Finish | Predecessors | Complete | Remaining | Total float | Free float | Constraint | Resources | Cost | Actual cost | UNIT DESCRIPTION |
| --- | --- | --- | --- | --- | --- | --- | --- | --- | --- | --- | --- | --- | --- | --- | --- |
|  | 2 | **Civil Construction Materials** |  | 2017-03-24 | 2018-05-02 |  |  |  |  |  |  |  |  |  |  |
| 115790 |  | PEB Structure | 92d | 2017-03-24 A | 2017-07-31 A | 113112 | 100% |  |  |  | finish on or before 2017-07-09 | MH-Wtg [1820 h] | 819,000 | 819,000 | 003 |
| 115700 |  | MRO and delivery of cement at site (Deleted) | 65d | 2018-01-01 | 2018-04-02 |  |  |  | 152d |  |  | MH-Wtg |  |  | 003 |
| 115710 |  | MRO and delivery of reinforcement steel at site (Deleted) | 87d | 2018-01-01 | 2018-05-02 |  |  |  | 130d |  |  | MH-Wtg |  |  | 003 |
| 115720 |  | MRO and delivery of structural steel at site (Deleted) | 87d | 2018-01-01 | 2018-05-02 |  |  |  | 130d |  |  | MH-Wtg |  |  | 003 |
|  | 3 | **Fabricated Equipments** |  | 2017-04-05 | 2018-07-16 |  |  |  |  |  |  |  |  |  |  |
|  | 1 | **OSBL Equipments** |  | 2017-06-06 | 2018-06-18 |  |  |  |  |  |  |  |  |  |  |
| 115740 |  | Mfg. & delivery of Ammonia storage tanks | 230d | 2017-06-06 A | 2018-04-25 | 113160 SS+20d | 64% | 82d | 27d | 0d |  |  |  |  | 003 |
| 115730 |  | Mfg. & delivery of CNA storage tanks | 220d | 2017-06-09 A | 2018-04-16 | 113160 SS | 66% | 75d | 34d | 0d |  | MH-Wtg [952 h] | 428,400 | 282,355 | 003 |
| 115750 |  | Mfg. & delivery of Offsite tanks & vessels | 142d | 2017-08-16 A | 2018-03-02 | 113160 | 69% | 44d | 44d | 0d |  |  |  |  | 003 |
| 115780 |  | Mfg & delivery of Double pipe heat exchangers | 88d | 2017-12-15 A | 2018-04-18 | 113160 FS-15d | 12% | 77d | 52d | 29d |  |  |  |  | 003 |
| 115760 |  | Mfg. & delivery of Ammonial vaporiser (Deleted) | 120d | 2018-01-01 | 2018-06-18 |  |  |  | 97d |  |  |  |  |  | 003 |
| 115770 |  | Mfg. & delivery of Ammonia condenser (Deleted) | 120d | 2018-01-01 | 2018-06-18 |  |  |  | 97d |  |  |  |  |  | 003 |
| 115920 |  | Mfg & delivery of additional scope (MOM-078) equipments | 60d | 2018-03-23 | 2018-06-14 | 113180.1 |  |  | 10d | 0d |  |  |  |  | 003 |
|  | 2 | **WNA Plant equipments** |  | 2017-04-06 | 2018-07-16 |  |  |  |  |  |  |  |  |  |  |
| 115810 |  | Mfg. & delivery of VGH package (KBR) | 242d | 2017-04-06 A | 2018-03-13 |  | 79% | 51d | 46d | 31d | start on 2017-04-06 |  |  |  | 001 |
| 115800 |  | Mfg. & delivery of IBR long delivery equipments | 220d | 2017-06-06 A | 2018-04-11 | 113170 SS | 67% | 72d | 15d | 0d |  | MH-Wtg [4227 h] | 1,902,150 | 1,279,628 | 001 |
| 115840 |  | Mfg. & delvery of Intercooler tube bundles | 160d | 2017-07-05 A | 2018-02-15 | 113170 SS+40d | 79% | 33d | 79d |  |  |  |  |  | 001 |
| 115820 |  | Mfg. & delivery of Ammonia vaporizer | 150d | 2017-09-01 A | 2018-03-30 | 113170 SS+20d | 57% | 64d | 53d |  |  |  |  |  | 001 |
| 115830 |  | Mfg. & delivery of WNA plant tanks & vessels | 110d | 2017-09-06 A | 2018-02-07 | 113170 | 75% | 27d | 90d |  |  |  |  |  | 001 |
| 115860 |  | Mfg. & delivery of Absorber foundation bolts & templates | 38d | 2017-09-07 A | 2017-10-30 A | 113181 | 100% |  |  |  |  |  |  |  | 001 |
| 115850 |  | Mfg. & delivery of Condenser heater (Deleted) | 120d | 2018-01-30 | 2018-07-16 | 113170 |  |  | 77d |  |  |  |  |  | 001 |
|  | 3 | **CNA Plant equipments** |  | 2017-04-05 | 2018-04-04 |  |  |  |  |  |  |  |  |  |  |
| 115870 |  | Mfg. & delivery of Glass lined columns | 234d | 2017-04-05 A | 2018-02-28 | 113180 SS | 82% | 42d | 32d | 17d |  | MH-Wtg [951 h] | 427,950 | 351,138 | 002 |
| 115890 |  | Mfg. & delivery of Columns | 182d | 2017-04-26 A | 2018-01-05 | 113180 SS+20d | 97% | 5d | 89d | 74d |  |  |  |  | 002 |
| 115900 |  | Mfg. & delivery of Heat exchangers | 181d | 2017-04-27 A | 2018-01-05 | 113180 SS+30d | 97% | 5d | 89d | 74d |  |  |  |  | 002 |
| 115910 |  | Mfg. & delivery of CNA plant tanks & vessels | 180d | 2017-04-28 A | 2018-01-05 | 113180 | 97% | 5d | 104d | 56d |  |  |  |  | 002 |
| 115880 |  | Mfg. & delivery of Glass equipment package | 153d | 2017-09-01 A | 2018-04-04 | 113180 | 56% | 67d | 130d | 52d |  |  |  |  | 002 |

Notes:
- 115810: Explanation: DFPCL informed order has been finalised with KBR for supply of VGH. Refer MOM / dated 7-Apr-17 / 70% Wtg for Indian supply and 30% Wtg for US supply

| ID | WBS | Activity | Duration | Start | Finish | Predecessors | Complete | Remaining | Total float | Free float | Resources | Cost | Actual cost | UNIT DESCRIPTION |
| --- | --- | --- | --- | --- | --- | --- | --- | --- | --- | --- | --- | --- | --- | --- |
|  | 4 | **Piping Materials** |  | 2018-01-01 | 2018-08-03 |  |  |  |  |  |  |  |  |  |
| 115940 |  | Mfg. & delivery of Pipes | 88d | 2018-01-01 | 2018-05-03 | 113210 SS+15d |  |  | 49d | 0d | MH-Wtg [1883 h] | 847,350 |  | 003 |
| 116060 |  | Mfg. & delivery of Flanges | 88d | 2018-01-12 | 2018-05-16 | 113230 SS+15d |  |  | 40d |  | MH-Wtg [1883 h] | 847,350 |  | 003 |
| 116000 |  | Mfg. & delivery of Fittings | 88d | 2018-01-22 | 2018-05-24 | 113220 SS+15d |  |  | 34d |  | MH-Wtg [1883 h] | 847,350 |  | 003 |
| 116120 |  | Mfg. & delivery of Valves | 110d | 2018-01-30 | 2018-07-02 | 113240 |  |  | 32d |  | MH-Wtg [2511 h] | 1,129,950 |  | 003 |
| 116420 |  | Mfg. & delivery of Stud bolts | 60d | 2018-02-22 | 2018-05-17 | 113290 |  |  | 40d |  | MH-Wtg [628 h] | 282,600 |  | 003 |
| 116360 |  | Mfg. & delivery of Gaskets | 60d | 2018-03-01 | 2018-05-24 | 113280 |  |  | 60d |  | MH-Wtg [628 h] | 282,600 |  | 003 |
| 116240 |  | Mfg. & delivery of Steam traps | 88d | 2018-03-06 | 2018-07-05 | 113260 |  |  | 29d |  | MH-Wtg [1256 h] | 565,200 |  | 003 |
| 119760 |  | Mfg. & delivery of Expansion bellows | 88d | 2018-03-13 | 2018-07-12 | 113310.1 |  |  | 24d |  | MH-Wtg [502 h] | 225,900 |  | 003 |
| 116180 |  | Mfg. & delivery of Strainers | 88d | 2018-03-14 | 2018-07-13 | 113250 |  |  | 1d | 0d | MH-Wtg [628 h] | 282,600 |  | 003 |
| 116480 |  | Mfg. & delivery of Primary supports | 60d | 2018-03-20 | 2018-06-11 | 113300 |  |  | 22d |  | MH-Wtg [188 h] | 84,600 |  | 003 |
| 116300 |  | Mfg. & delivery of Sight glass | 88d | 2018-04-03 | 2018-08-02 | 113270 |  |  | 9d |  | MH-Wtg [314 h] | 141,300 |  | 003 |
| 116540 |  | Mfg. & delivery of Special supports | 88d | 2018-04-03 | 2018-08-03 | 113310 |  |  | 9d |  | MH-Wtg [377 h] | 169,650 |  | 003 |
|  | 5 | **Electrical Items** |  | 2017-06-06 | 2018-09-18 |  |  |  |  |  |  |  |  |  |
| 118420 |  | Mfg. & delivery of Compact substation | 102d | 2017-06-06 A | 2017-10-26 A | 113580.3 | 100% |  |  |  |  |  |  | 003 |
| 116670 |  | Mfg. & delivery of Transformers | 142d | 2017-09-11 A | 2018-03-28 | 113320 | 56% | 62d | 95d | 1d | MH-Wtg [1649 h] | 742,050 | 418,056 | 003 |
| 117650 |  | Mfg. & delivery of HT Cable | 88d | 2017-10-06 A | 2018-02-07 | 113460 | 69% | 27d | 142d | 126d | MH-Wtg [254 h] | 114,300 | 79,231 | 003 |
| 116740 |  | Mfg. & delivery of HT Panel | 110d | 2017-10-13 A | 2018-03-16 | 113330 | 51% | 54d | 110d | 94d | MH-Wtg [634 h] | 285,300 | 145,244 | 003 |
| 116810 |  | Mfg. & delivery of HT PCC | 110d | 2017-10-13 A | 2018-03-16 | 113340 | 51% | 54d | 100d | 84d | MH-Wtg [634 h] | 285,300 | 145,244 | 003 |
| 117160 |  | Mfg. & delivery of UPS | 88d | 2017-11-03 A | 2018-03-07 | 113390 | 47% | 47d | 117d | 101d | MH-Wtg [190 h] | 85,500 | 39,835 | 003 |
| 117090 |  | Mfg. & delivery of DG | 110d | 2017-11-28 A | 2018-05-01 | 113380 | 22% | 86d | 5d | 0d | MH-Wtg [380 h] | 171,000 | 37,309 | 003 |
| 117300 |  | Mfg. & delivery of NGR | 110d | 2017-12-04 A | 2018-05-07 | 113410 | 18% | 90d | 74d | 58d | MH-Wtg [254 h] | 114,300 | 20,782 | 003 |
| 117370 |  | Mfg. & delivery of Buss duct | 88d | 2017-12-04 A | 2018-04-05 | 113420 | 23% | 68d | 94d | 0d | MH-Wtg [254 h] | 114,300 | 25,977 | 003 |
| 117580 |  | Mfg. & delivery of VFD | 110d | 2017-12-04 A | 2018-05-07 | 113450 | 18% | 90d | 74d | 58d | MH-Wtg [634 h] | 285,300 | 51,873 | 003 |
| 117440 |  | Mfg. & delivery of HT Motors | 113d | 2017-12-22 A | 2018-05-30 | 113430 | 5% | 107d | 0d |  | MH-Wtg [380 h] | 171,000 | 9,080 | 003 |
| 116600 |  | Mfg. & delivery of GIS Switchyard (Deleted) | 186d | 2018-01-01 | 2018-09-18 |  |  |  | 31d |  | MH-Wtg |  |  | 003 |
| 116880 |  | Mfg. & delivery of LT PCC | 110d | 2018-01-01 | 2018-06-04 | 113350 |  |  | 54d | 38d | MH-Wtg [634 h] | 285,300 |  | 003 |
| 116950 |  | Mfg. & delivery of MCC | 110d | 2018-01-01 | 2018-06-04 | 113360 |  |  | 54d | 38d | MH-Wtg [634 h] | 285,300 |  | 003 |
| 117020 |  | Mfg. & delivery of APFC Panel | 110d | 2018-01-01 | 2018-06-04 | 113370 |  |  | 54d | 38d | MH-Wtg [190 h] | 85,500 |  | 003 |
| 117230 |  | Mfg. & delivery of Battery & battery charger | 88d | 2018-01-01 | 2018-05-03 | 113400 |  |  | 76d | 60d | MH-Wtg [190 h] | 85,500 |  | 003 |
| 117770 |  | Mfg. & delivery of Control cables (Deleted) | 88d | 2018-01-01 | 2018-05-03 |  |  |  | 129d |  | MH-Wtg |  |  | 003 |
| 117830 |  | Mfg. & delivery of Jointing kits (Deleted) | 88d | 2018-01-01 | 2018-05-03 |  |  |  | 129d |  | MH-Wtg |  |  | 003 |
| 118030 |  | Mfg. & delivery of Lighting transformers (Deleted) | 88d | 2018-01-01 | 2018-05-03 |  |  |  | 129d |  | MH-Wtg |  |  | 003 |
| 118220 |  | Mfg. & delivery of Earthing strips (Deleted) | 88d | 2018-01-01 | 2018-05-03 |  |  |  | 129d |  | MH-Wtg |  |  | 003 |
| 118280 |  | Mfg. & delivery of Lightening arrestors (Deleted) | 88d | 2018-01-01 | 2018-05-03 |  |  |  | 129d |  | MH-Wtg |  |  | 003 |
| 118100 |  | Mfg. & delivery of Cable trays | 88d | 2018-01-23 | 2018-05-25 | 113530 |  |  | 35d | 0d | MH-Wtg [254 h] | 114,300 |  | 003 |
| 117510 |  | Mfg. & delivery of LT Motors | 88d | 2018-01-30 | 2018-05-31 | 113440 |  |  | 109d |  | MH-Wtg [380 h] | 171,000 |  | 003 |
| 117890 |  | Mfg. & delivery of Local control stations | 55d | 2018-01-30 | 2018-04-16 | 113500 |  |  | 63d | 39d | MH-Wtg [254 h] | 114,300 |  | 003 |
| 118340 |  | Mfg. & delivery of PA System | 110d | 2018-01-30 | 2018-07-02 | 113570 |  |  | 55d |  | MH-Wtg [380 h] | 171,000 |  | 003 |
| 117021 |  | Mfg. & delivery of HT Capacitor bank | 110d | 2018-02-16 | 2018-07-19 | 113371 |  |  | 21d | 5d |  |  |  | 003 |
| 117710 |  | Mfg. & delivery of LT Cables | 88d | 2018-02-20 | 2018-06-21 | 113470 |  |  | 61d | 11d | MH-Wtg [254 h] | 114,300 |  | 003 |
| 118160 |  | Mfg. & delivery of Light fittings | 43d | 2018-02-21 | 2018-04-20 | 113540 |  |  | 82d | 0d | MH-Wtg [190 h] | 85,500 |  | 003 |
| 118340.1 |  | Mfg. & delivery of EPBAX system | 110d | 2018-02-27 | 2018-07-30 | 113570.1 |  |  | 40d |  |  |  |  | 003 |
| 118410 |  | Mfg. & delivery of CCTV | 110d | 2018-03-20 | 2018-08-20 | 113580 |  |  | 25d |  | MH-Wtg [380 h] | 171,000 |  | 003 |
| 117160.1 |  | Mfg. & delivery of UMPS | 88d | 2018-03-27 | 2018-07-26 | 113390.1 |  |  | 16d | 0d |  |  |  | 003 |
| 117960 |  | Mfg. & delivery of Misc panels | 88d | 2018-04-17 | 2018-08-16 | 113510 |  |  | 54d |  | MH-Wtg [190 h] | 85,500 |  | 003 |

| ID | WBS | Activity | Type | Duration | Start | Finish | Predecessors | Complete | Remaining | Planned start | Planned finish | Total float | Free float | Resources | Cost | Actual cost | UNIT DESCRIPTION |
| --- | --- | --- | --- | --- | --- | --- | --- | --- | --- | --- | --- | --- | --- | --- | --- | --- | --- |
|  | 6 | **Instrument Items** |  |  | 2017-08-22 | 2018-08-13 |  |  |  |  |  |  |  |  |  |  |  |
| 118550 |  | Mfg. & delivery of Control valves |  | 186d | 2017-08-22 A | 2018-05-09 | 113610 | 51% | 92d |  |  | 70d |  | MH-Wtg [1340 h] | 603,000 | 304,742 | 003 |
| 119250 |  | Mfg. & delivery of Weigh bridge |  | 82d | 2017-09-14 A | 2018-01-05 | 113710 | 94% | 5d |  |  | 192d | 55d | MH-Wtg [397 h] | 178,650 | 167,757 | 003 |
| 118480 |  | Mfg. & delivery of DCS System |  | 142d | 2017-10-05 A | 2018-04-23 | 113600 | 44% | 80d |  |  | 65d | 38d | MH-Wtg [1341 h] | 603,450 | 263,478 | 003 |
| 118620 |  | Mfg. & delivery of On/Off Valves |  | 142d | 2017-10-06 A | 2018-04-24 | 113612.1 | 43% | 81d |  |  | 63d | 48d | MH-Wtg [203 h] | 91,350 | 39,242 | 003 |
| 118760 |  | Mfg. & delivery of Flow meters |  | 142d | 2017-10-26 A | 2018-05-14 | 113640 | 33% | 95d |  |  | 49d | 34d | MH-Wtg [1207 h] | 543,150 | 179,775 | 003 |
| 119820 |  | Mfg. & delivery of Vibration monitoring system |  | 132d | 2017-12-02 A | 2018-06-06 | 113680.3 | 15% | 112d | 2017-12-04 | 2018-06-06 | 45d |  | MH-Wtg [537 h] | 241,650 | 36,614 | 001 |
| 119890 |  | Mfg. & delivery of Anti surge controller |  | 132d | 2017-12-02 A | 2018-06-06 | 113680.4 | 15% | 112d | 2017-12-04 | 2018-06-06 | 45d |  | MH-Wtg [397 h] | 178,650 | 27,068 | 001 |
| 119960 |  | Mfg. & delivery of Governor |  | 132d | 2017-12-02 A | 2018-06-06 | 113680.5 | 15% | 112d | 2017-12-04 | 2018-06-06 | 45d |  | MH-Wtg [397 h] | 178,650 | 27,068 | 001 |
| 118690.1 |  | Mfg. & delivery of DIN Rail Transmitters (Deleted) |  | 1d | 2018-01-01 | 2018-01-01 |  |  |  |  |  | 216d |  |  |  |  | 002 |
| 118970 |  | Mfg. & delivery of Switches |  | 88d | 2018-01-01 | 2018-05-03 |  |  |  |  |  | 56d | 41d | MH-Wtg [109 h] | 49,050 |  | 003 |
| 119180 |  | Mfg. & delivery of Bulk materials (Deleted) |  | 88d | 2018-01-01 | 2018-05-03 |  |  |  |  |  | 129d |  | MH-Wtg |  |  | 003 |
| 118830 |  | Mfg. & delivery of Analysers/Gas detectors |  | 88d | 2018-01-22 | 2018-05-24 | 113651 |  |  |  |  | 41d | 26d | MH-Wtg [428 h] | 192,600 |  | 003 |
| 119108 |  | Mfg. & delivery of Instrument cables |  | 70d | 2018-01-22 | 2018-04-30 | 113682 |  |  |  |  | 99d | 64d | MH-Wtg [265 h] | 119,250 |  | 003 |
| 119101 |  | Mfg. & delivery of Cable trays |  | 88d | 2018-01-23 | 2018-05-25 | 113681 |  |  |  |  | 50d | 15d | MH-Wtg [265 h] | 119,250 |  | 003 |
| 118690 |  | Mfg. & delivery of Transmitters |  | 87d | 2018-02-15 | 2018-06-15 | 113630 |  |  |  |  | 25d | 10d | MH-Wtg [3536 h] | 1,591,200 |  | 003 |
| 118900 |  | Mfg. & delivery of Safety items |  | 88d | 2018-02-20 | 2018-06-21 | 113660 |  |  |  |  | 21d | 6d | MH-Wtg [662 h] | 297,900 |  | 003 |
| 119040 |  | Mfg. & delivery of Gauges |  | 88d | 2018-02-27 | 2018-06-28 | 113680 |  |  |  |  | 16d | 1d | MH-Wtg [670 h] | 301,500 |  | 003 |
| 119115 |  | Mfg. & delivery of Junction boxes |  | 60d | 2018-02-27 | 2018-05-21 | 113690 |  |  |  |  | 62d | 0d | MH-Wtg [265 h] | 119,250 |  | 003 |
| 119320 |  | Mfg. & delivery of Fire alarm system |  | 120d | 2018-02-27 | 2018-08-13 | 113720 |  |  |  |  | 30d |  | MH-Wtg [397 h] | 178,650 |  | 003 |
|  | 4 | **Construction & Commissioning** |  |  | 2017-04-19 | 2018-10-31 |  |  |  |  |  |  |  |  |  |  |  |
|  | 1 | **Construction & Erection** |  |  | 2017-04-19 | 2018-10-03 |  |  |  |  |  |  |  |  |  |  |  |
| A126620 |  | Mobilisation of Mechanical erection contractor | milestone | 0d | 2018-01-25 | 2018-01-25 |  |  |  |  |  |  |  |  |  |  |  |
| A126660 |  | Commencement fo piping erection |  | 1d | 2018-02-20 | 2018-02-20 |  |  |  |  |  |  |  |  |  |  |  |
| A126630 |  | Mobilisation of Electrical installation contractor | milestone | 0d | 2018-03-15 | 2018-03-15 |  |  |  |  |  |  |  |  |  |  |  |
| A126640 |  | Mobilisation of Instrument installation contractor | milestone | 0d | 2018-03-20 | 2018-03-20 |  |  |  |  |  |  |  |  |  |  |  |
| A126650 |  | Mobilisation of Insulation contractor | milestone | 0d | 2018-05-15 | 2018-05-15 |  |  |  |  |  |  |  |  |  |  |  |

| ID | WBS | Activity | Duration | Start | Finish | Predecessors | Complete | Remaining | Planned start | Planned finish | Total float | Free float | Calendar | Resources | Cost | Actual cost | UNIT DESCRIPTION | user_end_date1 |
| --- | --- | --- | --- | --- | --- | --- | --- | --- | --- | --- | --- | --- | --- | --- | --- | --- | --- | --- |
|  | 1 | **B101A- WNA Plant** |  | 2017-06-01 | 2018-10-03 |  |  |  |  |  |  |  |  |  |  |  |  |  |
|  | 1 | **Civil & Structural Work** |  | 2017-06-01 | 2018-08-27 |  |  |  |  |  |  |  |  |  |  |  |  |  |
| A112920 |  | Piling work | 6d | 2017-06-01 A | 2017-06-28 A | 113110 FS+10d, 100450 | 100% |  | 2017-06-05 | 2017-06-23 |  |  | Monsoon | MH-Wtg [952.36 h] | 428,562 | 428,562 | 001 |  |
| A112930 |  | Equipment foundations | 146d | 2017-07-25 A | 2018-02-15 | A112920, 100490, 113112.1 FS+10d, 115860 FF | 77% | 33d |  |  | 24d |  |  | MH-Wtg [476.18 h] | 214,281 | 165,848 | 001 | 2018-02-15 |
| A112940 |  | RCC/Civil construction work | 160d | 2017-08-18 A | 2018-03-30 | A112920, 100460 | 60% | 64d |  |  | 27d | 0d |  | MH-Wtg [714.27 h] | 321,422 | 192,853 | 001 | 2018-03-31 |
| A112950 |  | Structural steel erection | 65d | 2018-01-30 | 2018-04-30 | A112940 FS-44d |  |  |  |  | 27d | 0d |  | MH-Wtg [2142.8 h] | 964,260 |  | 001 | 2018-04-30 |
| A112970 |  | Painting work | 44d | 2018-06-14 | 2018-08-14 | A113000 SS, 113150 FS+10d |  |  |  |  | 56d |  |  | MH-Wtg [238.09 h] | 107,141 |  | 001 |  |
| A112960 |  | Anti-corrosive lining work | 32.4d | 2018-07-12 | 2018-08-27 | A112990, 113140 FS+10d |  |  |  |  | 27.6d |  |  | MH-Wtg [238.09 h] | 107,141 |  | 001 |  |
|  | 2 | **Mechanical Erection & Piping** |  | 2018-02-08 | 2018-09-07 |  |  |  |  |  |  |  |  |  |  |  |  |  |
| A112980 |  | Equipment installation | 100d | 2018-02-08 | 2018-06-27 | A112930 FS-30d, 113190 FS+10d, A112821 FS-40d, A112980.8 FF, A112980.1 FF, A112980.2 FF, A112980.5 FF, A112980.9 FF, A112981 FF, A112980.3 FF, A112980.4 FF, 114440 FF+15d, 114720 FF+15d, 119590.4 FF+5d, 119590.5 FF+10d, 115820 FF+10d, 115830 FF+10d, 115840 FF+15d, 117440 FF+20d, 119590.92 FF, 119590.93 FF, 119590.94 FF, 119590.95 FF, 119590.98 FF, 119590.99 FF |  |  |  |  | 0d |  |  | MH-Wtg [1428.53 h] | 642,839 |  | 001 |  |
| A112980.3 |  | Installation of Compressor train | 40d | 2018-03-20 | 2018-05-14 | A112950 FS-30d, A112821 |  |  |  |  | 32d |  |  |  |  |  | 001 |  |
| A112990 |  | Piping erection | 80d | 2018-03-22 | 2018-07-11 | A112980 SS+30d, 119590.3 FF+10d, 119590.6 FF+10d, 115940 FF, 116000 FF, 116060 FF, 116480 FF, 115210 FF+10d, 105940 SS+15d |  |  |  |  | 0d |  |  | MH-Wtg [1904.71 h] | 857,120 |  | 001 |  |
| A112980.1 |  | Installation of Steam superheater | 10d | 2018-04-12 | 2018-04-25 | 115800 |  |  |  |  | 35d | 0d |  |  |  |  | 001 |  |
| A112980.7 |  | Installation of Water jacketed shell | 10d | 2018-04-12 | 2018-04-25 | 115800 |  |  |  |  | 15d | 0d |  |  |  |  | 001 |  |
| A112980.2 |  | Installation of Economizer | 10d | 2018-04-26 | 2018-05-09 | A112980.1, 115800 |  |  |  |  | 35d |  |  |  |  |  | 001 |  |
| A112980.5 |  | Installation of HP waste heat boiler & accumulator | 20d | 2018-04-26 | 2018-05-23 | 115800, A112980.7 |  |  |  |  | 15d | 0d |  |  |  |  | 001 |  |
| A112980.8 |  | Installation of VGH package | 30d | 2018-04-26 | 2018-06-06 | 115810, A112980.7 |  |  |  |  | 15d | 0d |  |  |  |  | 001 |  |
| A112980.4 |  | Installation of Inlet air filter | 10d | 2018-05-01 | 2018-05-14 | A112950, 119590.1 |  |  |  |  | 32d |  |  |  |  |  | 001 |  |
| A112980.9 |  | Installation of Convertor steam accumulator | 5d | 2018-05-01 | 2018-05-07 | A112950, 115800 |  |  |  |  | 37d |  |  |  |  |  | 001 |  |
| A112980.6 |  | Installation HP tail gas boiler & accumulator (Deleted) | 10d | 2018-05-24 | 2018-06-06 | 115800, A112980.8 FF |  |  |  |  | 105d |  |  |  |  |  | 001 |  |
| A112981 |  | Installation of LP waste heat boiler & accumulator | 10d | 2018-05-24 | 2018-06-06 | 115800, A112980.5 |  |  |  |  | 15d |  |  |  |  |  | 001 |  |
| A113000 |  | Testing and boxup | 45d | 2018-06-14 | 2018-08-15 | A112990 FS-20d, 116180 FF, 116240 FF, 116300 FF, 116360 FF, 119760 FF, 118550 FF, 116540 FF, 116420 FS-20d, 116120 FF, 119590.2 FF+10d |  |  |  |  | 0d |  |  | MH-Wtg [714.27 h] | 321,422 |  | 001 |  |
| A113010 |  | Insulation of equipments and piping | 60d | 2018-06-15 | 2018-09-06 | A113000 FS-44d, 113200 FS+10d |  |  |  |  | 19d |  |  | MH-Wtg [476.18 h] | 214,281 |  | 001 |  |
| A113020 |  | Painting work | 40d | 2018-07-16 | 2018-09-07 | A113000 FS-23d, 113150 FS+10d |  |  |  |  | 38d |  |  | MH-Wtg [238.09 h] | 107,141 |  | 001 |  |

Notes:
- A112940: Explanation: 75 % for Compresssor house (45%) & VEGH foundations / (30%)

| ID | WBS | Activity | Duration | Start | Finish | Predecessors | Complete | Remaining | Total float | Free float | Calendar | Resources | Cost | Actual cost | UNIT DESCRIPTION | user_end_date1 |
| --- | --- | --- | --- | --- | --- | --- | --- | --- | --- | --- | --- | --- | --- | --- | --- | --- |
|  | 3 | **Electrical Installation** |  | 2018-04-03 | 2018-08-27 |  |  |  |  |  |  |  |  |  |  |  |
| A113030 |  | Cable tray installation | 40d | 2018-04-03 | 2018-05-28 | 113590 FS+10d, A112950 FS-20d |  |  | 27d | 0d |  | MH-Wtg [411.83 h] | 185,324 |  | 001 |  |
| A113040 |  | Cable laying | 40d | 2018-05-01 | 2018-06-25 | A113030 FS-20d |  |  | 27d | 0d |  | MH-Wtg [514.79 h] | 231,656 |  | 001 |  |
| A113080 |  | Earthing work | 30d | 2018-05-17 | 2018-06-27 | A112980 FF |  |  | 70d |  |  | MH-Wtg [308.87 h] | 138,992 |  | 001 |  |
| A113050 |  | Installation of electrical items | 40d | 2018-05-29 | 2018-07-23 | A113040 FS-20d |  |  | 27d | 0d |  | MH-Wtg [308.87 h] | 138,992 |  | 001 |  |
| A113060 |  | Glanding and termination | 25d | 2018-07-24 | 2018-08-27 | A113050 |  |  | 27d |  |  | MH-Wtg [308.87 h] | 138,992 |  | 001 |  |
| A113070 |  | Installation of light fittings | 15d | 2018-07-24 | 2018-08-13 | A113050, 118160 FF+20d |  |  | 37d |  |  | MH-Wtg [205.91 h] | 92,660 |  | 001 |  |
|  | 4 | **Instrument Installation** |  | 2018-04-03 | 2018-10-03 |  |  |  |  |  |  |  |  |  |  |  |
| A113090 |  | Cable tray installation | 30d | 2018-04-03 | 2018-05-14 | A113030 SS, 113730 FS+10d |  |  | 67d | 0d |  | MH-Wtg [283.13 h] | 127,409 |  | 001 |  |
| A113100 |  | Cable laying | 30d | 2018-04-24 | 2018-06-04 | A113090 FS-15d |  |  | 72d |  |  | MH-Wtg [353.92 h] | 159,264 |  | 001 |  |
| A113110 |  | Installation of JBs and Air headers | 20d | 2018-05-22 | 2018-06-18 | A113090, 119115 |  |  | 62d |  |  | MH-Wtg [141.57 h] | 63,707 |  | 001 |  |
| A113120 |  | Installation of instruments | 30d | 2018-07-19 | 2018-08-29 | A113000 FF+10d, 119820 FF+15d, 119890 FF+15d, 119960 FF+15d |  |  | 0d |  |  | MH-Wtg [212.35 h] | 95,558 |  | 001 |  |
| A113130 |  | Glanding and termination | 20d | 2018-08-16 | 2018-09-12 | A113100 FF, A113110 FF, A113120 FS-10d |  |  | 0d |  |  | MH-Wtg [212.35 h] | 95,558 |  | 001 |  |
| A113140 |  | Hookup of instruments | 20d | 2018-08-16 | 2018-09-12 | A113120 FF+10d |  |  | 15d |  |  | MH-Wtg [141.57 h] | 63,707 |  | 001 |  |
| A113150 |  | Testing & calibration | 15d | 2018-09-13 | 2018-10-03 | A113140 FF, A113130 |  |  | 0d |  |  | MH-Wtg [70.78 h] | 31,851 |  | 001 |  |
|  | 2 | **B102A/B- CNA Plant-1&2** |  | 2017-05-02 | 2018-07-27 |  |  |  |  |  |  |  |  |  |  |  |
|  | 1 | **Civil & Structural Work** |  | 2017-05-02 | 2018-07-13 |  |  |  |  |  |  |  |  |  |  |  |
| A113400 |  | Piling work | 18d | 2017-05-02 A | 2017-05-25 A | 113110 FS+10d, 100540 | 100% |  |  |  | Monsoon | MH-Wtg [571.41 h] | 257,135 | 257,135 | 002 |  |
| A113420 |  | RCC/Civil construction work | 135d | 2017-07-10 A | 2018-02-09 | A113400, 100550, 113112.1 FS+10d | 79% | 29d | 188d | 0d | Monsoon | MH-Wtg [635 h] | 285,750 | 224,367 | 002 | 2018-02-10 |
| A113430 |  | Structural steel erection | 95d | 2017-11-17 A | 2018-03-30 | A113420 FS-10d | 33% | 64d | 15d | 0d |  | MH-Wtg [1285.68 h] | 578,556 | 188,792 | 002 | 2018-03-31 |
| A113410 |  | Equipment foundations | 29d | 2018-01-01 | 2018-02-09 | A113420 FF, 100580 |  |  | 188d |  |  | MH-Wtg [79 h] | 35,550 |  | 002 | 2018-02-10 |
| A113450 |  | Painting work | 25d | 2018-05-28 | 2018-06-29 | A113480 SS, 113150 FS+10d |  |  | 45d |  |  | MH-Wtg [142.85 h] | 64,283 |  | 002 |  |
| A113440 |  | Anti-corrosive lining work | 20d | 2018-06-18 | 2018-07-13 | A113470, 113140 FS+10d |  |  | 25d |  |  | MH-Wtg [142.85 h] | 64,283 |  | 002 |  |
|  | 2 | **Mechanical Erection & Piping** |  | 2018-03-26 | 2018-07-27 |  |  |  |  |  |  |  |  |  |  |  |
| A113460 |  | Equipment installation | 30d | 2018-03-26 | 2018-05-04 | 113190 FS+10d, A113460.1 SS, 115890 FF+10d, 115900 FF+10d, 114440.1 FF+10d |  |  | 15d | 0d |  | MH-Wtg [857.12 h] | 385,704 |  | 002 |  |
| A113460.1 |  | Installation of CNA columns (Glass lined) | 15d | 2018-03-26 | 2018-04-13 | A113430 FF+10d, 115870 |  |  | 15d | 0d |  |  |  |  | 002 |  |
| A113470 |  | Piping erection | 45d | 2018-04-16 | 2018-06-15 | A113460 FS-15d, 119390 FF+10d |  |  | 15d | 0d |  | MH-Wtg [1142.83 h] | 514,274 |  | 002 |  |
| A113480 |  | Testing and boxup | 25d | 2018-05-28 | 2018-06-29 | A113470 FS-15d, 118620 FF, 119590.91 FF+15d |  |  | 15d | 0d |  | MH-Wtg [428.56 h] | 192,852 |  | 002 |  |
| A113460.11 |  | Installation of Glass equipment package | 20d | 2018-06-18 | 2018-07-13 | A113430, 115880, A113470 |  |  | 78d |  |  |  |  |  | 002 |  |
| A113490 |  | Insulation of equipments and piping | 20d | 2018-07-02 | 2018-07-27 | A113480, 113200 FS+10d, A113521 FF, 119590.91 FF |  |  | 15d |  |  | MH-Wtg [285.71 h] | 128,570 |  | 002 |  |
| A113500 |  | Painting work | 15d | 2018-07-02 | 2018-07-20 | A113480, 113150 FS+10d |  |  | 30d |  |  | MH-Wtg [142.85 h] | 64,283 |  | 002 |  |

| ID | WBS | Activity | Duration | Start | Finish | Predecessors | Complete | Remaining | Total float | Free float | Resources | Cost | Actual cost | UNIT DESCRIPTION | user_end_date1 |
| --- | --- | --- | --- | --- | --- | --- | --- | --- | --- | --- | --- | --- | --- | --- | --- |
|  | 3 | **Electrical Installation** |  | 2017-12-20 | 2018-07-27 |  |  |  |  |  |  |  |  |  |  |
| A113560 |  | Earthing work | 97d | 2017-12-20 A | 2018-05-04 | A113460 FF | 79% | 20d | 75d |  | MH-Wtg [123.55 h] | 55,598 | 44,134 | 002 |  |
| A113510 |  | Cable tray installation | 25d | 2018-04-02 | 2018-05-04 | 113590 FS+10d, A113430 |  |  | 40d | 0d | MH-Wtg [247.1 h] | 111,195 |  | 002 |  |
| A113520 |  | Cable laying | 20d | 2018-04-23 | 2018-05-18 | A113510 FS-10d |  |  | 40d | 0d | MH-Wtg [308.87 h] | 138,992 |  | 002 |  |
| A113530 |  | Installation of electrical items | 20d | 2018-05-07 | 2018-06-01 | A113520 FS-10d |  |  | 40d | 0d | MH-Wtg [185.32 h] | 83,394 |  | 002 |  |
| A113540 |  | Glanding and termination | 15d | 2018-06-04 | 2018-06-22 | A113530 |  |  | 40d |  | MH-Wtg [185.32 h] | 83,394 |  | 002 |  |
| A113550 |  | Installation of light fittings | 15d | 2018-06-04 | 2018-06-22 | A113530 |  |  | 40d |  | MH-Wtg [123.55 h] | 55,598 |  | 002 |  |
| A113521 |  | Electrical heat tracing | 20d | 2018-07-02 | 2018-07-27 | A113480 |  |  | 15d | 0d | MH-Wtg [61.77 h] | 27,797 |  | 002 |  |
|  | 4 | **Instrument Installation** |  | 2018-04-02 | 2018-07-27 |  |  |  |  |  |  |  |  |  |  |
| A113570 |  | Cable tray installation | 25d | 2018-04-02 | 2018-05-04 | A113510 SS, 113730 FS+10d |  |  | 45d | 0d | MH-Wtg [169.88 h] | 76,446 |  | 002 |  |
| A113580 |  | Cable laying | 20d | 2018-04-23 | 2018-05-18 | A113570 FS-10d |  |  | 50d | 35d | MH-Wtg [212.35 h] | 95,558 |  | 002 |  |
| A113590 |  | Installation of JBs and Air headers | 15d | 2018-05-07 | 2018-05-25 | A113570 |  |  | 45d | 30d | MH-Wtg [84.94 h] | 38,223 |  | 002 |  |
| A113600 |  | Installation of instruments | 30d | 2018-05-21 | 2018-06-29 | A113480 FF, 118690 FF, 118760 FF, 118900 FF, 118970 FF, 119040 FF, 118830 FF |  |  | 15d | 0d | MH-Wtg [127.41 h] | 57,335 |  | 002 |  |
| A113620 |  | Hookup of instruments | 25d | 2018-06-11 | 2018-07-13 | A113600 FF+10d |  |  | 25d | 10d | MH-Wtg [84.94 h] | 38,223 |  | 002 |  |
| A113610 |  | Glanding and termination | 15d | 2018-06-18 | 2018-07-06 | A113580 FF, A113590 FF, A113600 FF+5d |  |  | 15d | 0d | MH-Wtg [127.41 h] | 57,335 |  | 002 |  |
| A113630 |  | Testing & calibration | 15d | 2018-07-09 | 2018-07-27 | A113620 FF, A113610 |  |  | 15d |  | MH-Wtg [42.47 h] | 19,112 |  | 002 |  |
|  | 3 | **B102C- MGN Preparation** |  | 2017-11-10 | 2018-06-12 |  |  |  |  |  |  |  |  |  |  |
|  | 1 | **Civil & Structural Work** |  | 2017-11-10 | 2018-05-15 |  |  |  |  |  |  |  |  |  |  |
| A113650 |  | RCC/Civil construction work | 44d | 2017-11-10 A | 2018-01-10 | A113640 | 82% | 8d | 209d |  | MH-Wtg [211.63 h] | 95,234 | 77,918 | 002 | 2018-01-10 |
| A113660 |  | Structural steel erection | 36d | 2017-11-20 A | 2018-01-08 | A113650 | 83% | 6d | 137d | 46d | MH-Wtg [264.54 h] | 119,043 | 99,203 | 002 | 2017-12-29 |
| A113640 |  | Equipment foundations | 34d | 2017-11-21 A | 2018-01-05 | A114330 | 85% | 5d | 104d | 56d | MH-Wtg [423.27 h] | 190,472 | 162,461 | 002 | 2017-12-30 |
| A113680 |  | Painting work | 5d | 2018-05-09 | 2018-05-15 | A113710 SS |  |  | 78d |  | MH-Wtg [52.91 h] | 23,810 |  | 002 | 2018-01-15 |
|  | 2 | **Mechanical Erection & Piping** |  | 2018-03-28 | 2018-06-12 |  |  |  |  |  |  |  |  |  |  |
| A113690 |  | Equipment installation | 20d | 2018-03-28 | 2018-04-24 | A113640, 115910, 114790 FF, 114440.1 FF+10d |  |  | 48d | 0d | MH-Wtg [285.71 h] | 128,570 |  | 002 |  |
| A113700 |  | Piping erection | 25d | 2018-04-11 | 2018-05-15 | A113690 FS-10d |  |  | 48d | 0d | MH-Wtg [380.94 h] | 171,423 |  | 002 |  |
| A113710 |  | Testing and boxup | 10d | 2018-05-09 | 2018-05-22 | A113700 FS-5d |  |  | 48d | 0d | MH-Wtg [142.85 h] | 64,283 |  | 002 |  |
| A113720 |  | Insulation of equipments and piping | 15d | 2018-05-23 | 2018-06-12 | A113710 |  |  | 48d |  | MH-Wtg [95.24 h] | 42,858 |  | 002 |  |
| A113730 |  | Painting work | 10d | 2018-05-23 | 2018-06-05 | A113710 |  |  | 63d |  | MH-Wtg [47.62 h] | 21,429 |  | 002 |  |

| ID | WBS | Activity | Duration | Start | Finish | Predecessors | Complete | Remaining | Total float | Free float | Calendar | Resources | Cost | Actual cost | UNIT DESCRIPTION | user_start_date1 | user_end_date1 |
| --- | --- | --- | --- | --- | --- | --- | --- | --- | --- | --- | --- | --- | --- | --- | --- | --- | --- |
|  | 3 | **Electrical Installation** |  | 2018-03-15 | 2018-04-27 |  |  |  |  |  |  |  |  |  |  |  |  |
| A113740 |  | Cable tray installation | 8d | 2018-03-15 | 2018-03-26 | A113660, 113590 FS+10d |  |  | 91d | 0d |  | MH-Wtg [82.37 h] | 37,067 |  | 002 |  |  |
| A113750 |  | Cable laying | 5d | 2018-03-27 | 2018-04-02 | A113740 |  |  | 91d | 0d |  | MH-Wtg [102.96 h] | 46,332 |  | 002 |  |  |
| A113760 |  | Installation of electrical items | 5d | 2018-04-03 | 2018-04-09 | A113750 |  |  | 91d | 0d |  | MH-Wtg [61.77 h] | 27,797 |  | 002 |  |  |
| A113770 |  | Glanding and termination | 3d | 2018-04-10 | 2018-04-12 | A113760 |  |  | 91d |  |  | MH-Wtg [61.77 h] | 27,797 |  | 002 |  |  |
| A113780 |  | Installation of light fittings | 3d | 2018-04-23 | 2018-04-25 | A113760, 118160 |  |  | 82d |  |  | MH-Wtg [41.18 h] | 18,531 |  | 002 |  |  |
| A113790 |  | Earthing work | 3d | 2018-04-25 | 2018-04-27 | A113690 |  |  | 80d |  |  | MH-Wtg [61.77 h] | 27,797 |  | 002 |  |  |
|  | 4 | **Instrument Installation** |  | 2018-03-27 | 2018-06-08 |  |  |  |  |  |  |  |  |  |  |  |  |
| A113800 |  | Cable tray installation | 8d | 2018-03-27 | 2018-04-05 | A113740 SS, 113730 FS+10d |  |  | 88d | 0d |  | MH-Wtg [56.63 h] | 25,484 |  | 002 |  |  |
| A113810 |  | Cable laying | 5d | 2018-04-06 | 2018-04-12 | A113800 |  |  | 88d | 36d |  | MH-Wtg [70.78 h] | 31,851 |  | 002 |  |  |
| A113820 |  | Installation of JBs and Air headers | 3d | 2018-04-06 | 2018-04-10 | A113800 |  |  | 90d | 38d |  | MH-Wtg [28.31 h] | 12,740 |  | 002 |  |  |
| A113830 |  | Installation of instruments | 5d | 2018-05-23 | 2018-05-29 | A113710 |  |  | 50d | 0d |  | MH-Wtg [42.47 h] | 19,112 |  | 002 |  |  |
| A113840 |  | Glanding and termination | 3d | 2018-05-30 | 2018-06-01 | A113810 FF, A113820 FF, A113830 |  |  | 52d | 2d |  | MH-Wtg [42.47 h] | 19,112 |  | 002 |  |  |
| A113850 |  | Hookup of instruments | 5d | 2018-05-30 | 2018-06-05 | A113830 |  |  | 50d | 0d |  | MH-Wtg [28.31 h] | 12,740 |  | 002 |  |  |
| A113860 |  | Testing & calibration | 3d | 2018-06-06 | 2018-06-08 | A113850, A113840 |  |  | 50d |  |  | MH-Wtg [14.16 h] | 6,372 |  | 002 |  |  |
|  | 4 | **B103A- WNA Storage Tanks/Pumps** |  | 2017-11-14 | 2018-09-05 |  |  |  |  |  |  |  |  |  |  |  |  |
|  | 1 | **Civil & Structural Work** |  | 2017-11-14 | 2018-08-01 |  |  |  |  |  |  |  |  |  |  |  |  |
| A113870 |  | Equipment foundations | 76d | 2017-11-14 A | 2018-02-28 | 113120 FS+10d, 100720 | 45% | 42d | 17d | 0d | Monsoon | MH-Wtg [642.84 h] | 289,278 | 129,414 | 003 | 2018-01-01 | 2018-02-28 |
| A113880 |  | RCC/Civil construction work | 45d | 2018-03-01 | 2018-05-02 | A113870 |  |  | 87d | 0d |  | MH-Wtg [428.56 h] | 192,852 |  | 003 |  |  |
| A113890 |  | Structural steel erection | 20d | 2018-05-03 | 2018-05-30 | A113880 |  |  | 87d |  |  | MH-Wtg [214.28 h] | 96,426 |  | 003 |  |  |
| A113910 |  | Painting work | 10d | 2018-06-07 | 2018-06-20 | A113940 SS, 113150 FS+10d |  |  | 87d |  |  | MH-Wtg [71.43 h] | 32,144 |  | 003 |  |  |
| A113900 |  | Anti-corrosive lining work | 25d | 2018-06-28 | 2018-08-01 | A113930, 113140 FS+10d |  |  | 42d |  |  | MH-Wtg [71.43 h] | 32,144 |  | 003 |  |  |
|  | 2 | **Mechanical Erection & Piping** |  | 2018-02-08 | 2018-08-01 |  |  |  |  |  |  |  |  |  |  |  |  |
| A113920 |  | Equipment installation | 80d | 2018-02-08 | 2018-05-30 | A113870 FS-15d, 115750 SS+30d |  |  | 17d | 0d |  | MH-Wtg [571.41 h] | 257,135 |  | 003 |  |  |
| A113930 |  | Piping erection | 40d | 2018-05-03 | 2018-06-27 | A113920 FS-20d, 114510 FF+15d, 106060 SS+10d |  |  | 32d | 0d |  | MH-Wtg [428.56 h] | 192,852 |  | 003 |  |  |
| A113940 |  | Testing and boxup | 30d | 2018-06-07 | 2018-07-18 | A113930 FS-15d |  |  | 32d | 0d |  | MH-Wtg [214.28 h] | 96,426 |  | 003 |  |  |
| A113950 |  | Insulation of equipments and piping (Deleted) | 30d | 2018-06-21 | 2018-08-01 | A113940 FS-20d, 113200 FS+10d |  |  | 65d |  |  | MH-Wtg |  |  | 003 |  |  |
| A113960 |  | Painting work | 20d | 2018-07-05 | 2018-08-01 | A113940 FS-10d, 113150 FS+10d |  |  | 57d |  |  | MH-Wtg [71.43 h] | 32,144 |  | 003 |  |  |

| ID | WBS | Activity | Duration | Start | Finish | Predecessors | Complete | Remaining | Planned start | Planned finish | Total float | Free float | Resources | Cost | Actual cost | UNIT DESCRIPTION |
| --- | --- | --- | --- | --- | --- | --- | --- | --- | --- | --- | --- | --- | --- | --- | --- | --- |
|  | 3 | **Electrical Installation** |  | 2018-05-31 | 2018-09-05 |  |  |  |  |  |  |  |  |  |  |  |
| A113970 |  | Cable tray installation | 30d | 2018-05-31 | 2018-07-11 | 113590 FS+10d, A113920 |  |  |  |  | 17d | 0d | MH-Wtg [123.55 h] | 55,598 |  | 003 |
| A114020 |  | Earthing work | 15d | 2018-05-31 | 2018-06-20 | A113920 |  |  |  |  | 72d |  | MH-Wtg [92.66 h] | 41,697 |  | 003 |
| A113980 |  | Cable laying | 25d | 2018-06-28 | 2018-08-01 | A113970 FS-10d |  |  |  |  | 17d | 0d | MH-Wtg [154.44 h] | 69,498 |  | 003 |
| A113990 |  | Installation of electrical items | 20d | 2018-07-19 | 2018-08-15 | A113980 FS-10d |  |  |  |  | 17d | 0d | MH-Wtg [92.66 h] | 41,697 |  | 003 |
| A114000 |  | Glanding and termination | 25d | 2018-08-02 | 2018-09-05 | A113990 FS-10d |  |  |  |  | 17d |  | MH-Wtg [92.66 h] | 41,697 |  | 003 |
| A114010 |  | Installation of light fittings | 10d | 2018-08-16 | 2018-08-29 | A113990 |  |  |  |  | 22d |  | MH-Wtg [61.77 h] | 27,797 |  | 003 |
|  | 4 | **Instrument Installation** |  | 2018-05-31 | 2018-08-15 |  |  |  |  |  |  |  |  |  |  |  |
| A114030 |  | Cable tray installation | 30d | 2018-05-31 | 2018-07-11 | A113970 SS, 113730 FS+10d |  |  |  |  | 32d | 0d | MH-Wtg [84.94 h] | 38,223 |  | 003 |
| A114060 |  | Installation of instruments | 30d | 2018-06-07 | 2018-07-18 | A113940 FF |  |  |  |  | 32d | 0d | MH-Wtg [63.7 h] | 28,665 |  | 003 |
| A114040 |  | Cable laying | 25d | 2018-06-14 | 2018-07-18 | A114030 FS-20d |  |  |  |  | 37d | 5d | MH-Wtg [106.17 h] | 47,777 |  | 003 |
| A114070 |  | Glanding and termination | 25d | 2018-06-21 | 2018-07-25 | A114040 FF, A114050 FF, A114060 FS-20d |  |  |  |  | 32d | 0d | MH-Wtg [63.7 h] | 28,665 |  | 003 |
| A114080 |  | Hookup of instruments | 20d | 2018-06-28 | 2018-07-25 | A114060 FF, A113940 FS-15d |  |  |  |  | 47d | 15d | MH-Wtg [42.47 h] | 19,112 |  | 003 |
| A114050 |  | Installation of JBs and Air headers | 10d | 2018-07-12 | 2018-07-25 | A114030 |  |  |  |  | 32d | 0d | MH-Wtg [42.47 h] | 19,112 |  | 003 |
| A114090 |  | Testing & calibration | 15d | 2018-07-26 | 2018-08-15 | A114080 FF, A114070 |  |  |  |  | 32d |  | MH-Wtg [21.23 h] | 9,554 |  | 003 |
|  | 41 | **B103B- CNA Storage Tanks/Pumps** |  | 2017-11-18 | 2018-08-13 |  |  |  |  |  |  |  |  |  |  |  |
|  | 1 | **Civil & Structural Work** |  | 2017-11-18 | 2018-07-09 |  |  |  |  |  |  |  |  |  |  |  |
| A114100 |  | Equipment foundations | 90d | 2017-11-18 A | 2018-03-27 | 101550, 115730 FF-15d | 33% | 60d | 2017-11-20 | 2018-03-27 | 39d | 0d | MH-Wtg [571.41 h] | 257,135 | 85,715 | 003 |
| A114110 |  | RCC/Civil construction work | 90d | 2017-11-18 A | 2018-03-27 | A114100 FF, 101560 | 56% | 40d | 2017-11-20 | 2018-03-27 | 157d |  | MH-Wtg [428.56 h] | 192,852 | 107,142 | 003 |
| A114120 |  | Structural steel erection | 15d | 2018-05-01 | 2018-05-21 | A114150.1 |  |  |  |  | 39d | 0d | MH-Wtg [285.71 h] | 128,570 |  | 003 |
| A114140 |  | Painting work | 25d | 2018-05-29 | 2018-07-02 | A114170 SS |  |  |  |  | 79d |  | MH-Wtg [71.43 h] | 32,144 |  | 003 |
| A114130 |  | Anti-corrosive lining work | 20d | 2018-06-12 | 2018-07-09 | A114160 |  |  |  |  | 59d |  | MH-Wtg [71.43 h] | 32,144 |  | 003 |
|  | 2 | **Mechanical Erection & Piping** |  | 2018-04-17 | 2018-07-23 |  |  |  |  |  |  |  |  |  |  |  |
| A114150 |  | Equipment installation | 20d | 2018-04-17 | 2018-05-14 | A114150.1 SS, 119590.93 FF+15d |  |  |  |  | 84d | 0d | MH-Wtg [571.41 h] | 257,135 |  | 003 |
| A114150.1 |  | Installation of CNA storage tanks | 10d | 2018-04-17 | 2018-04-30 | 115730, A114100 FS+10d |  |  |  |  | 34d | 0d |  |  |  | 003 |
| A114160 |  | Piping erection | 30d | 2018-05-01 | 2018-06-11 | A114120 FF, A114150.1, 110330 |  |  |  |  | 34d | 0d | MH-Wtg [428.56 h] | 192,852 |  | 003 |
| A114170 |  | Testing and boxup | 20d | 2018-05-29 | 2018-06-25 | A114160 FS-10d |  |  |  |  | 34d | 0d | MH-Wtg [214.28 h] | 96,426 |  | 003 |
| A114180 |  | Insulation of equipments and piping | 20d | 2018-06-12 | 2018-07-09 | A114170 FS-10d |  |  |  |  | 59d |  | MH-Wtg [142.85 h] | 64,283 |  | 003 |
| A114190 |  | Painting work | 20d | 2018-06-26 | 2018-07-23 | A114170 |  |  |  |  | 64d |  | MH-Wtg [71.43 h] | 32,144 |  | 003 |

| ID | WBS | Activity | Duration | Start | Finish | Predecessors | Complete | Remaining | Total float | Free float | Resources | Cost | Actual cost | UNIT DESCRIPTION | user_end_date1 |
| --- | --- | --- | --- | --- | --- | --- | --- | --- | --- | --- | --- | --- | --- | --- | --- |
|  | 3 | **Electrical Installation** |  | 2018-05-15 | 2018-08-06 |  |  |  |  |  |  |  |  |  |  |
| A114250 |  | Earthing work | 15d | 2018-05-15 | 2018-06-04 | A114150 |  |  | 84d |  | MH-Wtg [92.66 h] | 41,697 |  | 003 |  |
| A114200 |  | Cable tray installation | 25d | 2018-05-22 | 2018-06-25 | A114120 |  |  | 39d | 0d | MH-Wtg [123.55 h] | 55,598 |  | 003 |  |
| A114210 |  | Cable laying | 20d | 2018-06-12 | 2018-07-09 | A114200 FS-10d |  |  | 39d | 0d | MH-Wtg [154.44 h] | 69,498 |  | 003 |  |
| A114220 |  | Installation of electrical items | 15d | 2018-06-26 | 2018-07-16 | A114210 FS-10d |  |  | 39d | 0d | MH-Wtg [92.66 h] | 41,697 |  | 003 |  |
| A114230 |  | Glanding and termination | 20d | 2018-07-03 | 2018-07-30 | A114220 FS-10d |  |  | 44d |  | MH-Wtg [92.66 h] | 41,697 |  | 003 |  |
| A114240 |  | Installation of light fittings | 15d | 2018-07-17 | 2018-08-06 | A114220 |  |  | 39d |  | MH-Wtg [61.77 h] | 27,797 |  | 003 |  |
|  | 4 | **Instrument Installation** |  | 2018-05-22 | 2018-08-13 |  |  |  |  |  |  |  |  |  |  |
| A114260 |  | Cable tray installation | 25d | 2018-05-22 | 2018-06-25 | A114200 SS |  |  | 39d | 0d | MH-Wtg [84.94 h] | 38,223 |  | 003 |  |
| A114290 |  | Installation of instruments | 20d | 2018-05-29 | 2018-06-25 | A114170 FF |  |  | 34d | 0d | MH-Wtg [63.7 h] | 28,665 |  | 003 |  |
| A114270 |  | Cable laying | 20d | 2018-06-12 | 2018-07-09 | A114260 FS-10d |  |  | 39d | 5d | MH-Wtg [106.17 h] | 47,777 |  | 003 |  |
| A114300 |  | Glanding and termination | 25d | 2018-06-12 | 2018-07-16 | A114270 FF, A114280 FF, A114290 FS-10d |  |  | 34d | 0d | MH-Wtg [63.7 h] | 28,665 |  | 003 |  |
| A114310 |  | Hookup of instruments | 20d | 2018-06-12 | 2018-07-09 | A114290 FF, A114170 FS-10d |  |  | 59d | 25d | MH-Wtg [42.47 h] | 19,112 |  | 003 |  |
| A114280 |  | Installation of JBs and Air headers | 10d | 2018-06-26 | 2018-07-09 | A114260 |  |  | 39d | 5d | MH-Wtg [42.47 h] | 19,112 |  | 003 |  |
| A114320 |  | Testing & calibration | 20d | 2018-07-17 | 2018-08-13 | A114310 FF, A114300 |  |  | 34d |  | MH-Wtg [21.23 h] | 9,554 |  | 003 |  |
|  | 49 | **B103C- WWS Storage Tanks/Pumps** |  | 2017-11-14 | 2018-08-10 |  |  |  |  |  |  |  |  |  |  |
|  | 1 | **Civil & Structural Work** |  | 2017-11-14 | 2018-02-28 |  |  |  |  |  |  |  |  |  |  |
| A114330 |  | Equipment foundations | 76d | 2017-11-14 A | 2018-02-28 | A113870, 101850 | 45% | 42d | 64d | 0d | MH-Wtg [336 h] | 151,200 | 67,642 | 003 | 2018-02-28 |
| A114340 |  | RCC/Civil construction work | 24d | 2017-12-25 A | 2018-01-25 | A114330 FS-5d | 21% | 19d | 175d |  | MH-Wtg [142.85 h] | 64,283 | 13,392 | 003 | 2018-03-20 |
|  | 2 | **Mechanical Erection & Piping** |  | 2018-02-01 | 2018-08-10 |  |  |  |  |  |  |  |  |  |  |
| A114380 |  | Equipment installation | 60d | 2018-02-01 | 2018-04-25 | A114330 FS-20d, 115750 SS+30d |  |  | 64d | 0d | MH-Wtg [190.47 h] | 85,712 |  | 003 |  |
| A114390 |  | Piping erection | 25d | 2018-04-26 | 2018-05-30 | A114380, 110520 SS+10d, 114510 FF+15d |  |  | 64d | 27d | MH-Wtg [142.85 h] | 64,283 |  | 003 |  |
| A114400 |  | Testing and boxup | 20d | 2018-06-25 | 2018-07-20 | A114390 FS-10d, 116180 FF+5d |  |  | 37d | 0d | MH-Wtg [71.43 h] | 32,144 |  | 003 |  |
| A114410 |  | Insulation of equipments and piping (Deleted) | 10d | 2018-07-23 | 2018-08-03 | A114400 |  |  | 63d |  | MH-Wtg |  |  | 003 |  |
| A114420 |  | Painting work | 15d | 2018-07-23 | 2018-08-10 | A114400 |  |  | 50d |  | MH-Wtg [23.81 h] | 10,715 |  | 003 |  |

| ID | WBS | Activity | Duration | Start | Finish | Predecessors | Total float | Free float | Resources | Cost | UNIT DESCRIPTION | user_start_date1 | user_end_date1 |
| --- | --- | --- | --- | --- | --- | --- | --- | --- | --- | --- | --- | --- | --- |
|  | 3 | **Electrical Installation** |  | 2018-04-26 | 2018-06-27 |  |  |  |  |  |  |  |  |
| A114430 |  | Cable tray installation | 15d | 2018-04-26 | 2018-05-16 | A114380 | 67d | 0d | MH-Wtg [41.18 h] | 18,531 | 003 |  |  |
| A114480 |  | Earthing work | 10d | 2018-04-26 | 2018-05-09 | A114380 | 102d |  | MH-Wtg [30.89 h] | 13,901 | 003 |  |  |
| A114440 |  | Cable laying | 10d | 2018-05-17 | 2018-05-30 | A114430 | 67d | 0d | MH-Wtg [51.48 h] | 23,166 | 003 |  |  |
| A114450 |  | Installation of electrical items | 10d | 2018-05-31 | 2018-06-13 | A114440 | 67d | 0d | MH-Wtg [30.89 h] | 13,901 | 003 |  |  |
| A114460 |  | Glanding and termination | 10d | 2018-06-14 | 2018-06-27 | A114450 | 67d |  | MH-Wtg [30.89 h] | 13,901 | 003 |  |  |
| A114470 |  | Installation of light fittings | 10d | 2018-06-14 | 2018-06-27 | A114450 | 67d |  | MH-Wtg [20.59 h] | 9,266 | 003 |  |  |
|  | 4 | **Instrument Installation** |  | 2018-04-26 | 2018-08-08 |  |  |  |  |  |  |  |  |
| A114490 |  | Cable tray installation | 10d | 2018-04-26 | 2018-05-09 | A114430 SS | 87d | 0d | MH-Wtg [25 h] | 11,250 | 003 |  |  |
| A114500 |  | Cable laying | 10d | 2018-05-10 | 2018-05-23 | A114490 | 87d | 50d | MH-Wtg [35.39 h] | 15,926 | 003 |  |  |
| A114510 |  | Installation of JBs and Air headers | 5d | 2018-05-10 | 2018-05-16 | A114490 | 92d | 55d | MH-Wtg [14.16 h] | 6,372 | 003 |  |  |
| A114520 |  | Installation of instruments | 10d | 2018-07-09 | 2018-07-20 | A114400 FF | 37d | 0d | MH-Wtg [21.23 h] | 9,554 | 003 |  |  |
| A114530 |  | Glanding and termination | 8d | 2018-07-23 | 2018-08-01 | A114500 FF, A114510 FF, A114520 | 37d | 0d | MH-Wtg [21.23 h] | 9,554 | 003 |  |  |
| A114540 |  | Hookup of instruments | 10d | 2018-07-23 | 2018-08-03 | A114520 FF, A114400 | 40d | 3d | MH-Wtg [14.16 h] | 6,372 | 003 |  |  |
| A114550 |  | Testing & calibration | 5d | 2018-08-02 | 2018-08-08 | A114540 FF, A114530 | 37d |  | MH-Wtg [7.08 h] | 3,186 | 003 |  |  |
|  | 5 | **B103D- WNA Tanker Loading Bays** |  | 2018-03-01 | 2018-07-24 |  |  |  |  |  |  |  |  |
|  | 1 | **Civil & Structural Work** |  | 2018-03-01 | 2018-07-12 |  |  |  |  |  |  |  |  |
| A114570 |  | RCC/Civil construction work | 37d | 2018-03-01 | 2018-04-20 | A113870 | 67d | 0d | MH-Wtg [38.09 h] | 17,141 | 003 | 2018-02-28 | 2018-04-20 |
| A114580 |  | Structural steel erection | 21d | 2018-04-02 | 2018-04-30 | A114570 FS-15d | 67d | 0d | MH-Wtg [47.62 h] | 21,429 | 003 | 2018-03-30 | 2018-04-30 |
| A114590 |  | Anti-corrosive lining work | 10d | 2018-06-29 | 2018-07-12 | A114620 | 56d |  | MH-Wtg [4.76 h] | 2,142 | 003 |  |  |
| A114600 |  | Painting work | 10d | 2018-06-29 | 2018-07-12 | A114630 SS | 71d |  | MH-Wtg [4.76 h] | 2,142 | 003 |  |  |
|  | 2 | **Mechanical Erection & Piping** |  | 2018-05-25 | 2018-07-24 |  |  |  |  |  |  |  |  |
| A114610 |  | Equipment installation | 10d | 2018-05-25 | 2018-06-07 | A114580, 115280 | 49d | 0d | MH-Wtg [28.57 h] | 12,857 | 003 |  |  |
| A114620 |  | Piping erection | 15d | 2018-06-08 | 2018-06-28 | A114610, 106100 | 49d | 0d | MH-Wtg [38.09 h] | 17,141 | 003 |  |  |
| A114630 |  | Testing and boxup | 10d | 2018-06-29 | 2018-07-12 | A114620 | 49d | 0d | MH-Wtg [14.29 h] | 6,431 | 003 |  |  |
| A114640 |  | Insulation of equipments and piping (Deleted) | 8d | 2018-07-13 | 2018-07-24 | A114630 | 71d |  | MH-Wtg |  | 003 |  |  |
| A114650 |  | Painting work | 5d | 2018-07-13 | 2018-07-19 | A114630 | 66d |  | MH-Wtg [4.76 h] | 2,142 | 003 |  |  |

| ID | WBS | Activity | Duration | Start | Finish | Predecessors | Total float | Free float | Resources | Cost | UNIT DESCRIPTION | user_end_date1 | user_start_date1 |
| --- | --- | --- | --- | --- | --- | --- | --- | --- | --- | --- | --- | --- | --- |
|  | 3 | **Electrical Installation** |  | 2018-05-01 | 2018-06-12 |  |  |  |  |  |  |  |  |
| A114660 |  | Cable tray installation | 5d | 2018-05-01 | 2018-05-07 | A114580 | 96d | 0d | MH-Wtg [8.24 h] | 3,708 | 003 |  |  |
| A114670 |  | Cable laying | 3d | 2018-05-08 | 2018-05-10 | A114660 | 96d | 0d | MH-Wtg [10.3 h] | 4,635 | 003 |  |  |
| A114700 |  | Installation of light fittings | 3d | 2018-05-11 | 2018-05-15 | A114670 | 96d | 0d | MH-Wtg [8.24 h] | 3,708 | 003 |  |  |
| A114690 |  | Glanding and termination | 2d | 2018-05-16 | 2018-05-17 | A114700 | 96d |  | MH-Wtg [8.24 h] | 3,708 | 003 |  |  |
| A114710 |  | Earthing work | 3d | 2018-06-08 | 2018-06-12 | A114610 | 78d |  | MH-Wtg [6.18 h] | 2,781 | 003 |  |  |
|  | 4 | **Instrument Installation** |  | 2018-05-01 | 2018-07-23 |  |  |  |  |  |  |  |  |
| A114720 |  | Cable tray installation | 5d | 2018-05-01 | 2018-05-07 | A114660 SS | 99d | 0d | MH-Wtg [5.66 h] | 2,547 | 003 |  |  |
| A114730 |  | Cable laying | 3d | 2018-05-08 | 2018-05-10 | A114720 | 99d | 50d | MH-Wtg [7.08 h] | 3,186 | 003 |  |  |
| A114740 |  | Installation of JBs and Air headers | 2d | 2018-05-08 | 2018-05-09 | A114720 | 100d | 51d | MH-Wtg [2.83 h] | 1,274 | 003 |  |  |
| A114750 |  | Installation of instruments | 2d | 2018-07-13 | 2018-07-16 | A114630 | 49d | 0d | MH-Wtg [4.25 h] | 1,913 | 003 |  |  |
| A114770 |  | Hookup of instruments | 3d | 2018-07-13 | 2018-07-17 | A114750 FF, A114630 | 53d | 4d | MH-Wtg [2.83 h] | 1,274 | 003 |  |  |
| A114760 |  | Glanding and termination | 3d | 2018-07-17 | 2018-07-19 | A114730 FF, A114740 FF, A114750 | 49d | 0d | MH-Wtg [4.25 h] | 1,913 | 003 |  |  |
| A114780 |  | Testing & calibration | 2d | 2018-07-20 | 2018-07-23 | A114770 FF, A114760 | 49d |  | MH-Wtg [1.42 h] | 639 | 003 |  |  |
|  | 50 | **B103E- CNA Tanker Lading Bays** |  | 2018-03-01 | 2018-07-24 |  |  |  |  |  |  |  |  |
|  | 1 | **Civil & Structural Work** |  | 2018-03-01 | 2018-07-12 |  |  |  |  |  |  |  |  |
| A114800 |  | RCC/Civil construction work | 37d | 2018-03-01 | 2018-04-20 | A114570 SS | 67d | 0d | MH-Wtg [38.09 h] | 17,141 | 003 | 2018-04-30 |  |
| A114810 |  | Structural steel erection | 21d | 2018-04-02 | 2018-04-30 | A114800 FS-15d | 69d | 0d | MH-Wtg [47.62 h] | 21,429 | 003 |  |  |
| A114820 |  | Anti-corrosive lining work | 10d | 2018-06-29 | 2018-07-12 | A114850 | 56d |  | MH-Wtg [4.76 h] | 2,142 | 003 | 2018-05-25 | 2018-04-30 |
| A114830 |  | Painting work | 10d | 2018-06-29 | 2018-07-12 | A114860 SS | 71d |  | MH-Wtg [4.76 h] | 2,142 | 003 | 2018-05-20 | 2018-04-30 |
|  | 2 | **Mechanical Erection & Piping** |  | 2018-05-25 | 2018-07-24 |  |  |  |  |  |  |  |  |
| A114840 |  | Equipment installation | 10d | 2018-05-25 | 2018-06-07 | A114810, 115280 | 51d | 0d | MH-Wtg [28.57 h] | 12,857 | 003 |  |  |
| A114850 |  | Piping erection | 15d | 2018-06-08 | 2018-06-28 | A114840, 110560 | 51d | 0d | MH-Wtg [38.09 h] | 17,141 | 003 |  |  |
| A114860 |  | Testing and boxup | 10d | 2018-06-29 | 2018-07-12 | A114850 | 51d | 0d | MH-Wtg [14.29 h] | 6,431 | 003 |  |  |
| A114870 |  | Insulation of equipments and piping (Deleted) | 8d | 2018-07-13 | 2018-07-24 | A114860 | 71d |  | MH-Wtg |  | 003 |  |  |
| A114880 |  | Painting work | 7d | 2018-07-13 | 2018-07-23 | A114860 | 64d |  | MH-Wtg [4.76 h] | 2,142 | 003 |  |  |

| ID | WBS | Activity | Duration | Start | Finish | Predecessors | Total float | Free float | Resources | Cost | UNIT DESCRIPTION | user_start_date1 | user_end_date1 |
| --- | --- | --- | --- | --- | --- | --- | --- | --- | --- | --- | --- | --- | --- |
|  | 3 | **Electrical Installation** |  | 2018-05-01 | 2018-06-12 |  |  |  |  |  |  |  |  |
| A114890 |  | Cable tray installation | 5d | 2018-05-01 | 2018-05-07 | A114810 | 96d | 0d | MH-Wtg [8.24 h] | 3,708 | 003 |  |  |
| A114900 |  | Cable laying | 3d | 2018-05-08 | 2018-05-10 | A114890 | 96d | 0d | MH-Wtg [10.3 h] | 4,635 | 003 |  |  |
| A114930 |  | Installation of light fittings | 3d | 2018-05-11 | 2018-05-15 | A114900 | 96d | 0d | MH-Wtg [8.24 h] | 3,708 | 003 |  |  |
| A114920 |  | Glanding and termination | 2d | 2018-05-16 | 2018-05-17 | A114930 | 96d |  | MH-Wtg [8.24 h] | 3,708 | 003 |  |  |
| A114940 |  | Earthing work | 3d | 2018-06-08 | 2018-06-12 | A114840 | 78d |  | MH-Wtg [6.18 h] | 2,781 | 003 |  |  |
|  | 4 | **Instrument Installation** |  | 2018-05-01 | 2018-07-19 |  |  |  |  |  |  |  |  |
| A114950 |  | Cable tray installation | 5d | 2018-05-01 | 2018-05-07 | A114890 SS | 99d | 0d | MH-Wtg [5.66 h] | 2,547 | 003 |  |  |
| A114960 |  | Cable laying | 3d | 2018-05-08 | 2018-05-10 | A114950 | 99d | 48d | MH-Wtg [7.08 h] | 3,186 | 003 |  |  |
| A114970 |  | Installation of JBs and Air headers | 2d | 2018-05-08 | 2018-05-09 | A114950 | 100d | 49d | MH-Wtg [2.83 h] | 1,274 | 003 |  |  |
| A114980 |  | Installation of instruments | 2d | 2018-07-11 | 2018-07-12 | A114860 FF | 51d | 0d | MH-Wtg [4.25 h] | 1,913 | 003 |  |  |
| A114990 |  | Glanding and termination | 3d | 2018-07-13 | 2018-07-17 | A114960 FF, A114970 FF, A114980 | 51d | 0d | MH-Wtg [4.25 h] | 1,913 | 003 |  |  |
| A115000 |  | Hookup of instruments | 3d | 2018-07-13 | 2018-07-17 | A114980 FF, A114860 | 53d | 2d | MH-Wtg [2.83 h] | 1,274 | 003 |  |  |
| A115010 |  | Testing & calibration | 2d | 2018-07-18 | 2018-07-19 | A115000 FF, A114990 | 51d |  | MH-Wtg [1.42 h] | 639 | 003 |  |  |
|  | 6 | **B104A- Caustic, Sulphuric Storage** |  | 2018-01-01 | 2018-07-12 |  |  |  |  |  |  |  |  |
|  | 1 | **Civil & Structural Work** |  | 2018-01-01 | 2018-05-18 |  |  |  |  |  |  |  |  |
| A115020 |  | Equipment foundations | 42d | 2018-01-01 | 2018-02-28 | 100850 | 67d | 0d | MH-Wtg [428.56 h] | 192,852 | 003 | 2018-01-01 | 2018-02-28 |
| A115030 |  | RCC/Civil construction work | 20d | 2018-02-15 | 2018-03-14 | A115020 FS-10d | 85d | 0d | MH-Wtg [285.71 h] | 128,570 | 003 | 2018-01-01 | 2018-02-28 |
| A115040 |  | Structural steel erection | 25d | 2018-02-26 | 2018-03-30 | A115030 FS-13d | 85d | 20d | MH-Wtg [142.85 h] | 64,283 | 003 | 2018-02-28 | 2018-03-30 |
| A115050 |  | Anti-corrosive lining work | 15d | 2018-04-30 | 2018-05-18 | A115080 | 95d |  | MH-Wtg [47.62 h] | 21,429 | 003 |  |  |
| A115060 |  | Painting work | 10d | 2018-05-04 | 2018-05-17 | A115090 SS | 111d |  | MH-Wtg [47.62 h] | 21,429 | 003 |  |  |
|  | 2 | **Mechanical Erection & Piping** |  | 2018-03-05 | 2018-06-21 |  |  |  |  |  |  |  |  |
| A115070 |  | Equipment installation | 20d | 2018-03-05 | 2018-03-30 | A115020, 115750 | 65d | 0d | MH-Wtg [380.94 h] | 171,423 | 003 |  |  |
| A115080 |  | Piping erection | 30d | 2018-03-19 | 2018-04-27 | A115040 FF, A115070 FS-10d, 106140 SS+10d, 114510 FF+10d | 65d | 0d | MH-Wtg [285.71 h] | 128,570 | 003 |  |  |
| A115090 |  | Testing and boxup | 20d | 2018-05-04 | 2018-05-31 | A115080 FS-5d, 114650 FF+10d | 56d | 0d | MH-Wtg [142.85 h] | 64,283 | 003 |  |  |
| A115100 |  | Insulation of equipments and piping (Deleted) | 30d | 2018-05-11 | 2018-06-21 | A115090 FS-15d | 94d |  | MH-Wtg |  | 003 |  |  |
| A115110 |  | Painting work | 10d | 2018-05-18 | 2018-05-31 | A115090 FS-10d | 101d |  | MH-Wtg [47.62 h] | 21,429 | 003 |  |  |

| ID | WBS | Activity | Duration | Start | Finish | Predecessors | Total float | Free float | Resources | Cost | UNIT DESCRIPTION |
| --- | --- | --- | --- | --- | --- | --- | --- | --- | --- | --- | --- |
|  | 3 | **Electrical Installation** |  | 2018-04-02 | 2018-06-15 |  |  |  |  |  |  |
| A115120 |  | Cable tray installation | 20d | 2018-04-02 | 2018-04-27 | A115070 | 75d | 0d | MH-Wtg [86.7 h] | 39,015 | 003 |
| A115170 |  | Earthing work | 10d | 2018-04-02 | 2018-04-13 | A115070 | 120d |  | MH-Wtg [65.03 h] | 29,264 | 003 |
| A115130 |  | Cable laying | 15d | 2018-04-23 | 2018-05-11 | A115120 FS-5d | 75d | 0d | MH-Wtg [108.38 h] | 48,771 | 003 |
| A115140 |  | Installation of electrical items | 15d | 2018-05-07 | 2018-05-25 | A115130 FS-5d | 75d | 0d | MH-Wtg [65.03 h] | 29,264 | 003 |
| A115150 |  | Glanding and termination | 20d | 2018-05-14 | 2018-06-08 | A115140 FS-10d | 80d |  | MH-Wtg [43.35 h] | 19,508 | 003 |
| A115160 |  | Installation of light fittings | 15d | 2018-05-28 | 2018-06-15 | A115140 | 75d |  | MH-Wtg [43.35 h] | 19,508 | 003 |
|  | 4 | **Instrument Installation** |  | 2018-04-02 | 2018-07-12 |  |  |  |  |  |  |
| A115180 |  | Cable tray installation | 20d | 2018-04-02 | 2018-04-27 | A115120 SS | 85d | 0d | MH-Wtg [56.63 h] | 25,484 | 003 |
| A115190 |  | Cable laying | 15d | 2018-04-23 | 2018-05-11 | A115180 FS-5d | 85d | 29d | MH-Wtg [70.78 h] | 31,851 | 003 |
| A115200 |  | Installation of JBs and Air headers | 10d | 2018-04-23 | 2018-05-04 | A115180 FS-5d | 90d | 34d | MH-Wtg [28.31 h] | 12,740 | 003 |
| A115210 |  | Installation of instruments | 15d | 2018-05-11 | 2018-05-31 | A115090 FF | 56d | 0d | MH-Wtg [42.47 h] | 19,112 | 003 |
| A115230 |  | Hookup of instruments | 20d | 2018-05-18 | 2018-06-14 | A115210 FF, A115090 FS-10d | 76d | 20d | MH-Wtg [28.31 h] | 12,740 | 003 |
| A115220 |  | Glanding and termination | 20d | 2018-05-25 | 2018-06-21 | A115190 FF, A115200 FF, A115210 FS-5d | 56d | 0d | MH-Wtg [42.47 h] | 19,112 | 003 |
| A115240 |  | Testing & calibration | 15d | 2018-06-22 | 2018-07-12 | A115230 FF, A115220 | 56d |  | MH-Wtg [14.16 h] | 6,372 | 003 |
|  | 7 | **B104B- HSD Storage (Deleted)** |  | 2018-01-01 | 2018-04-17 |  |  |  |  |  |  |
|  | 1 | **Civil & Structural Work** |  | 2018-01-01 | 2018-04-17 |  |  |  |  |  |  |
| A124250 |  | RCC/Civil construction work (Deleted) | 25d | 2018-01-01 | 2018-02-05 |  | 192d |  | MH-Wtg |  | 003 |
| A124240 |  | Equipment foundations (Deleted) | 20d | 2018-03-21 | 2018-04-17 | A115710 | 141d |  | MH-Wtg |  | 003 |
|  | 2 | **Mechanical Erection & Piping** |  | 2018-01-01 | 2018-01-29 |  |  |  |  |  |  |
| A124290 |  | Equipment installation (Deleted) | 20d | 2018-01-01 | 2018-01-29 |  | 197d |  | MH-Wtg |  | 003 |
| A124300 |  | Piping erection (Deleted) | 20d | 2018-01-01 | 2018-01-29 |  | 197d |  | MH-Wtg |  | 003 |
| A124310 |  | Testing and boxup (Deleted) | 10d | 2018-01-01 | 2018-01-12 |  | 207d |  | MH-Wtg |  | 003 |
| A124330 |  | Painting work (Deleted) | 8d | 2018-01-01 | 2018-01-10 |  | 209d |  | MH-Wtg |  | 003 |

| ID | WBS | Activity | Duration | Start | Finish | Predecessors | Complete | Remaining | Total float | Free float | Resources | Cost | Actual cost | UNIT DESCRIPTION |
| --- | --- | --- | --- | --- | --- | --- | --- | --- | --- | --- | --- | --- | --- | --- |
|  | 3 | **Electrical Installation** |  | 2018-01-01 | 2018-01-10 |  |  |  |  |  |  |  |  |  |
| A124340 |  | Cable tray installation (Deleted) | 8d | 2018-01-01 | 2018-01-10 |  |  |  | 209d |  | MH-Wtg |  |  | 003 |
| A124350 |  | Cable laying (Deleted) | 5d | 2018-01-01 | 2018-01-05 |  |  |  | 212d |  | MH-Wtg |  |  | 003 |
| A124360 |  | Installation of electrical items (Deleted) | 3d | 2018-01-01 | 2018-01-03 |  |  |  | 214d |  | MH-Wtg |  |  | 003 |
| A124370 |  | Glanding and termination (Deleted) | 3d | 2018-01-01 | 2018-01-03 |  |  |  | 214d |  | MH-Wtg |  |  | 003 |
| A124380 |  | Installation of light fittings (Deleted) | 2d | 2018-01-01 | 2018-01-02 |  |  |  | 215d |  | MH-Wtg |  |  | 003 |
| A124390 |  | Earthing work (Deleted) | 5d | 2018-01-01 | 2018-01-05 |  |  |  | 212d |  | MH-Wtg |  |  | 003 |
|  | 4 | **Instrument Installation** |  | 2018-01-01 | 2018-01-10 |  |  |  |  |  |  |  |  |  |
| A124400 |  | Cable tray installation (Deleted) | 8d | 2018-01-01 | 2018-01-10 |  |  |  | 209d |  | MH-Wtg |  |  | 003 |
| A124410 |  | Cable laying (Deleted) | 5d | 2018-01-01 | 2018-01-05 |  |  |  | 212d |  | MH-Wtg |  |  | 003 |
| A124420 |  | Installation of JBs and Air headers (Deleted) | 2d | 2018-01-01 | 2018-01-02 |  |  |  | 215d |  | MH-Wtg |  |  | 003 |
| A124430 |  | Installation of instruments (Deleted) | 3d | 2018-01-01 | 2018-01-03 |  |  |  | 214d |  | MH-Wtg |  |  | 003 |
| A124440 |  | Glanding and termination (Deleted) | 3d | 2018-01-01 | 2018-01-03 |  |  |  | 214d |  | MH-Wtg |  |  | 003 |
| A124450 |  | Hookup of instruments (Deleted) | 5d | 2018-01-01 | 2018-01-05 |  |  |  | 212d |  | MH-Wtg |  |  | 003 |
| A124460 |  | Testing & calibration (Deleted) | 3d | 2018-01-01 | 2018-01-03 |  |  |  | 214d |  | MH-Wtg |  |  | 003 |
|  | 8 | **B404C- Ammonia Storage** |  | 2017-11-14 | 2018-08-22 |  |  |  |  |  |  |  |  |  |
|  | 1 | **Civil & Structural Work** |  | 2017-11-14 | 2018-07-18 |  |  |  |  |  |  |  |  |  |
| A115250 |  | Equipment foundations | 106d | 2017-11-14 A | 2018-04-12 | 115740 FF-10d | 39% | 65d | 37d | 0d | MH-Wtg [633 h] | 284,850 | 110,181 | 003 |
| A115260 |  | RCC/Civil construction work | 40d | 2018-03-01 | 2018-04-26 | A115250 FS-30d |  |  | 47d | 0d | MH-Wtg [257 h] | 115,650 |  | 003 |
| A115270 |  | Structural steel erection | 15d | 2018-04-26 | 2018-05-17 | A115260 |  |  | 47d | 0d |  |  |  | 003 |
| A115280 |  | Painting work | 25d | 2018-06-14 | 2018-07-18 | A115320 SS |  |  | 67d |  |  |  |  | 003 |
|  | 2 | **Mechanical Erection & Piping** |  | 2018-04-26 | 2018-08-15 |  |  |  |  |  |  |  |  |  |
| A115300 |  | Equipment installation | 15d | 2018-04-26 | 2018-05-16 | 115740, A115250 |  |  | 27d | 0d | MH-Wtg [476.18 h] | 214,281 |  | 003 |
| A115310 |  | Piping erection | 30d | 2018-05-17 | 2018-06-27 | A115300, 106220 SS+10d |  |  | 27d | 0d | MH-Wtg [357.13 h] | 160,709 |  | 003 |
| A115320 |  | Testing and boxup | 25d | 2018-06-14 | 2018-07-18 | A115310 FS-10d |  |  | 27d | 0d | MH-Wtg [178.57 h] | 80,357 |  | 003 |
| A115330 |  | Insulation of equipments and piping | 30d | 2018-07-05 | 2018-08-15 | A115320 FS-10d |  |  | 32d |  | MH-Wtg [119.04 h] | 53,568 |  | 003 |
| A115340 |  | Painting work | 20d | 2018-07-05 | 2018-08-01 | A115320 FS-10d |  |  | 57d |  | MH-Wtg [59.52 h] | 26,784 |  | 003 |

| ID | WBS | Activity | Duration | Start | Finish | Predecessors | Total float | Free float | Resources | Cost | UNIT DESCRIPTION | user_start_date1 | user_end_date1 |
| --- | --- | --- | --- | --- | --- | --- | --- | --- | --- | --- | --- | --- | --- |
|  | 3 | **Electrical Installation** |  | 2018-05-17 | 2018-07-26 |  |  |  |  |  |  |  |  |
| A115400 |  | Earthing work | 15d | 2018-05-17 | 2018-06-06 | A115300 | 82d |  | MH-Wtg [77.22 h] | 34,749 | 003 |  |  |
| A115350 |  | Cable tray installation | 20d | 2018-05-17 | 2018-06-14 | A115270 | 47d | 0d | MH-Wtg [102.96 h] | 46,332 | 003 |  |  |
| A115360 |  | Cable laying | 15d | 2018-06-07 | 2018-06-28 | A115350 FS-5d | 47d | 0d | MH-Wtg [128.7 h] | 57,915 | 003 |  |  |
| A115370 |  | Installation of electrical items | 15d | 2018-06-14 | 2018-07-05 | A115360 FS-10d | 47d | 0d | MH-Wtg [77.22 h] | 34,749 | 003 |  |  |
| A115380 |  | Glanding and termination | 20d | 2018-06-28 | 2018-07-26 | A115370 FS-5d | 47d |  | MH-Wtg [77.22 h] | 34,749 | 003 |  |  |
| A115390 |  | Installation of light fittings | 15d | 2018-07-05 | 2018-07-26 | A115370 | 47d |  | MH-Wtg [51.48 h] | 23,166 | 003 |  |  |
|  | 4 | **Instrument Installation** |  | 2018-05-17 | 2018-08-22 |  |  |  |  |  |  |  |  |
| A115410 |  | Cable tray installation | 20d | 2018-05-17 | 2018-06-14 | A115350 SS | 57d | 0d | MH-Wtg [70.78 h] | 31,851 | 003 |  |  |
| A115420 |  | Cable laying | 15d | 2018-06-07 | 2018-06-28 | A115410 FS-5d | 57d | 30d | MH-Wtg [88.48 h] | 39,816 | 003 |  |  |
| A115430 |  | Installation of JBs and Air headers | 10d | 2018-06-07 | 2018-06-21 | A115410 FS-5d | 62d | 35d | MH-Wtg [35.39 h] | 15,926 | 003 |  |  |
| A115440 |  | Installation of instruments | 20d | 2018-06-21 | 2018-07-18 | A115320 FF | 27d | 0d | MH-Wtg [53.09 h] | 23,891 | 003 |  |  |
| A115460 |  | Hookup of instruments | 20d | 2018-07-05 | 2018-08-01 | A115440 FF, A115320 FS-10d | 42d | 15d | MH-Wtg [35.39 h] | 15,926 | 003 |  |  |
| A115450 |  | Glanding and termination | 20d | 2018-07-12 | 2018-08-08 | A115420 FF, A115430 FF, A115440 FS-5d | 27d | 0d | MH-Wtg [53.09 h] | 23,891 | 003 |  |  |
| A115470 |  | Testing & calibration | 10d | 2018-08-09 | 2018-08-22 | A115460 FF, A115450 | 27d |  | MH-Wtg [17.7 h] | 7,965 | 003 |  |  |
|  | 51 | **B104D- Caustic, Sulphuric Tanker Unloading** |  | 2018-01-24 | 2018-07-24 |  |  |  |  |  |  |  |  |
|  | 1 | **Civil & Structural Work** |  | 2018-01-24 | 2018-07-12 |  |  |  |  |  |  |  |  |
| A115490 |  | RCC/Civil construction work | 25d | 2018-01-24 | 2018-02-28 | A115020 FF | 95d | 0d | MH-Wtg [38.09 h] | 17,141 | 003 | 2018-02-01 | 2018-02-28 |
| A115500 |  | Structural steel erection | 20d | 2018-02-22 | 2018-03-21 | A115490 FS-5d | 95d | 0d | MH-Wtg [47.62 h] | 21,429 | 003 | 2018-02-20 | 2018-03-20 |
| A115510 |  | Anti-corrosive lining work | 10d | 2018-06-29 | 2018-07-12 | A115540 | 56d |  | MH-Wtg [4.76 h] | 2,142 | 003 | 2018-03-20 | 2018-04-10 |
| A115520 |  | Painting work | 10d | 2018-06-29 | 2018-07-12 | A115550 SS | 71d |  | MH-Wtg [4.76 h] | 2,142 | 003 | 2018-03-27 | 2018-04-10 |
|  | 2 | **Mechanical Erection & Piping** |  | 2018-05-25 | 2018-07-24 |  |  |  |  |  |  |  |  |
| A115530 |  | Equipment installation | 10d | 2018-05-25 | 2018-06-07 | A115500, 115280 | 49d | 0d | MH-Wtg [28.57 h] | 12,857 | 003 |  |  |
| A115540 |  | Piping erection | 15d | 2018-06-08 | 2018-06-28 | A115530, 106140 SS+10d | 49d | 0d | MH-Wtg [38.09 h] | 17,141 | 003 |  |  |
| A115550 |  | Testing and boxup | 10d | 2018-06-29 | 2018-07-12 | A115540, 119590.99.3 FF+5d | 49d | 0d | MH-Wtg [14.29 h] | 6,431 | 003 |  |  |
| A115560 |  | Insulation of equipments and piping (Deleted) | 8d | 2018-07-13 | 2018-07-24 | A115550 | 71d |  | MH-Wtg |  | 003 |  |  |
| A115570 |  | Painting work | 5d | 2018-07-13 | 2018-07-19 | A115550 | 66d |  | MH-Wtg [4.76 h] | 2,142 | 003 |  |  |

| ID | WBS | Activity | Duration | Start | Finish | Predecessors | Complete | Remaining | Total float | Free float | Resources | Cost | Actual cost | UNIT DESCRIPTION | user_start_date1 | user_end_date1 |
| --- | --- | --- | --- | --- | --- | --- | --- | --- | --- | --- | --- | --- | --- | --- | --- | --- |
|  | 3 | **Electrical Installation** |  | 2018-03-22 | 2018-06-12 |  |  |  |  |  |  |  |  |  |  |  |
| A115580 |  | Cable tray installation | 5d | 2018-03-22 | 2018-03-28 | A115500 |  |  | 124d | 0d | MH-Wtg [8.24 h] | 3,708 |  | 003 |  |  |
| A115590 |  | Cable laying | 3d | 2018-03-29 | 2018-04-02 | A115580 |  |  | 124d | 14d | MH-Wtg [10.3 h] | 4,635 |  | 003 |  |  |
| A115620 |  | Installation of light fittings | 3d | 2018-04-23 | 2018-04-25 | A115590, 118160 |  |  | 110d | 0d | MH-Wtg [8.24 h] | 3,708 |  | 003 |  |  |
| A115610 |  | Glanding and termination | 2d | 2018-04-26 | 2018-04-27 | A115620 |  |  | 110d |  | MH-Wtg [8.24 h] | 3,708 |  | 003 |  |  |
| A115630 |  | Earthing work | 3d | 2018-06-08 | 2018-06-12 | A115530 |  |  | 78d |  | MH-Wtg [6.18 h] | 2,781 |  | 003 |  |  |
|  | 4 | **Instrument Installation** |  | 2018-03-22 | 2018-07-23 |  |  |  |  |  |  |  |  |  |  |  |
| A115640 |  | Cable tray installation | 5d | 2018-03-22 | 2018-03-28 | A115580 SS |  |  | 127d | 0d | MH-Wtg [5.66 h] | 2,547 |  | 003 |  |  |
| A115650 |  | Cable laying | 3d | 2018-03-29 | 2018-04-02 | A115640 |  |  | 127d | 78d | MH-Wtg [7.08 h] | 3,186 |  | 003 |  |  |
| A115660 |  | Installation of JBs and Air headers | 2d | 2018-03-29 | 2018-03-30 | A115640 |  |  | 128d | 79d | MH-Wtg [2.83 h] | 1,274 |  | 003 |  |  |
| A115670 |  | Installation of instruments | 2d | 2018-07-13 | 2018-07-16 | A115550 |  |  | 49d | 0d | MH-Wtg [4.25 h] | 1,913 |  | 003 |  |  |
| A115690 |  | Hookup of instruments | 3d | 2018-07-13 | 2018-07-17 | A115670 FF, A115550 |  |  | 53d | 4d | MH-Wtg [2.83 h] | 1,274 |  | 003 |  |  |
| A115680 |  | Glanding and termination | 3d | 2018-07-17 | 2018-07-19 | A115650 FF, A115660 FF, A115670 |  |  | 49d | 0d | MH-Wtg [4.25 h] | 1,913 |  | 003 |  |  |
| A115700 |  | Testing & calibration | 2d | 2018-07-20 | 2018-07-23 | A115690 FF, A115680 |  |  | 49d |  | MH-Wtg [1.42 h] | 639 |  | 003 |  |  |
|  | 52 | **B104E- SNA** |  | 2017-11-24 | 2018-08-31 |  |  |  |  |  |  |  |  |  |  |  |
|  | 1 | **Civil & Structural Work** |  | 2017-11-24 | 2018-06-26 |  |  |  |  |  |  |  |  |  |  |  |
| A115710 |  | Equipment foundations | 82d | 2017-11-24 A | 2018-03-20 | A114330 SS, 101910 | 32% | 56d | 23d | 0d | MH-Wtg [214.28 h] | 96,426 | 30,574 | 003 | 2017-11-30 | 2018-03-20 |
| A115720 |  | RCC/Civil construction work | 25d | 2018-03-07 | 2018-04-10 | A115710 FS-10d |  |  | 68d | 0d | MH-Wtg [142.85 h] | 64,283 |  | 003 | 2018-03-01 | 2018-03-30 |
| A115730 |  | Structural steel erection | 20d | 2018-03-28 | 2018-04-24 | A115720 FS-10d |  |  | 68d | 30d | MH-Wtg [71.43 h] | 32,144 |  | 003 | 2018-03-15 | 2018-04-20 |
| A115740 |  | Anti-corrosive lining work | 15d | 2018-06-06 | 2018-06-26 | A115770 |  |  | 68d |  | MH-Wtg [23.81 h] | 10,715 |  | 003 | 2018-03-30 | 2018-04-30 |
| A115750 |  | Painting work | 10d | 2018-06-11 | 2018-06-22 | A115780 SS |  |  | 85d |  | MH-Wtg [23.81 h] | 10,715 |  | 003 | 2018-04-20 | 2018-05-20 |
|  | 2 | **Mechanical Erection & Piping** |  | 2018-02-21 | 2018-08-10 |  |  |  |  |  |  |  |  |  |  |  |
| A115760 |  | Equipment installation | 80d | 2018-02-21 | 2018-06-12 | A115710 FS-20d, 115750 SS+30d, 115780 FF+10d |  |  | 23d | 0d | MH-Wtg [190.47 h] | 85,712 |  | 003 |  |  |
| A115770 |  | Piping erection | 35d | 2018-04-18 | 2018-06-05 | A115730 FF, A115760 FS-40d, 114200 SS+10d |  |  | 38d | 0d | MH-Wtg [142.85 h] | 64,283 |  | 003 |  |  |
| A115780 |  | Testing and boxup | 30d | 2018-06-11 | 2018-07-20 | A115770 FS-15d, 116180 FF+5d |  |  | 20d | 0d | MH-Wtg [71.43 h] | 32,144 |  | 003 |  |  |
| A115790 |  | Insulation of equipments and piping (Deleted) | 30d | 2018-07-02 | 2018-08-10 | A115780 FS-15d |  |  | 58d |  | MH-Wtg |  |  | 003 |  |  |
| A115800 |  | Painting work | 20d | 2018-07-02 | 2018-07-27 | A115780 FS-15d |  |  | 60d |  | MH-Wtg [23.81 h] | 10,715 |  | 003 |  |  |

| ID | WBS | Activity | Duration | Start | Finish | Predecessors | Total float | Free float | Resources | Cost | UNIT DESCRIPTION | user_start_date1 | user_end_date1 |
| --- | --- | --- | --- | --- | --- | --- | --- | --- | --- | --- | --- | --- | --- |
|  | 3 | **Electrical Installation** |  | 2018-06-13 | 2018-08-28 |  |  |  |  |  |  |  |  |
| A115810 |  | Cable tray installation | 20d | 2018-06-13 | 2018-07-10 | A115760 | 23d | 0d | MH-Wtg [41.18 h] | 18,531 | 003 |  |  |
| A115860 |  | Earthing work | 10d | 2018-06-13 | 2018-06-26 | A115760 | 68d |  | MH-Wtg [30.89 h] | 13,901 | 003 |  |  |
| A115820 |  | Cable laying | 15d | 2018-07-04 | 2018-07-24 | A115810 FS-5d | 23d | 0d | MH-Wtg [51.48 h] | 23,166 | 003 |  |  |
| A115830 |  | Installation of electrical items | 15d | 2018-07-18 | 2018-08-07 | A115820 FS-5d | 23d | 0d | MH-Wtg [30.89 h] | 13,901 | 003 |  |  |
| A115840 |  | Glanding and termination | 20d | 2018-07-25 | 2018-08-21 | A115830 FS-10d | 28d |  | MH-Wtg [30.89 h] | 13,901 | 003 |  |  |
| A115850 |  | Installation of light fittings | 15d | 2018-08-08 | 2018-08-28 | A115830 | 23d |  | MH-Wtg [20.59 h] | 9,266 | 003 |  |  |
|  | 4 | **Instrument Installation** |  | 2018-06-13 | 2018-08-31 |  |  |  |  |  |  |  |  |
| A115870 |  | Cable tray installation | 20d | 2018-06-13 | 2018-07-10 | A115810 SS | 33d | 0d | MH-Wtg [28.31 h] | 12,740 | 003 |  |  |
| A115900 |  | Installation of instruments | 15d | 2018-07-02 | 2018-07-20 | A115780 FF | 20d | 0d | MH-Wtg [21.23 h] | 9,554 | 003 |  |  |
| A115880 |  | Cable laying | 15d | 2018-07-04 | 2018-07-24 | A115870 FS-5d | 33d | 13d | MH-Wtg [35.39 h] | 15,926 | 003 |  |  |
| A115890 |  | Installation of JBs and Air headers | 10d | 2018-07-04 | 2018-07-17 | A115870 FS-5d | 38d | 18d | MH-Wtg [14.16 h] | 6,372 | 003 |  |  |
| A115920 |  | Hookup of instruments | 20d | 2018-07-09 | 2018-08-03 | A115900 FF, A115780 FS-10d | 40d | 20d | MH-Wtg [14.16 h] | 6,372 | 003 |  |  |
| A115910 |  | Glanding and termination | 20d | 2018-07-16 | 2018-08-10 | A115880 FF, A115890 FF, A115900 FS-5d | 20d | 0d | MH-Wtg [21.23 h] | 9,554 | 003 |  |  |
| A115930 |  | Testing & calibration | 15d | 2018-08-13 | 2018-08-31 | A115920 FF, A115910 | 20d |  | MH-Wtg [7.08 h] | 3,186 | 003 |  |  |
|  | 53 | **B104F- SNA Tanker Unloading** |  | 2018-03-01 | 2018-07-23 |  |  |  |  |  |  |  |  |
|  | 1 | **Civil & Structural Work** |  | 2018-03-01 | 2018-07-12 |  |  |  |  |  |  |  |  |
| A115950 |  | RCC/Civil construction work | 37d | 2018-03-01 | 2018-04-20 | A114800 FF | 67d | 0d | MH-Wtg [38.09 h] | 17,141 | 003 | 2018-03-10 | 2018-04-10 |
| A115960 |  | Structural steel erection | 21d | 2018-04-02 | 2018-04-30 | A115950 FS-15d | 67d | 0d | MH-Wtg [47.62 h] | 21,429 | 003 | 2018-04-10 | 2018-04-30 |
| A115970 |  | Anti-corrosive lining work | 10d | 2018-06-29 | 2018-07-12 | A116000 | 56d |  | MH-Wtg [4.76 h] | 2,142 | 003 | 2018-04-30 | 2018-05-15 |
| A115980 |  | Painting work | 10d | 2018-06-29 | 2018-07-12 | A116010 SS | 71d |  | MH-Wtg [4.76 h] | 2,142 | 003 | 2018-04-30 | 2018-05-20 |
|  | 2 | **Mechanical Erection & Piping** |  | 2018-05-25 | 2018-07-20 |  |  |  |  |  |  |  |  |
| A115990 |  | Equipment installation | 10d | 2018-05-25 | 2018-06-07 | A115960, 115280 | 49d | 0d | MH-Wtg [28.57 h] | 12,857 | 003 |  |  |
| A116000 |  | Piping erection | 15d | 2018-06-08 | 2018-06-28 | A115990, 114250 | 49d | 0d | MH-Wtg [38.09 h] | 17,141 | 003 |  |  |
| A116010 |  | Testing and boxup | 10d | 2018-06-29 | 2018-07-12 | A116000 | 49d | 0d | MH-Wtg [14.29 h] | 6,431 | 003 |  |  |
| A116020 |  | Insulation of equipments and piping (Deleted) | 6d | 2018-07-13 | 2018-07-20 | A116010 | 73d |  | MH-Wtg |  | 003 |  |  |
| A116030 |  | Painting work | 5d | 2018-07-13 | 2018-07-19 | A116010 | 66d |  | MH-Wtg [4.76 h] | 2,142 | 003 |  |  |

| ID | WBS | Activity | Duration | Start | Finish | Predecessors | Total float | Free float | Resources | Cost | UNIT DESCRIPTION | user_start_date1 | user_end_date1 |
| --- | --- | --- | --- | --- | --- | --- | --- | --- | --- | --- | --- | --- | --- |
|  | 3 | **Electrical Installation** |  | 2018-05-01 | 2018-06-12 |  |  |  |  |  |  |  |  |
| A116040 |  | Cable tray installation | 5d | 2018-05-01 | 2018-05-07 | A115960 | 96d | 0d | MH-Wtg [8.24 h] | 3,708 | 003 |  |  |
| A116050 |  | Cable laying | 3d | 2018-05-08 | 2018-05-10 | A116040 | 96d | 0d | MH-Wtg [10.3 h] | 4,635 | 003 |  |  |
| A116080 |  | Installation of light fittings | 3d | 2018-05-11 | 2018-05-15 | A116050 | 96d | 0d | MH-Wtg [8.24 h] | 3,708 | 003 |  |  |
| A116070 |  | Glanding and termination | 2d | 2018-05-16 | 2018-05-17 | A116080 | 96d |  | MH-Wtg [8.24 h] | 3,708 | 003 |  |  |
| A116090 |  | Earthing work | 3d | 2018-06-08 | 2018-06-12 | A115990 | 78d |  | MH-Wtg [6.18 h] | 2,781 | 003 |  |  |
|  | 4 | **Instrument Installation** |  | 2018-05-01 | 2018-07-23 |  |  |  |  |  |  |  |  |
| A116100 |  | Cable tray installation | 5d | 2018-05-01 | 2018-05-07 | A116040 SS | 99d | 0d | MH-Wtg [5.66 h] | 2,547 | 003 |  |  |
| A116110 |  | Cable laying | 3d | 2018-05-08 | 2018-05-10 | A116100 | 99d | 50d | MH-Wtg [7.08 h] | 3,186 | 003 |  |  |
| A116120 |  | Installation of JBs and Air headers | 2d | 2018-05-08 | 2018-05-09 | A116100 | 100d | 51d | MH-Wtg [2.83 h] | 1,274 | 003 |  |  |
| A116130 |  | Installation of instruments | 2d | 2018-07-13 | 2018-07-16 | A116010 | 49d | 0d | MH-Wtg [4.25 h] | 1,913 | 003 |  |  |
| A116150 |  | Hookup of instruments | 3d | 2018-07-13 | 2018-07-17 | A116130 FF, A116010 | 53d | 4d | MH-Wtg [2.83 h] | 1,274 | 003 |  |  |
| A116140 |  | Glanding and termination | 3d | 2018-07-17 | 2018-07-19 | A116110 FF, A116120 FF, A116130 | 49d | 0d | MH-Wtg [4.25 h] | 1,913 | 003 |  |  |
| A116160 |  | Testing & calibration | 2d | 2018-07-20 | 2018-07-23 | A116150 FF, A116140 | 49d |  | MH-Wtg [1.42 h] | 639 | 003 |  |  |
|  | 54 | **B104G- Ammonia Tanker Unloading** |  | 2018-02-12 | 2018-09-26 |  |  |  |  |  |  |  |  |
|  | 1 | **Civil & Structural Work** |  | 2018-02-12 | 2018-08-10 |  |  |  |  |  |  |  |  |
| A116180 |  | RCC/Civil construction work | 25d | 2018-02-12 | 2018-03-19 | A116190 SF | 77d | 0d | MH-Wtg [120 h] | 54,000 | 003 | 2018-02-10 | 2018-03-15 |
| A116179 |  | Equipment foundations | 20d | 2018-02-19 | 2018-03-19 | 111560, A116180 FF | 77d | 75d |  |  | 003 |  |  |
| A116190 |  | Structural steel erection | 20d | 2018-03-19 | 2018-04-16 | 119590.9 FF-10d | 57d | 0d | MH-Wtg [180 h] | 81,000 | 003 | 2018-03-10 | 2018-04-10 |
| A116210 |  | Painting work | 10d | 2018-07-30 | 2018-08-10 | A116240 SS | 50d |  | MH-Wtg [80 h] | 36,000 | 003 | 2018-04-10 | 2018-04-25 |
|  | 2 | **Mechanical Erection & Piping** |  | 2018-07-02 | 2018-09-14 |  |  |  |  |  |  |  |  |
| A116220 |  | Equipment installation | 30d | 2018-07-02 | 2018-08-10 | 115280 FF+5d, 119590.99.1 FF+10d, 119590.9 FF+10d, A116179, A116190, 119590.99.2 FF+10d | 2d | 0d | MH-Wtg [28.57 h] | 12,857 | 003 |  |  |
| A116230 |  | Piping erection | 25d | 2018-07-16 | 2018-08-17 | A116220 FS-20d, 106220 SS+10d | 2d | 0d | MH-Wtg [38.09 h] | 17,141 | 003 |  |  |
| A116240 |  | Testing and boxup | 20d | 2018-07-30 | 2018-08-24 | A116230 FS-15d | 2d | 0d | MH-Wtg [14.29 h] | 6,431 | 003 |  |  |
| A116250 |  | Insulation of equipments and piping | 15d | 2018-08-27 | 2018-09-14 | A116240 | 10d |  | MH-Wtg [9.52 h] | 4,284 | 003 |  |  |
| A116260 |  | Painting work | 10d | 2018-08-27 | 2018-09-07 | A116240 | 30d |  | MH-Wtg [4.76 h] | 2,142 | 003 |  |  |

| ID | WBS | Activity | Duration | Start | Finish | Predecessors | Complete | Remaining | Total float | Free float | Calendar | Resources | Cost | Actual cost | UNIT DESCRIPTION | user_start_date1 | user_end_date1 |
| --- | --- | --- | --- | --- | --- | --- | --- | --- | --- | --- | --- | --- | --- | --- | --- | --- | --- |
|  | 3 | **Electrical Installation** |  | 2018-07-30 | 2018-09-24 |  |  |  |  |  |  |  |  |  |  |  |  |
| A116320 |  | Earthing work | 10d | 2018-07-30 | 2018-08-10 | A116220 FF |  |  | 35d |  |  | MH-Wtg [4.34 h] | 1,953 |  | 003 |  |  |
| A116270 |  | Cable tray installation | 10d | 2018-08-13 | 2018-08-24 | A116220 |  |  | 4d | 0d |  | MH-Wtg [8.67 h] | 3,902 |  | 003 |  |  |
| A116280 |  | Cable laying | 8d | 2018-08-27 | 2018-09-05 | A116270 |  |  | 4d | 0d |  | MH-Wtg [10.84 h] | 4,878 |  | 003 |  |  |
| A116310 |  | Installation of light fittings | 5d | 2018-09-06 | 2018-09-12 | A116280 |  |  | 4d | 0d |  | MH-Wtg [8.67 h] | 3,902 |  | 003 |  |  |
| A116300 |  | Glanding and termination | 8d | 2018-09-13 | 2018-09-24 | A116310 |  |  | 4d |  |  | MH-Wtg [8.67 h] | 3,902 |  | 003 |  |  |
|  | 4 | **Instrument Installation** |  | 2018-08-13 | 2018-09-26 |  |  |  |  |  |  |  |  |  |  |  |  |
| A116330 |  | Cable tray installation | 10d | 2018-08-13 | 2018-08-24 | A116270 SS |  |  | 12d | 0d |  | MH-Wtg [5.66 h] | 2,547 |  | 003 |  |  |
| A116340 |  | Cable laying | 8d | 2018-08-27 | 2018-09-05 | A116330 |  |  | 12d | 10d |  | MH-Wtg [7.08 h] | 3,186 |  | 003 |  |  |
| A116350 |  | Installation of JBs and Air headers | 2d | 2018-08-27 | 2018-08-28 | A116330 |  |  | 18d | 16d |  | MH-Wtg [2.83 h] | 1,274 |  | 003 |  |  |
| A116360 |  | Installation of instruments | 10d | 2018-08-27 | 2018-09-07 | A116240 |  |  | 2d | 0d |  | MH-Wtg [4.25 h] | 1,913 |  | 003 |  |  |
| A116380 |  | Hookup of instruments | 5d | 2018-09-03 | 2018-09-07 | A116360 FF, A116240 |  |  | 15d | 13d |  | MH-Wtg [2.83 h] | 1,274 |  | 003 |  |  |
| A116370 |  | Glanding and termination | 8d | 2018-09-10 | 2018-09-19 | A116340 FF, A116350 FF, A116360 |  |  | 2d | 0d |  | MH-Wtg [4.25 h] | 1,913 |  | 003 |  |  |
| A116390 |  | Testing & calibration | 5d | 2018-09-20 | 2018-09-26 | A116380 FF, A116370 |  |  | 2d |  |  | MH-Wtg [1.42 h] | 639 |  | 003 |  |  |
|  | 9 | **B105A- Air Compressor** |  | 2017-11-28 | 2018-06-27 |  |  |  |  |  |  |  |  |  |  |  |  |
|  | 1 | **Civil & Structural Work** |  | 2017-11-28 | 2018-06-04 |  |  |  |  |  |  |  |  |  |  |  |  |
| A116400 |  | Equipment foundations | 54d | 2017-11-28 A | 2018-02-12 | 100940, 114860 FF-25d | 44% | 30d | 15d | 0d | Monsoon | MH-Wtg [380.94 h] | 171,423 | 76,188 | 003 | 2017-12-15 | 2018-01-14 |
| A116410 |  | RCC/Civil construction work | 69d | 2017-11-28 A | 2018-03-05 | A116400 FF | 35% | 45d | 0d |  |  | MH-Wtg [190.47 h] | 85,712 | 29,813 | 003 | 2018-01-14 | 2018-02-14 |
| A116420 |  | Structural steel erection | 20d | 2018-03-06 | 2018-04-02 | A116410 |  |  | 0d |  |  | MH-Wtg [333.32 h] | 149,994 |  | 003 | 2018-02-14 | 2018-03-16 |
| A116440 |  | Painting work | 20d | 2018-05-08 | 2018-06-04 | A116470 SS |  |  | 45d | 0d |  | MH-Wtg [47.62 h] | 21,429 |  | 003 | 2018-03-16 | 2018-03-31 |
|  | 2 | **Mechanical Erection & Piping** |  | 2018-04-03 | 2018-06-25 |  |  |  |  |  |  |  |  |  |  |  |  |
| A116450 |  | Equipment installation | 15d | 2018-04-03 | 2018-04-23 | A116400, 114860, A116420 |  |  | 0d |  |  | MH-Wtg [380.94 h] | 171,423 |  | 003 |  |  |
| A116460 |  | Piping erection | 30d | 2018-04-10 | 2018-05-21 | A116450 FS-10d, 106260 |  |  | 0d |  |  | MH-Wtg [380.94 h] | 171,423 |  | 003 |  |  |
| A116470 |  | Testing and boxup | 20d | 2018-05-08 | 2018-06-04 | A116460 FS-10d |  |  | 0d |  |  | MH-Wtg [142.85 h] | 64,283 |  | 003 |  |  |
| A116490 |  | Painting work | 25d | 2018-05-22 | 2018-06-25 | A116470 FS-10d |  |  | 30d |  |  | MH-Wtg [47.62 h] | 21,429 |  | 003 |  |  |

| ID | WBS | Activity | Duration | Start | Finish | Predecessors | Complete | Remaining | Total float | Free float | Calendar | Resources | Cost | Actual cost | UNIT DESCRIPTION | user_start_date1 | user_end_date1 |
| --- | --- | --- | --- | --- | --- | --- | --- | --- | --- | --- | --- | --- | --- | --- | --- | --- | --- |
|  | 3 | **Electrical Installation** |  | 2018-04-24 | 2018-06-25 |  |  |  |  |  |  |  |  |  |  |  |  |
| A116500 |  | Cable tray installation | 20d | 2018-04-24 | 2018-05-21 | A116450 |  |  | 0d |  |  | MH-Wtg [82.37 h] | 37,067 |  | 003 |  |  |
| A116550 |  | Earthing work | 15d | 2018-04-24 | 2018-05-14 | A116450 |  |  | 32d | 0d |  | MH-Wtg [61.77 h] | 27,797 |  | 003 |  |  |
| A116510 |  | Cable laying | 15d | 2018-05-15 | 2018-06-04 | A116500 FS-5d |  |  | 2d | 0d |  | MH-Wtg [102.96 h] | 46,332 |  | 003 |  |  |
| A116520 |  | Installation of electrical items | 10d | 2018-05-29 | 2018-06-11 | A116510 FS-5d |  |  | 2d | 0d |  | MH-Wtg [61.77 h] | 27,797 |  | 003 |  |  |
| A116530 |  | Glanding and termination | 15d | 2018-06-05 | 2018-06-25 | A116520 FS-5d |  |  | 2d | 0d |  | MH-Wtg [61.77 h] | 27,797 |  | 003 |  |  |
| A116540 |  | Installation of light fittings | 10d | 2018-06-12 | 2018-06-25 | A116520 |  |  | 2d | 0d |  | MH-Wtg [41.18 h] | 18,531 |  | 003 |  |  |
|  | 4 | **Instrument Installation** |  | 2018-04-24 | 2018-06-27 |  |  |  |  |  |  |  |  |  |  |  |  |
| A116560 |  | Cable tray installation | 20d | 2018-04-24 | 2018-05-21 | A116500 SS |  |  | 0d |  |  | MH-Wtg [56.63 h] | 25,484 |  | 003 |  |  |
| A116590 |  | Installation of instruments | 25d | 2018-05-01 | 2018-06-04 | A116470 FF |  |  | 0d |  |  | MH-Wtg [42.47 h] | 19,112 |  | 003 |  |  |
| A116580 |  | Installation of JBs and Air headers | 15d | 2018-05-08 | 2018-05-28 | A116560 FS-10d |  |  | 10d | 0d |  | MH-Wtg [28.31 h] | 12,740 |  | 003 |  |  |
| A116570 |  | Cable laying | 20d | 2018-05-15 | 2018-06-11 | A116560 FS-5d |  |  | 0d |  |  | MH-Wtg [70.78 h] | 31,851 |  | 003 |  |  |
| A116610 |  | Hookup of instruments | 20d | 2018-05-15 | 2018-06-11 | A116590 FF, A116470 FS-15d |  |  | 12d | 0d |  | MH-Wtg [28.31 h] | 12,740 |  | 003 |  |  |
| A116600 |  | Glanding and termination | 15d | 2018-05-22 | 2018-06-11 | A116570 FF, A116580 FF, A116590 FS-10d |  |  | 0d |  |  | MH-Wtg [42.47 h] | 19,112 |  | 003 |  |  |
| A116620 |  | Testing & calibration | 12d | 2018-06-12 | 2018-06-27 | A116610 FF, A116600 |  |  | 0d |  |  | MH-Wtg [14.16 h] | 6,372 |  | 003 |  |  |
|  | 10 | **B105B- Air Drier** |  | 2017-11-28 | 2018-06-27 |  |  |  |  |  |  |  |  |  |  |  |  |
|  | 1 | **Civil & Structural Work** |  | 2017-11-28 | 2018-06-04 |  |  |  |  |  |  |  |  |  |  |  |  |
| A116630 |  | Equipment foundations | 54d | 2017-11-28 A | 2018-02-12 | 101010, A116400 FF | 72% | 15d | 65d | 12d | Monsoon | MH-Wtg [190.47 h] | 85,712 | 61,903 | 003 | 2017-12-15 | 2018-01-14 |
| A116640 |  | RCC/Civil construction work | 69d | 2017-11-28 A | 2018-03-05 | A116410 FF | 35% | 45d | 82d |  |  | MH-Wtg [95.24 h] | 42,858 | 14,907 | 003 | 2018-01-14 | 2018-02-14 |
| A116650 |  | Structural steel erection | 20d | 2018-03-06 | 2018-04-02 | A116420 FF |  |  | 62d |  |  | MH-Wtg [166.66 h] | 74,997 |  | 003 | 2018-02-14 | 2018-03-16 |
| A116670 |  | Painting work | 20d | 2018-05-08 | 2018-06-04 | A116440 FF |  |  | 45d |  |  | MH-Wtg [23.81 h] | 10,715 |  | 003 | 2018-03-16 | 2018-03-31 |
|  | 2 | **Mechanical Erection & Piping** |  | 2018-03-01 | 2018-05-23 |  |  |  |  |  |  |  |  |  |  |  |  |
| A116680 |  | Equipment installation | 15d | 2018-03-01 | 2018-03-21 | A116630, 114930 |  |  | 53d | 0d |  | MH-Wtg [190.47 h] | 85,712 |  | 003 |  |  |
| A116690 |  | Piping erection | 20d | 2018-03-22 | 2018-04-18 | A116680, 106300 |  |  | 53d | 0d |  | MH-Wtg [190.47 h] | 85,712 |  | 003 |  |  |
| A116700 |  | Testing and boxup | 15d | 2018-04-19 | 2018-05-09 | A116690 |  |  | 53d | 0d |  | MH-Wtg [71.43 h] | 32,144 |  | 003 |  |  |
| A116720 |  | Painting work | 10d | 2018-05-10 | 2018-05-23 | A116700 |  |  | 53d |  |  | MH-Wtg [23.81 h] | 10,715 |  | 003 |  |  |

| ID | WBS | Activity | Duration | Start | Finish | Predecessors | Complete | Planned start | Planned finish | Total float | Free float | Resources | Cost | Actual cost | UNIT DESCRIPTION | user_end_date1 | user_start_date1 |
| --- | --- | --- | --- | --- | --- | --- | --- | --- | --- | --- | --- | --- | --- | --- | --- | --- | --- |
|  | 3 | **Electrical Installation** |  | 2018-05-01 | 2018-06-25 |  |  |  |  |  |  |  |  |  |  |  |  |
| A116730 |  | Cable tray installation | 15d | 2018-05-01 | 2018-05-21 | A116500 FF |  |  |  | 27d |  | MH-Wtg [41.18 h] | 18,531 |  | 003 |  |  |
| A116780 |  | Earthing work | 5d | 2018-05-08 | 2018-05-14 | A116550 FF |  |  |  | 32d |  | MH-Wtg [30.89 h] | 13,901 |  | 003 |  |  |
| A116740 |  | Cable laying | 10d | 2018-05-22 | 2018-06-04 | A116510 FF |  |  |  | 17d |  | MH-Wtg [51.48 h] | 23,166 |  | 003 |  |  |
| A116750 |  | Installation of electrical items | 5d | 2018-06-05 | 2018-06-11 | A116520 FF |  |  |  | 12d |  | MH-Wtg [30.89 h] | 13,901 |  | 003 |  |  |
| A116760 |  | Glanding and termination | 8d | 2018-06-14 | 2018-06-25 | A116530 FF |  |  |  | 2d |  | MH-Wtg [30.89 h] | 13,901 |  | 003 |  |  |
| A116770 |  | Installation of light fittings | 5d | 2018-06-19 | 2018-06-25 | A116540 FF |  |  |  | 2d |  | MH-Wtg [20.59 h] | 9,266 |  | 003 |  |  |
|  | 4 | **Instrument Installation** |  | 2018-05-01 | 2018-06-27 |  |  |  |  |  |  |  |  |  |  |  |  |
| A116790 |  | Cable tray installation | 15d | 2018-05-01 | 2018-05-21 | A116560 FF |  |  |  | 27d |  | MH-Wtg [28.31 h] | 12,740 |  | 003 |  |  |
| A116810 |  | Installation of JBs and Air headers | 5d | 2018-05-22 | 2018-05-28 | A116580 FF |  |  |  | 22d |  | MH-Wtg [14.16 h] | 6,372 |  | 003 |  |  |
| A116840 |  | Hookup of instruments | 15d | 2018-05-22 | 2018-06-11 | A116610 FF |  |  |  | 12d |  | MH-Wtg [14.16 h] | 6,372 |  | 003 |  |  |
| A116820 |  | Installation of instruments | 8d | 2018-05-24 | 2018-06-04 | A116590 FF |  |  |  | 17d |  | MH-Wtg [21.23 h] | 9,554 |  | 003 |  |  |
| A116800 |  | Cable laying | 10d | 2018-05-29 | 2018-06-11 | A116570 FF |  |  |  | 12d |  | MH-Wtg [35.39 h] | 15,926 |  | 003 |  |  |
| A116830 |  | Glanding and termination | 10d | 2018-05-29 | 2018-06-11 | A116600 FF |  |  |  | 12d |  | MH-Wtg [21.23 h] | 9,554 |  | 003 |  |  |
| A116850 |  | Testing & calibration | 10d | 2018-06-14 | 2018-06-27 | A116620 FF |  |  |  | 0d |  | MH-Wtg [7.08 h] | 3,186 |  | 003 |  |  |
|  | 11 | **B105C- VAM Unit** |  | 2017-11-23 | 2018-07-12 |  |  |  |  |  |  |  |  |  |  |  |  |
|  | 1 | **Civil & Structural Work** |  | 2017-11-23 | 2018-05-21 |  |  |  |  |  |  |  |  |  |  |  |  |
| A116870 |  | RCC/Civil construction work | 26d | 2017-11-23 A | 2017-12-28 A | A116860 FF | 100% |  |  |  |  | MH-Wtg [95.24 h] | 42,858 | 42,858 | 003 | 2017-12-28 |  |
| A116860 |  | Equipment foundations | 24d | 2017-11-28 A | 2017-12-30 A | 101080, 113120 FS+10d | 100% | 2017-11-28 | 2017-12-29 |  |  | MH-Wtg [190.47 h] | 85,712 | 85,712 | 003 | 2017-12-28 | 2017-12-27 |
| A116880 |  | Structural steel erection | 39d | 2018-01-01 | 2018-02-23 | A116870 |  |  |  | 1d | 0d | MH-Wtg [166.66 h] | 74,997 |  | 003 | 2018-02-25 | 2018-01-02 |
| A116900 |  | Painting work | 17d | 2018-04-27 | 2018-05-21 | A116930 SS |  |  |  | 84d |  | MH-Wtg [23.81 h] | 10,715 |  | 003 | 2018-04-18 | 2018-04-05 |
|  | 2 | **Mechanical Erection & Piping** |  | 2018-02-26 | 2018-06-14 |  |  |  |  |  |  |  |  |  |  |  |  |
| A116910 |  | Equipment installation | 19d | 2018-02-26 | 2018-03-22 | A116860, 115000, A116880 |  |  |  | 1d | 0d | MH-Wtg [142.85 h] | 64,283 |  | 003 |  |  |
| A116920 |  | Piping erection | 25d | 2018-03-23 | 2018-04-26 | A116910 |  |  |  | 1d | 0d | MH-Wtg [190.47 h] | 85,712 |  | 003 |  |  |
| A116930 |  | Testing and boxup | 15d | 2018-04-27 | 2018-05-17 | A116920 |  |  |  | 1d | 0d | MH-Wtg [71.43 h] | 32,144 |  | 003 |  |  |
| A116940 |  | Insulation of equipments and piping | 20d | 2018-05-18 | 2018-06-14 | A116930 |  |  |  | 21d |  | MH-Wtg [47.62 h] | 21,429 |  | 003 |  |  |
| A116950 |  | Painting work | 10d | 2018-05-18 | 2018-05-31 | A116930 |  |  |  | 76d |  | MH-Wtg [23.81 h] | 10,715 |  | 003 |  |  |

| ID | WBS | Activity | Duration | Start | Finish | Predecessors | Complete | Planned start | Planned finish | Total float | Free float | Calendar | Resources | Cost | Actual cost | UNIT DESCRIPTION | user_start_date1 | user_end_date1 |
| --- | --- | --- | --- | --- | --- | --- | --- | --- | --- | --- | --- | --- | --- | --- | --- | --- | --- | --- |
|  | 3 | **Electrical Installation** |  | 2018-03-23 | 2018-05-29 |  |  |  |  |  |  |  |  |  |  |  |  |  |
| A116960 |  | Cable tray installation | 20d | 2018-03-23 | 2018-04-19 | A116910 |  |  |  | 26d | 0d |  | MH-Wtg [41.18 h] | 18,531 |  | 003 |  |  |
| A117010 |  | Earthing work | 8d | 2018-03-23 | 2018-04-03 | A116910 |  |  |  | 73d |  |  | MH-Wtg [30.89 h] | 13,901 |  | 003 |  |  |
| A116970 |  | Cable laying | 15d | 2018-04-13 | 2018-05-03 | A116960 FS-5d |  |  |  | 33d | 0d |  | MH-Wtg [51.48 h] | 23,166 |  | 003 |  |  |
| A116980 |  | Installation of electrical items | 8d | 2018-05-04 | 2018-05-15 | A116970 |  |  |  | 33d | 0d |  | MH-Wtg [30.89 h] | 13,901 |  | 003 |  |  |
| A116990 |  | Glanding and termination | 10d | 2018-05-16 | 2018-05-29 | A116980 |  |  |  | 33d |  |  | MH-Wtg [30.89 h] | 13,901 |  | 003 |  |  |
| A117000 |  | Installation of light fittings | 5d | 2018-05-16 | 2018-05-22 | A116980 |  |  |  | 38d |  |  | MH-Wtg [20.59 h] | 9,266 |  | 003 |  |  |
|  | 4 | **Instrument Installation** |  | 2018-03-23 | 2018-07-12 |  |  |  |  |  |  |  |  |  |  |  |  |  |
| A117020 |  | Cable tray installation | 25d | 2018-03-23 | 2018-04-26 | A116960 SS |  |  |  | 26d | 0d |  | MH-Wtg [28.31 h] | 12,740 |  | 003 |  |  |
| A117030 |  | Cable laying | 20d | 2018-04-20 | 2018-05-17 | A117020 FS-5d |  |  |  | 26d | 25d |  | MH-Wtg [35.39 h] | 15,926 |  | 003 |  |  |
| A117040 |  | Installation of JBs and Air headers | 10d | 2018-04-27 | 2018-05-10 | A117020 |  |  |  | 31d | 30d |  | MH-Wtg [14.16 h] | 6,372 |  | 003 |  |  |
| A117050 |  | Installation of instruments | 20d | 2018-05-18 | 2018-06-14 | A116930 |  |  |  | 1d | 0d |  | MH-Wtg [21.23 h] | 9,554 |  | 003 |  |  |
| A117060 |  | Glanding and termination | 15d | 2018-06-01 | 2018-06-21 | A117030 FF, A117040 FF, A117050 FS-10d |  |  |  | 1d | 0d |  | MH-Wtg [21.23 h] | 9,554 |  | 003 |  |  |
| A117070 |  | Hookup of instruments | 20d | 2018-06-08 | 2018-07-05 | A117050 FS-5d |  |  |  | 6d | 5d |  | MH-Wtg [14.16 h] | 6,372 |  | 003 |  |  |
| A117080 |  | Testing & calibration | 15d | 2018-06-22 | 2018-07-12 | A117070 FF, A117060 |  |  |  | 1d |  |  | MH-Wtg [7.08 h] | 3,186 |  | 003 |  |  |
|  | 12 | **B105D- Hot Well/Cold Well, Pumps** |  | 2017-11-28 | 2018-07-13 |  |  |  |  |  |  |  |  |  |  |  |  |  |
|  | 1 | **Civil & Structural Work** |  | 2017-11-28 | 2018-05-18 |  |  |  |  |  |  |  |  |  |  |  |  |  |
| A117090 |  | Equipment foundations | 24d | 2017-11-28 A | 2017-12-30 A | 101141, A116860 | 100% | 2017-11-28 | 2017-12-29 |  |  | Monsoon | MH-Wtg [190.47 h] | 85,712 | 85,712 | 003 | 2018-01-01 | 2018-01-31 |
| A117100 |  | RCC/Civil construction work | 23d | 2017-11-28 A | 2017-12-28 A | A117090 FS-10d | 100% |  |  |  |  |  | MH-Wtg [166.66 h] | 74,997 | 74,997 | 003 |  | 2017-12-30 |
| A117110 |  | Structural steel erection | 39d | 2018-01-01 | 2018-02-23 | A117100 |  |  |  | 0d |  |  | MH-Wtg [95.24 h] | 42,858 |  | 003 | 2017-12-30 | 2018-02-10 |
| A117130 |  | Painting work | 10d | 2018-05-07 | 2018-05-18 | A117160 SS |  |  |  | 85d |  |  | MH-Wtg [23.81 h] | 10,715 |  | 003 | 2018-03-10 | 2018-03-30 |
|  | 2 | **Mechanical Erection & Piping** |  | 2018-02-26 | 2018-06-15 |  |  |  |  |  |  |  |  |  |  |  |  |  |
| A117140 |  | Equipment installation | 25d | 2018-02-26 | 2018-03-30 | A117090, A117110 |  |  |  | 0d |  |  | MH-Wtg [190.47 h] | 85,712 |  | 003 |  |  |
| A117150 |  | Piping erection | 35d | 2018-04-02 | 2018-05-18 | A117110 FF, A117140 |  |  |  | 0d |  |  | MH-Wtg [142.85 h] | 64,283 |  | 003 |  |  |
| A117180 |  | Painting work | 15d | 2018-05-03 | 2018-05-23 | A117160 FS-22d |  |  |  | 82d |  |  | MH-Wtg [0.54 h] | 10,736 |  | 003 |  |  |
| A117160 |  | Testing and boxup | 20d | 2018-05-07 | 2018-06-01 | A117150 FS-10d |  |  |  | 0d |  |  | MH-Wtg [71.43 h] | 32,144 |  | 003 |  |  |
| A117170 |  | Insulation of equipments and piping | 20d | 2018-05-21 | 2018-06-15 | A117160 FS-10d |  |  |  | 20d |  |  | MH-Wtg [47.62 h] | 21,429 |  | 003 |  |  |

| ID | WBS | Activity | Duration | Start | Finish | Predecessors | Total float | Free float | Resources | Cost | UNIT DESCRIPTION |
| --- | --- | --- | --- | --- | --- | --- | --- | --- | --- | --- | --- |
|  | 3 | **Electrical Installation** |  | 2018-04-02 | 2018-05-25 |  |  |  |  |  |  |
| A117190 |  | Cable tray installation | 20d | 2018-04-02 | 2018-04-27 | A117140 | 35d | 0d | MH-Wtg [41.18 h] | 18,531 | 003 |
| A117240 |  | Earthing work | 10d | 2018-04-02 | 2018-04-13 | A117140 | 65d |  | MH-Wtg [30.89 h] | 13,901 | 003 |
| A117200 |  | Cable laying | 15d | 2018-04-16 | 2018-05-04 | A117190 FS-10d | 35d | 0d | MH-Wtg [51.48 h] | 23,166 | 003 |
| A117210 |  | Installation of electrical items | 10d | 2018-04-30 | 2018-05-11 | A117200 FS-5d | 35d | 0d | MH-Wtg [30.89 h] | 13,901 | 003 |
| A117220 |  | Glanding and termination | 15d | 2018-05-07 | 2018-05-25 | A117210 FS-5d | 35d |  | MH-Wtg [30.89 h] | 13,901 | 003 |
| A117230 |  | Installation of light fittings | 10d | 2018-05-14 | 2018-05-25 | A117210 | 35d |  | MH-Wtg [20.59 h] | 9,266 | 003 |
|  | 4 | **Instrument Installation** |  | 2018-04-02 | 2018-07-13 |  |  |  |  |  |  |
| A117250 |  | Cable tray installation | 20d | 2018-04-02 | 2018-04-27 | A117190 SS | 40d | 0d | MH-Wtg [28.31 h] | 12,740 | 003 |
| A117260 |  | Cable laying | 15d | 2018-04-16 | 2018-05-04 | A117250 FS-10d | 40d |  | MH-Wtg [35.39 h] | 15,926 | 003 |
| A117270 |  | Installation of JBs and Air headers | 10d | 2018-04-23 | 2018-05-04 | A117250 FS-5d | 40d |  | MH-Wtg [14.16 h] | 6,372 | 003 |
| A117280 |  | Installation of instruments | 15d | 2018-06-04 | 2018-06-22 | A117160 | 0d |  | MH-Wtg [21.23 h] | 9,554 | 003 |
| A117300 |  | Hookup of instruments | 15d | 2018-06-04 | 2018-06-22 | A117280 FF, A117160 FS-5d | 15d |  | MH-Wtg [14.16 h] | 6,372 | 003 |
| A117290 |  | Glanding and termination | 10d | 2018-06-18 | 2018-06-29 | A117260 FF, A117270 FF, A117280 FS-5d | 0d |  | MH-Wtg [21.23 h] | 9,554 | 003 |
| A117310 |  | Testing & calibration | 10d | 2018-07-02 | 2018-07-13 | A117300 FF, A117290 | 0d |  | MH-Wtg [7.08 h] | 3,186 | 003 |
|  | 13 | **B106A- Coal Storage (Deleted)** |  | 2018-01-01 | 2018-01-29 |  |  |  |  |  |  |
|  | 1 | **Civil & Structural Work** |  | 2018-01-01 | 2018-01-29 |  |  |  |  |  |  |
| A117330 |  | RCC/Civil construction work (Deleted) | 20d | 2018-01-01 | 2018-01-29 |  | 197d |  | MH-Wtg [47.96 h] | 21,582 | 003 |
| A117340 |  | Structural steel erection (Deleted) | 20d | 2018-01-01 | 2018-01-29 |  | 197d |  | MH-Wtg [53.29 h] | 23,981 | 003 |
| A117360 |  | Painting work (Deleted) | 5d | 2018-01-01 | 2018-01-05 |  | 212d |  | MH-Wtg [5.33 h] | 2,399 | 003 |
|  | 2 | **Mechanical Erection** |  | 2018-01-01 | 2018-01-29 |  |  |  |  |  |  |
| A117370 |  | Equipment installation (Deleted) | 20d | 2018-01-01 | 2018-01-29 |  | 197d |  | MH-Wtg [106.59 h] | 47,966 | 003 |
|  | 3 | **Electrical Installation** |  | 2018-01-01 | 2018-01-05 |  |  |  |  |  |  |
| A117420 |  | Cable tray installation (Deleted) | 5d | 2018-01-01 | 2018-01-05 |  | 212d |  | MH-Wtg [9.36 h] | 4,212 | 003 |
| A117430 |  | Cable laying (Deleted) | 3d | 2018-01-01 | 2018-01-03 |  | 214d |  | MH-Wtg [11.7 h] | 5,265 | 003 |
| A117440 |  | Installation of electrical items (Deleted) | 3d | 2018-01-01 | 2018-01-03 |  | 214d |  | MH-Wtg [7.02 h] | 3,159 | 003 |
| A117450 |  | Glanding and termination (Deleted) | 2d | 2018-01-01 | 2018-01-02 |  | 215d |  | MH-Wtg [7.02 h] | 3,159 | 003 |
| A117460 |  | Installation of light fittings (Deleted) | 5d | 2018-01-01 | 2018-01-05 |  | 212d |  | MH-Wtg [4.68 h] | 2,106 | 003 |
| A117470 |  | Earthing work (Deleted) | 3d | 2018-01-01 | 2018-01-03 |  | 214d |  | MH-Wtg [7.02 h] | 3,159 | 003 |

| ID | WBS | Activity | Duration | Start | Finish | Predecessors | Complete | Remaining | Total float | Free float | Constraint | Calendar | Resources | Cost | Actual cost | UNIT DESCRIPTION |
| --- | --- | --- | --- | --- | --- | --- | --- | --- | --- | --- | --- | --- | --- | --- | --- | --- |
|  | 4 | **Instrument Installation** |  | 2018-01-01 | 2018-01-01 |  |  |  |  |  |  |  |  |  |  |  |
| A126190 |  | Cable tray installation (Deleted) | 1d | 2018-01-01 | 2018-01-01 |  |  |  | 216d |  |  |  |  |  |  |  |
| A126200 |  | Cable laying (Deleted) | 1d | 2018-01-01 | 2018-01-01 |  |  |  | 216d |  |  |  |  |  |  |  |
| A126210 |  | Installation of JBs and Air headers (Deleted) | 1d | 2018-01-01 | 2018-01-01 |  |  |  | 216d |  |  |  |  |  |  |  |
| A126220 |  | Installation of instruments (Deleted) | 1d | 2018-01-01 | 2018-01-01 |  |  |  | 216d |  |  |  |  |  |  |  |
| A126230 |  | Glanding and termination (Deleted) | 1d | 2018-01-01 | 2018-01-01 |  |  |  | 216d |  |  |  |  |  |  |  |
| A126240 |  | Hookup of instruments (Deleted) | 1d | 2018-01-01 | 2018-01-01 |  |  |  | 216d |  |  |  |  |  |  |  |
| A126250 |  | Testing & calibration (Deleted) | 1d | 2018-01-01 | 2018-01-01 |  |  |  | 216d |  |  |  |  |  |  |  |
|  | 14 | **B106B- Boiler & Coal Handling** |  | 2017-12-11 | 2018-08-13 |  |  |  |  |  |  |  |  |  |  |  |
|  | 1 | **Civil & Structural Work** |  | 2017-12-11 | 2018-07-23 |  |  |  |  |  |  |  |  |  |  |  |
| A117550 |  | Piling work | 35d | 2017-12-11 A | 2018-01-29 | 101210, 113110 FS+10d | 43% | 20d | 16d | 0d | start on or after 2017-12-01 | Monsoon | MH-Wtg [142.85 h] | 64,283 | 27,550 | 003 |
| A117560.1 |  | Chimney foundation | 50d | 2018-01-19 | 2018-03-30 | 114370 FS+15d |  |  | 57d | 0d |  |  |  |  |  | 003 |
| A117570 |  | RCC/Civil construction work | 40d | 2018-01-30 | 2018-03-26 | A117550, 101210.1 |  |  | 16d | 5d |  |  | MH-Wtg [285.71 h] | 128,570 |  | 003 |
| A117560 |  | Equipment foundations | 25d | 2018-02-01 | 2018-03-07 | A117550, 101240.8 |  |  | 19d | 18d |  |  | MH-Wtg [95.24 h] | 42,858 |  | 003 |
| A117580 |  | Structural steel erection | 30d | 2018-03-06 | 2018-04-16 | A117570 FS-20d, 114020 FS-20d |  |  | 11d | 0d |  |  | MH-Wtg [380.94 h] | 171,423 |  | 003 |
| A117560.2 |  | Erection of precast chimney | 30d | 2018-04-16 | 2018-05-25 | A117560.1 FS+10d |  |  | 57d |  |  |  |  |  |  | 003 |
| A117600 |  | Painting work | 20d | 2018-06-26 | 2018-07-23 | A117650 FF |  |  | 46d |  |  |  | MH-Wtg [47.62 h] | 21,429 |  | 003 |
|  | 2 | **Mechanical Erection & Piping** |  | 2018-04-03 | 2018-08-06 |  |  |  |  |  |  |  |  |  |  |  |
| A117610 |  | Equipment installation | 20d | 2018-04-03 | 2018-04-30 | A117560, A117580 FS-20d, 114020 |  |  | 1d | 0d |  |  | MH-Wtg [285.71 h] | 128,570 |  | 003 |
| A117620 |  | Piping erection | 40d | 2018-05-01 | 2018-06-25 | A117580, A117610 |  |  | 1d | 0d |  |  | MH-Wtg [380.94 h] | 171,423 |  | 003 |
| A117610.1 |  | Installation of STG package (Deleted) | 20d | 2018-05-21 | 2018-06-15 | 114020.1 |  |  | 98d |  |  |  |  |  |  | 003 |
| A117630 |  | Testing and boxup | 20d | 2018-06-12 | 2018-07-09 | A117620 FS-10d |  |  | 1d | 0d |  |  | MH-Wtg [142.85 h] | 64,283 |  | 003 |
| A117640 |  | Insulation of equipments and piping | 30d | 2018-06-26 | 2018-08-06 | A117630 FS-10d |  |  | 6d |  |  |  | MH-Wtg [95.24 h] | 42,858 |  | 003 |
| A117650 |  | Painting work | 20d | 2018-06-26 | 2018-07-23 | A117630 FS-10d |  |  | 46d | 0d |  |  | MH-Wtg [47.62 h] | 21,429 |  | 003 |

| ID | WBS | Activity | Duration | Start | Finish | Predecessors | Complete | Remaining | Total float | Free float | Calendar | Resources | Cost | Actual cost | UNIT DESCRIPTION |
| --- | --- | --- | --- | --- | --- | --- | --- | --- | --- | --- | --- | --- | --- | --- | --- |
|  | 3 | **Electrical Installation** |  | 2018-05-01 | 2018-07-16 |  |  |  |  |  |  |  |  |  |  |
| A117660 |  | Cable tray installation | 20d | 2018-05-01 | 2018-05-28 | A117610 |  |  | 21d | 0d |  | MH-Wtg [82.37 h] | 37,067 |  | 003 |
| A117710 |  | Earthing work | 15d | 2018-05-01 | 2018-05-21 | A117610 |  |  | 61d |  |  | MH-Wtg [61.77 h] | 27,797 |  | 003 |
| A117670 |  | Cable laying | 20d | 2018-05-15 | 2018-06-11 | A117660 FS-10d |  |  | 21d | 0d |  | MH-Wtg [102.96 h] | 46,332 |  | 003 |
| A117680 |  | Installation of electrical items | 15d | 2018-06-05 | 2018-06-25 | A117670 FS-5d |  |  | 21d | 0d |  | MH-Wtg [61.77 h] | 27,797 |  | 003 |
| A117690 |  | Glanding and termination | 20d | 2018-06-19 | 2018-07-16 | A117680 FS-5d |  |  | 21d |  |  | MH-Wtg [61.77 h] | 27,797 |  | 003 |
| A117700 |  | Installation of light fittings | 15d | 2018-06-26 | 2018-07-16 | A117680 |  |  | 21d |  |  | MH-Wtg [41.18 h] | 18,531 |  | 003 |
|  | 4 | **Instrument Installation** |  | 2018-05-01 | 2018-08-13 |  |  |  |  |  |  |  |  |  |  |
| A117720 |  | Cable tray installation | 20d | 2018-05-01 | 2018-05-28 | A117660 SS |  |  | 26d | 0d |  | MH-Wtg [56.63 h] | 25,484 |  | 003 |
| A117730 |  | Cable laying | 20d | 2018-05-22 | 2018-06-18 | A117720 FS-5d |  |  | 26d | 25d |  | MH-Wtg [70.78 h] | 31,851 |  | 003 |
| A117740 |  | Installation of JBs and Air headers | 10d | 2018-05-22 | 2018-06-04 | A117720 FS-5d |  |  | 36d | 35d |  | MH-Wtg [28.31 h] | 12,740 |  | 003 |
| A117750 |  | Installation of instruments | 20d | 2018-06-12 | 2018-07-09 | A117630 FF |  |  | 1d | 0d |  | MH-Wtg [42.47 h] | 19,112 |  | 003 |
| A117770 |  | Hookup of instruments | 25d | 2018-06-12 | 2018-07-16 | A117750 FF, A117630 FS-20d |  |  | 21d | 20d |  | MH-Wtg [28.31 h] | 12,740 |  | 003 |
| A117760 |  | Glanding and termination | 15d | 2018-07-03 | 2018-07-23 | A117730 FF, A117740 FF, A117750 FS-5d |  |  | 1d | 0d |  | MH-Wtg [42.47 h] | 19,112 |  | 003 |
| A117780 |  | Testing & calibration | 15d | 2018-07-24 | 2018-08-13 | A117770 FF, A117760 |  |  | 1d |  |  | MH-Wtg [14.16 h] | 6,372 |  | 003 |
|  | 14.1 | **B106B- STG & TG Hall** |  | 2017-12-28 | 2018-10-02 |  |  |  |  |  |  |  |  |  |  |
|  | 1 | **Civil & Structural Work** |  | 2017-12-28 | 2018-07-23 |  |  |  |  |  |  |  |  |  |  |
| A126280 |  | Foundation and columns | 127d | 2017-12-28 A | 2018-06-25 | A126260 | 2% | 125d | 55d | 92d |  | MH-Wtg [210 h] | 94,500 | 1,488 | 003 |
| A126260 |  | Piling work | 15d | 2018-01-01 | 2018-01-19 | 101240.1 |  |  | 38d | 0d | Monsoon | MH-Wtg [380 h] | 171,000 |  | 003 |
| A126270 |  | Equipment foundations | 114d | 2018-01-22 | 2018-06-29 | A126510 FF+10d |  |  | 65d | 44d |  | MH-Wtg |  |  | 003 |
| A126290 |  | Plinth beams | 10d | 2018-02-06 | 2018-02-19 | A126280 SS+10d, A126260 FS+10d |  |  | 38d | 0d |  | MH-Wtg [180 h] | 81,000 |  | 003 |
| A126300 |  | Grade slab | 10d | 2018-02-20 | 2018-03-05 | A126290 |  |  | 72d | 0d |  | MH-Wtg [85 h] | 38,250 |  | 003 |
| A126490 |  | Brick work & plastering | 80d | 2018-03-06 | 2018-06-25 | A126300 |  |  | 72d | 0d |  |  |  |  | 003 |
| A126500 |  | Lintel beams | 64d | 2018-03-06 | 2018-06-01 | A126290 FS+10d |  |  | 38d | 0d |  |  |  |  | 003 |
| A126510 |  | Floor slabs | 64d | 2018-03-20 | 2018-06-15 | A126500 SS+10d |  |  | 38d | 0d |  |  |  |  | 003 |
| A126520 |  | Staircase work | 30d | 2018-05-07 | 2018-06-15 | A126510 FF |  |  | 38d | 0d |  |  |  |  | 003 |
| A126530 |  | Flooring work | 25d | 2018-05-21 | 2018-06-22 | A126510 FS-20d, A126520 FF+5d |  |  | 38d | 0d |  |  |  |  | 003 |
| A126540 |  | Plumbing & sanitary work | 15d | 2018-06-18 | 2018-07-06 | A126530 FS-5d |  |  | 83d |  |  |  |  |  | 003 |
| A126570 |  | Structural steel erection | 20d | 2018-06-18 | 2018-07-13 | A126510 |  |  | 38d | 17d |  |  |  |  | 003 |
| A126550 |  | Doors, windows and handrails | 15d | 2018-06-25 | 2018-07-13 | A126530 |  |  | 78d |  |  |  |  |  | 003 |
| A126560 |  | Painting work | 20d | 2018-06-26 | 2018-07-23 | A126490 |  |  | 72d |  |  |  |  |  | 003 |

| ID | WBS | Activity | Duration | Start | Finish | Predecessors | Total float | Free float | Resources | Cost | UNIT DESCRIPTION |
| --- | --- | --- | --- | --- | --- | --- | --- | --- | --- | --- | --- |
|  | 2 | **Mechanical Erection & Piping** |  | 2018-05-21 | 2018-10-02 |  |  |  |  |  |  |
| A126310 |  | Equipment installation | 62d | 2018-05-21 | 2018-08-14 | A126270 SS+40d, 114020.1, A126570 FF+5d | 21d | 0d | MH-Wtg [220 h] | 99,000 | 003 |
| A126320 |  | Piping erection | 20d | 2018-08-15 | 2018-09-11 | A126290, A126310 | 21d | 0d | MH-Wtg [120 h] | 54,000 | 003 |
| A126330 |  | Testing and boxup | 15d | 2018-08-29 | 2018-09-18 | A126320 FS-10d | 21d | 0d | MH-Wtg [85 h] | 38,250 | 003 |
| A126340 |  | Insulation of equipments and piping | 20d | 2018-09-05 | 2018-10-02 | A126330 FS-10d | 21d |  | MH-Wtg [60 h] | 27,000 | 003 |
| A126350 |  | Painting work | 15d | 2018-09-05 | 2018-09-25 | A126330 FS-10d | 26d |  | MH-Wtg [40 h] | 18,000 | 003 |
|  | 3 | **Electrical Installation** |  | 2018-06-25 | 2018-09-07 |  |  |  |  |  |  |
| A126380 |  | Installation of electrical items | 20d | 2018-06-25 | 2018-07-20 | A126530 | 38d | 0d | MH-Wtg [180 h] | 81,000 | 003 |
| A126360 |  | Cable tray installation | 10d | 2018-07-09 | 2018-07-20 | A126380 FS-10d | 38d | 0d | MH-Wtg [120 h] | 54,000 | 003 |
| A126370 |  | Cable laying | 10d | 2018-07-23 | 2018-08-03 | A126360 | 38d | 0d | MH-Wtg [160 h] | 72,000 | 003 |
| A126410 |  | Earthing work | 10d | 2018-07-23 | 2018-08-03 | A126380 | 63d |  | MH-Wtg [50 h] | 22,500 | 003 |
| A126390 |  | Glanding and termination | 15d | 2018-08-06 | 2018-08-24 | A126370 | 38d | 0d | MH-Wtg [110 h] | 49,500 | 003 |
| A126400 |  | Installation of light fittings | 10d | 2018-08-27 | 2018-09-07 | A126390 | 38d |  | MH-Wtg [60 h] | 27,000 | 003 |
|  | 4 | **Instrument Installation** |  | 2018-07-09 | 2018-10-02 |  |  |  |  |  |  |
| A126420 |  | Cable tray installation | 5d | 2018-07-09 | 2018-07-13 | A126360 SS | 70d | 0d | MH-Wtg [40 h] | 18,000 | 003 |
| A126440 |  | Installation of JBs and Air headers | 2d | 2018-07-12 | 2018-07-13 | A126420 FF | 73d | 52d | MH-Wtg [10 h] | 4,500 | 003 |
| A126430 |  | Cable laying | 3d | 2018-07-16 | 2018-07-18 | A126420 | 70d | 49d | MH-Wtg [60 h] | 27,000 | 003 |
| A126450 |  | Installation of instruments | 8d | 2018-09-07 | 2018-09-18 | A126330 FF | 21d | 0d | MH-Wtg [30 h] | 13,500 | 003 |
| A126460 |  | Glanding and termination | 5d | 2018-09-19 | 2018-09-25 | A126430 FF, A126440 FF, A126450 | 21d | 0d | MH-Wtg [25 h] | 11,250 | 003 |
| A126470 |  | Hookup of instruments | 5d | 2018-09-19 | 2018-09-25 | A126450 | 26d | 5d | MH-Wtg [20 h] | 9,000 | 003 |
| A126480 |  | Testing & calibration | 5d | 2018-09-26 | 2018-10-02 | A126470 FF, A126460 | 21d |  | MH-Wtg [15 h] | 6,750 | 003 |
|  | 15 | **B106D- Condensate Storage, Pumps** |  | 2018-01-29 | 2018-07-31 |  |  |  |  |  |  |
|  | 1 | **Civil & Structural Work** |  | 2018-01-29 | 2018-06-21 |  |  |  |  |  |  |
| A117790 |  | Equipment foundations | 30d | 2018-01-29 | 2018-03-09 | 101280, A119400 FS-15d | 19d | 0d | MH-Wtg [190.47 h] | 85,712 | 003 |
| A117810 |  | Structural steel erection | 15d | 2018-02-06 | 2018-02-26 | A117800 FS-44d | 121d |  | MH-Wtg [95.24 h] | 42,858 | 003 |
| A117800 |  | RCC/Civil construction work | 20d | 2018-03-12 | 2018-04-06 | A117790 | 121d | 0d | MH-Wtg [166.66 h] | 74,997 | 003 |
| A117830 |  | Painting work | 10d | 2018-06-08 | 2018-06-21 | A117860 SS | 68d |  | MH-Wtg [23.81 h] | 10,715 | 003 |

| ID | WBS | Activity | Duration | Start | Finish | Predecessors | Complete | Remaining | Total float | Free float | Constraint | Calendar | Resources | Cost | Actual cost | UNIT DESCRIPTION | user_start_date1 | user_end_date1 |
| --- | --- | --- | --- | --- | --- | --- | --- | --- | --- | --- | --- | --- | --- | --- | --- | --- | --- | --- |
|  | 2 | **Mechanical Erection & Piping** |  | 2018-03-12 | 2018-07-19 |  |  |  |  |  |  |  |  |  |  |  |  |  |
| A117840 |  | Equipment installation | 40d | 2018-03-12 | 2018-05-04 | A117790 |  |  | 19d | 9d |  |  | MH-Wtg [142.85 h] | 64,283 |  | 003 |  |  |
| A117850 |  | Piping erection | 25d | 2018-05-18 | 2018-06-21 | A117840, 119590.99.4 FF+10d, 114780 SS+10d, 115920 FF+5d |  |  | 10d | 0d |  |  | MH-Wtg [190.47 h] | 85,712 |  | 003 |  |  |
| A117860 |  | Testing and boxup | 15d | 2018-06-08 | 2018-06-28 | A117850 FS-10d |  |  | 15d | 0d |  |  | MH-Wtg [71.43 h] | 32,144 |  | 003 |  |  |
| A117870 |  | Insulation of equipments and piping | 15d | 2018-06-29 | 2018-07-19 | A117860 |  |  | 18d |  |  |  | MH-Wtg [47.62 h] | 21,429 |  | 003 |  |  |
| A117880 |  | Painting work | 10d | 2018-06-29 | 2018-07-12 | A117860 |  |  | 53d |  |  |  | MH-Wtg [23.81 h] | 10,715 |  | 003 |  |  |
|  | 3 | **Electrical Installation** |  | 2018-06-08 | 2018-07-31 |  |  |  |  |  |  |  |  |  |  |  |  |  |
| A117890 |  | Cable tray installation | 15d | 2018-06-08 | 2018-06-28 | A117850 FS-10d |  |  | 10d | 0d |  |  | MH-Wtg [41.18 h] | 18,531 |  | 003 |  |  |
| A117940 |  | Earthing work | 8d | 2018-06-15 | 2018-06-26 | A117890 FS-10d |  |  | 35d |  |  |  | MH-Wtg [30.89 h] | 13,901 |  | 003 |  |  |
| A117900 |  | Cable laying | 10d | 2018-06-22 | 2018-07-05 | A117890 FS-5d |  |  | 10d | 0d |  |  | MH-Wtg [51.48 h] | 23,166 |  | 003 |  |  |
| A117910 |  | Installation of electrical items | 8d | 2018-07-06 | 2018-07-17 | A117900 |  |  | 10d | 0d |  |  | MH-Wtg [30.89 h] | 13,901 |  | 003 |  |  |
| A117920 |  | Glanding and termination | 10d | 2018-07-18 | 2018-07-31 | A117910 |  |  | 10d |  |  |  | MH-Wtg [30.89 h] | 13,901 |  | 003 |  |  |
| A117930 |  | Installation of light fittings | 5d | 2018-07-18 | 2018-07-24 | A117910 |  |  | 15d |  |  |  | MH-Wtg [20.59 h] | 9,266 |  | 003 |  |  |
|  | 4 | **Instrument Installation** |  | 2018-06-15 | 2018-07-24 |  |  |  |  |  |  |  |  |  |  |  |  |  |
| A117950 |  | Cable tray installation | 15d | 2018-06-15 | 2018-07-05 | A117890 FS-10d |  |  | 18d | 0d |  |  | MH-Wtg [28.31 h] | 12,740 |  | 003 |  |  |
| A118000 |  | Hookup of instruments | 10d | 2018-06-22 | 2018-07-05 | A117980 FF, A117860 FS-5d |  |  | 28d | 13d |  |  | MH-Wtg [14.16 h] | 6,372 |  | 003 |  |  |
| A117960 |  | Cable laying | 10d | 2018-06-29 | 2018-07-12 | A117950 FS-5d |  |  | 18d | 3d |  |  | MH-Wtg [35.39 h] | 15,926 |  | 003 |  |  |
| A117980 |  | Installation of instruments | 5d | 2018-06-29 | 2018-07-05 | A117860 |  |  | 15d | 0d |  |  | MH-Wtg [21.23 h] | 9,554 |  | 003 |  |  |
| A117970 |  | Installation of JBs and Air headers | 3d | 2018-07-06 | 2018-07-10 | A117950 |  |  | 20d | 5d |  |  | MH-Wtg [14.16 h] | 6,372 |  | 003 |  |  |
| A117990 |  | Glanding and termination | 8d | 2018-07-06 | 2018-07-17 | A117960 FF, A117970 FF, A117980 |  |  | 15d | 0d |  |  | MH-Wtg [21.23 h] | 9,554 |  | 003 |  |  |
| A118010 |  | Testing & calibration | 5d | 2018-07-18 | 2018-07-24 | A118000 FF, A117990 |  |  | 15d |  |  |  | MH-Wtg [7.08 h] | 3,186 |  | 003 |  |  |
|  | 16 | **B107A- Raw Water Storage** |  | 2017-10-26 | 2018-07-26 |  |  |  |  |  |  |  |  |  |  |  |  |  |
|  | 1 | **Civil & Structural Work** |  | 2017-10-26 | 2018-03-30 |  |  |  |  |  |  |  |  |  |  |  |  |  |
| A118030 |  | RCC/Civil construction work | 111d | 2017-10-26 A | 2018-03-30 | 101360, 113112.1 FS+10d | 42% | 64d | 25d | 0d | start on or after 2017-10-05 | Monsoon | MH-Wtg [952.36 h] | 428,562 | 181,463 | 003 | 2017-11-06 | 2018-03-31 |

| ID | WBS | Activity | Duration | Start | Finish | Predecessors | Complete | Remaining | Total float | Free float | Constraint | Calendar | Resources | Cost | Actual cost | UNIT DESCRIPTION | user_start_date1 | user_end_date1 |
| --- | --- | --- | --- | --- | --- | --- | --- | --- | --- | --- | --- | --- | --- | --- | --- | --- | --- | --- |
|  | 2 | **Mechanical Erection & Piping** |  | 2018-05-04 | 2018-07-12 |  |  |  |  |  |  |  |  |  |  |  |  |  |
| A118079 |  | Equipment installation | 10d | 2018-05-04 | 2018-05-17 | 114720, A118030 |  |  | 1d | 0d |  |  |  |  |  | 003 |  |  |
| A118080 |  | Piping erection | 20d | 2018-05-18 | 2018-06-14 | 106460, A118079, 110810 |  |  | 1d | 0d |  |  | MH-Wtg [761.88 h] | 342,846 |  | 003 |  |  |
| A118090 |  | Testing and boxup | 15d | 2018-06-08 | 2018-06-28 | A118080 FS-5d |  |  | 1d | 0d |  |  | MH-Wtg [142.85 h] | 64,283 |  | 003 |  |  |
| A118110 |  | Painting work | 10d | 2018-06-29 | 2018-07-12 | A118090 |  |  | 21d |  |  |  | MH-Wtg [47.62 h] | 21,429 |  | 003 |  |  |
|  | 3 | **Electrical Installation** |  | 2018-05-18 | 2018-07-26 |  |  |  |  |  |  |  |  |  |  |  |  |  |
| A118120 |  | Cable tray installation | 15d | 2018-05-18 | 2018-06-07 | A118079 |  |  | 1d | 0d |  |  | MH-Wtg [102.96 h] | 46,332 |  | 003 |  |  |
| A118170 |  | Earthing work | 10d | 2018-05-18 | 2018-05-31 | A118079 |  |  | 109d |  |  |  |  |  |  | 003 |  |  |
| A118130 |  | Cable laying | 10d | 2018-06-08 | 2018-06-21 | A118120 |  |  | 1d | 0d |  |  | MH-Wtg [102.96 h] | 46,332 |  | 003 |  |  |
| A118131 |  | Installation of electrical items | 10d | 2018-06-22 | 2018-07-05 | A118130 |  |  | 1d | 0d |  |  |  |  |  | 003 |  |  |
| A118150 |  | Glanding and termination | 15d | 2018-07-06 | 2018-07-26 | A118131 |  |  | 1d |  |  |  | MH-Wtg [102.96 h] | 46,332 |  | 003 |  |  |
| A118160 |  | Installation of light fittings | 10d | 2018-07-06 | 2018-07-19 | A118131 |  |  | 74d |  |  |  | MH-Wtg [102.96 h] | 46,332 |  | 003 |  |  |
|  | 4 | **Instrument Installation** |  | 2018-05-18 | 2018-07-26 |  |  |  |  |  |  |  |  |  |  |  |  |  |
| A118180 |  | Cable tray installation | 15d | 2018-05-18 | 2018-06-07 | A118120 SS |  |  | 16d | 0d |  |  | MH-Wtg [62.92 h] | 28,314 |  | 003 |  |  |
| A118190 |  | Cable laying | 10d | 2018-06-08 | 2018-06-21 | A118180 |  |  | 16d | 15d |  |  | MH-Wtg [78.65 h] | 35,393 |  | 003 |  |  |
| A118210 |  | Installation of instruments | 15d | 2018-06-08 | 2018-06-28 | A118090 FF |  |  | 1d | 0d |  |  | MH-Wtg [47 h] | 21,150 |  | 003 |  |  |
| A118220 |  | Glanding and termination | 10d | 2018-06-29 | 2018-07-12 | A118190 FF, A118210 |  |  | 1d | 0d |  |  | MH-Wtg [47.19 h] | 21,236 |  | 003 |  |  |
| A118230 |  | Hookup of instruments | 10d | 2018-06-29 | 2018-07-12 | A118210 FF, A118090 |  |  | 11d | 10d |  |  | MH-Wtg [31.46 h] | 14,157 |  | 003 |  |  |
| A118240 |  | Testing & calibration | 10d | 2018-07-13 | 2018-07-26 | A118230 FF, A118220 |  |  | 1d |  |  |  | MH-Wtg [15.73 h] | 7,079 |  | 003 |  |  |
|  | 17 | **B107B- Raw Water Treatment Plant** |  | 2017-12-26 | 2018-07-10 |  |  |  |  |  |  |  |  |  |  |  |  |  |
|  | 1 | **Civil & Structural Work** |  | 2017-12-26 | 2018-03-13 |  |  |  |  |  |  |  |  |  |  |  |  |  |
| A118260 |  | RCC/Civil construction work | 24d | 2017-12-26 A | 2018-01-29 | A118250 FS-15d | 17% | 20d | 132d |  |  |  | MH-Wtg [857.12 h] | 385,704 | 64,284 | 003 | 2018-02-20 | 2018-03-20 |
| A118250 |  | Equipment foundations | 36d | 2018-01-22 | 2018-03-13 | A126060 |  |  | 16d | 0d | start on or after 2018-01-20 | Monsoon | MH-Wtg [571.41 h] | 257,135 |  | 003 | 2018-01-20 | 2018-03-10 |
|  | 2 | **Mechanical Erection & Piping** |  | 2018-03-14 | 2018-06-26 |  |  |  |  |  |  |  |  |  |  |  |  |  |
| A118300 |  | Equipment installation | 20d | 2018-03-14 | 2018-04-10 | A118250, 113810 |  |  | 16d | 0d |  |  | MH-Wtg [428.56 h] | 192,852 |  | 003 |  |  |
| A118310 |  | Piping erection | 30d | 2018-04-11 | 2018-05-22 | A118300 |  |  | 16d | 0d |  |  | MH-Wtg [714.27 h] | 321,422 |  | 003 |  |  |
| A118320 |  | Testing and boxup | 25d | 2018-05-09 | 2018-06-12 | A118310 FS-10d |  |  | 16d | 0d |  |  | MH-Wtg [214.28 h] | 96,426 |  | 003 |  |  |
| A118340 |  | Painting work | 10d | 2018-06-13 | 2018-06-26 | A118320 |  |  | 36d |  |  |  | MH-Wtg [71.43 h] | 32,144 |  | 003 |  |  |

| ID | WBS | Activity | Duration | Start | Finish | Predecessors | Total float | Free float | Resources | Cost | UNIT DESCRIPTION |
| --- | --- | --- | --- | --- | --- | --- | --- | --- | --- | --- | --- |
|  | 3 | **Electrical Installation** |  | 2018-04-11 | 2018-06-12 |  |  |  |  |  |  |
| A118350 |  | Cable tray installation | 15d | 2018-04-11 | 2018-05-01 | A118300 | 36d | 0d | MH-Wtg [123.55 h] | 55,598 | 003 |
| A118400 |  | Earthing work | 10d | 2018-04-11 | 2018-04-24 | A118300 | 71d |  | MH-Wtg [92.66 h] | 41,697 | 003 |
| A118360 |  | Cable laying | 10d | 2018-05-02 | 2018-05-15 | A118350 | 36d | 0d | MH-Wtg [154.44 h] | 69,498 | 003 |
| A118370 |  | Installation of electrical items | 15d | 2018-05-09 | 2018-05-29 | A118360 FS-5d | 36d | 0d | MH-Wtg [92.66 h] | 41,697 | 003 |
| A118380 |  | Glanding and termination | 10d | 2018-05-30 | 2018-06-12 | A118370 | 36d |  | MH-Wtg [92.66 h] | 41,697 | 003 |
| A118390 |  | Installation of light fittings | 10d | 2018-05-30 | 2018-06-12 | A118370 | 36d |  | MH-Wtg [61.77 h] | 27,797 | 003 |
|  | 4 | **Instrument Installation** |  | 2018-04-11 | 2018-07-10 |  |  |  |  |  |  |
| A118410 |  | Cable tray installation | 15d | 2018-04-11 | 2018-05-01 | A118350 SS | 46d | 0d | MH-Wtg [84.94 h] | 38,223 | 003 |
| A118420 |  | Cable laying | 10d | 2018-05-02 | 2018-05-15 | A118410 | 46d | 30d | MH-Wtg [106.17 h] | 47,777 | 003 |
| A118430 |  | Installation of JBs and Air headers | 5d | 2018-05-02 | 2018-05-08 | A118410 | 51d | 35d | MH-Wtg [42.47 h] | 19,112 | 003 |
| A118440 |  | Installation of instruments | 15d | 2018-05-23 | 2018-06-12 | A118320 FF | 16d | 0d | MH-Wtg [63.7 h] | 28,665 | 003 |
| A118450 |  | Glanding and termination | 10d | 2018-06-13 | 2018-06-26 | A118420 FF, A118430 FF, A118440 | 16d | 0d | MH-Wtg [63.7 h] | 28,665 | 003 |
| A118460 |  | Hookup of instruments | 10d | 2018-06-13 | 2018-06-26 | A118440 FF, A118320 | 26d | 10d | MH-Wtg [42.47 h] | 19,112 | 003 |
| A118470 |  | Testing & calibration | 10d | 2018-06-27 | 2018-07-10 | A118460 FF, A118450 | 16d |  | MH-Wtg [21.23 h] | 9,554 | 003 |
|  | 55 | **B107C- Pump House** |  | 2018-01-12 | 2018-08-10 |  |  |  |  |  |  |
|  | 1 | **Civil & Structural Work** |  | 2018-01-12 | 2018-04-02 |  |  |  |  |  |  |
| A118490 |  | RCC/Civil construction work | 40d | 2018-01-12 | 2018-03-12 | A118500 SF | 29d | 0d | MH-Wtg [471 h] | 211,950 | 003 |
| A118480 |  | Equipment foundations | 15d | 2018-02-19 | 2018-03-12 | A118490 FF | 29d | 25d | MH-Wtg [285.71 h] | 128,570 | 003 |
| A118500 |  | Structural steel erection | 15d | 2018-03-12 | 2018-04-02 | 113740 FF-10d | 14d | 0d |  |  | 003 |
| A118520 |  | Painting work | 10d | 2018-03-12 | 2018-03-26 | A118490 | 158d |  | MH-Wtg [95.24 h] | 42,858 | 003 |
|  | 2 | **Mechanical Erection & Piping** |  | 2018-04-16 | 2018-07-27 |  |  |  |  |  |  |
| A118530 |  | Equipment installation | 25d | 2018-04-16 | 2018-05-18 | A118480, 113740, A118500 | 4d | 0d | MH-Wtg [220 h] | 99,000 | 003 |
| A118540 |  | Piping erection | 30d | 2018-05-21 | 2018-06-29 | A118530 | 4d | 0d | MH-Wtg [340 h] | 153,000 | 003 |
| A118550 |  | Testing and boxup | 20d | 2018-06-18 | 2018-07-13 | A118540 FS-10d | 4d | 0d | MH-Wtg [120 h] | 54,000 | 003 |
| A118570 |  | Painting work | 15d | 2018-07-09 | 2018-07-27 | A118550 FS-5d | 24d |  | MH-Wtg [47.62 h] | 21,429 | 003 |

| ID | WBS | Activity | Duration | Start | Finish | Predecessors | Complete | Remaining | Total float | Free float | Calendar | Resources | Cost | Actual cost | UNIT DESCRIPTION | user_start_date1 | user_end_date1 |
| --- | --- | --- | --- | --- | --- | --- | --- | --- | --- | --- | --- | --- | --- | --- | --- | --- | --- |
|  | 3 | **Electrical Installation** |  | 2018-05-21 | 2018-07-13 |  |  |  |  |  |  |  |  |  |  |  |  |
| A118580 |  | Cable tray installation | 15d | 2018-05-21 | 2018-06-08 | A118530 |  |  | 19d | 0d |  | MH-Wtg [60 h] | 27,000 |  | 003 |  |  |
| A118630 |  | Earthing work | 15d | 2018-05-28 | 2018-06-15 | A118580 FS-10d |  |  | 44d |  |  | MH-Wtg [30 h] | 13,500 |  | 003 |  |  |
| A118590 |  | Cable laying | 15d | 2018-06-04 | 2018-06-22 | A118580 FS-5d |  |  | 24d | 0d |  | MH-Wtg [80 h] | 36,000 |  | 003 |  |  |
| A118600 |  | Installation of electrical items | 15d | 2018-06-11 | 2018-06-29 | A118590 FS-10d, 117890 |  |  | 24d | 0d |  | MH-Wtg [45 h] | 20,250 |  | 003 |  |  |
| A118610 |  | Glanding and termination | 10d | 2018-06-25 | 2018-07-06 | A118600 FS-5d |  |  | 29d |  |  | MH-Wtg [40 h] | 18,000 |  | 003 |  |  |
| A118620 |  | Installation of light fittings | 10d | 2018-07-02 | 2018-07-13 | A118600 |  |  | 24d |  |  | MH-Wtg [30 h] | 13,500 |  | 003 |  |  |
|  | 4 | **Instrument Installation** |  | 2018-05-21 | 2018-08-10 |  |  |  |  |  |  |  |  |  |  |  |  |
| A118640 |  | Cable tray installation | 20d | 2018-05-21 | 2018-06-15 | A118580 SS |  |  | 19d | 0d |  | MH-Wtg [60 h] | 27,000 |  | 003 |  |  |
| A118650 |  | Cable laying | 20d | 2018-06-11 | 2018-07-06 | A118640 FS-5d |  |  | 19d | 15d |  | MH-Wtg [80 h] | 36,000 |  | 003 |  |  |
| A118660 |  | Installation of JBs and Air headers | 10d | 2018-06-11 | 2018-06-22 | A118640 FS-5d |  |  | 29d | 25d |  | MH-Wtg [15 h] | 6,750 |  | 003 |  |  |
| A118670 |  | Installation of instruments | 15d | 2018-06-25 | 2018-07-13 | A118550 FF |  |  | 4d | 0d |  | MH-Wtg [20 h] | 9,000 |  | 003 |  |  |
| A118680 |  | Glanding and termination | 20d | 2018-07-02 | 2018-07-27 | A118650 FF, A118660 FF, A118670 FS-10d |  |  | 4d | 0d |  | MH-Wtg [30 h] | 13,500 |  | 003 |  |  |
| A118690 |  | Hookup of instruments | 15d | 2018-07-09 | 2018-07-27 | A118670 FF, A118550 FS-5d |  |  | 14d | 10d |  | MH-Wtg [25 h] | 11,250 |  | 003 |  |  |
| A118700 |  | Testing & calibration | 10d | 2018-07-30 | 2018-08-10 | A118690 FF, A118680 |  |  | 4d |  |  | MH-Wtg [10 h] | 4,500 |  | 003 |  |  |
|  | 18 | **B108A- Fire Water Storage** |  | 2017-10-26 | 2018-03-30 |  |  |  |  |  |  |  |  |  |  |  |  |
|  | 1 | **Civil & Structural Work** |  | 2017-10-26 | 2018-03-30 |  |  |  |  |  |  |  |  |  |  |  |  |
| A118720 |  | RCC/Civil construction work | 111d | 2017-10-26 A | 2018-03-30 | A118030 FF | 46% | 60d | 99d |  |  | MH-Wtg [1299.84 h] | 584,928 | 268,751 | 003 | 2017-11-06 | 2018-03-31 |
|  | 19 | **B108B- Treated Water Storage** |  | 2017-10-26 | 2018-03-30 |  |  |  |  |  |  |  |  |  |  |  |  |
|  | 1 | **Civil & Structural Work** |  | 2017-10-26 | 2018-03-30 |  |  |  |  |  |  |  |  |  |  |  |  |
| A118950 |  | RCC/Civil construction work | 111d | 2017-10-26 A | 2018-03-30 | A118030 FF | 46% | 60d | 88d |  |  | MH-Wtg [1299.84 h] | 584,928 | 268,751 | 003 | 2017-11-06 | 2018-03-31 |
|  | 20 | **B108C- DM plant** |  | 2017-12-01 | 2018-07-20 |  |  |  |  |  |  |  |  |  |  |  |  |
|  | 1 | **Civil & Structural Work** |  | 2017-12-01 | 2018-07-19 |  |  |  |  |  |  |  |  |  |  |  |  |
| A119180 |  | RCC/Civil construction work | 74d | 2017-12-01 A | 2018-03-15 | A119170 | 28% | 53d | 11d | 0d |  | MH-Wtg [214.28 h] | 96,426 | 27,364 | 003 | 2017-12-25 | 2018-03-15 |
| A119170 |  | Equipment foundations | 40d | 2018-01-01 | 2018-02-26 | 101480 |  |  | 35d | 24d | Monsoon | MH-Wtg [357.13 h] | 160,709 |  | 003 | 2017-12-15 | 2018-01-31 |
| A119190 |  | Structural steel erection | 20d | 2018-03-05 | 2018-03-30 | A119180 FS-9d |  |  | 11d | 0d |  | MH-Wtg [107.14 h] | 48,213 |  | 003 | 2018-01-15 | 2018-03-31 |
| A119210 |  | Painting work | 44d | 2018-05-21 | 2018-07-19 | A119240 SS |  |  | 22d |  |  | MH-Wtg [35.71 h] | 16,070 |  | 003 | 2018-03-31 | 2018-04-30 |

| ID | WBS | Activity | Duration | Start | Finish | Predecessors | Complete | Remaining | Total float | Free float | Resources | Cost | Actual cost | UNIT DESCRIPTION | user_end_date1 |
| --- | --- | --- | --- | --- | --- | --- | --- | --- | --- | --- | --- | --- | --- | --- | --- |
|  | 2 | **Mechanical Erection & Piping** |  | 2018-04-02 | 2018-06-29 |  |  |  |  |  |  |  |  |  |  |
| A119220 |  | Equipment installation | 25d | 2018-04-02 | 2018-05-04 | A119170, 113950, A119190 |  |  | 11d | 0d | MH-Wtg [214.28 h] | 96,426 |  | 003 |  |
| A119230 |  | Piping erection | 40d | 2018-04-16 | 2018-06-08 | A119220 FS-15d |  |  | 11d | 0d | MH-Wtg [357.13 h] | 160,709 |  | 003 |  |
| A119240 |  | Testing and boxup | 25d | 2018-05-21 | 2018-06-22 | A119230 FS-15d |  |  | 11d | 0d | MH-Wtg [107.14 h] | 48,213 |  | 003 |  |
| A119260 |  | Painting work | 15d | 2018-06-11 | 2018-06-29 | A119240 FS-10d |  |  | 36d |  | MH-Wtg [35.71 h] | 16,070 |  | 003 |  |
|  | 3 | **Electrical Installation** |  | 2018-05-07 | 2018-07-06 |  |  |  |  |  |  |  |  |  |  |
| A119270 |  | Cable tray installation | 20d | 2018-05-07 | 2018-06-01 | A119220 |  |  | 21d | 0d | MH-Wtg [61.77 h] | 27,797 |  | 003 |  |
| A119320 |  | Earthing work | 10d | 2018-05-07 | 2018-05-18 | A119220 |  |  | 56d |  | MH-Wtg [46.33 h] | 20,849 |  | 003 |  |
| A119280 |  | Cable laying | 15d | 2018-05-28 | 2018-06-15 | A119270 FS-5d |  |  | 21d | 0d | MH-Wtg [77.22 h] | 34,749 |  | 003 |  |
| A119290 |  | Installation of electrical items | 10d | 2018-06-11 | 2018-06-22 | A119280 FS-5d |  |  | 21d | 0d | MH-Wtg [46.33 h] | 20,849 |  | 003 |  |
| A119300 |  | Glanding and termination | 15d | 2018-06-18 | 2018-07-06 | A119290 FS-5d |  |  | 21d |  | MH-Wtg [46.33 h] | 20,849 |  | 003 |  |
| A119310 |  | Installation of light fittings | 10d | 2018-06-25 | 2018-07-06 | A119290 |  |  | 21d |  | MH-Wtg [30.89 h] | 13,901 |  | 003 |  |
|  | 4 | **Instrument Installation** |  | 2018-05-07 | 2018-07-20 |  |  |  |  |  |  |  |  |  |  |
| A119330 |  | Cable tray installation | 20d | 2018-05-07 | 2018-06-01 | A119270 SS |  |  | 26d | 0d | MH-Wtg [42.47 h] | 19,112 |  | 003 |  |
| A119340 |  | Cable laying | 15d | 2018-05-28 | 2018-06-15 | A119330 FS-5d |  |  | 26d | 15d | MH-Wtg [53.09 h] | 23,891 |  | 003 |  |
| A119350 |  | Installation of JBs and Air headers | 10d | 2018-05-28 | 2018-06-08 | A119330 FS-5d |  |  | 31d | 20d | MH-Wtg [21.23 h] | 9,554 |  | 003 |  |
| A119360 |  | Installation of instruments | 15d | 2018-06-04 | 2018-06-22 | A119240 FF |  |  | 11d | 0d | MH-Wtg [31.85 h] | 14,333 |  | 003 |  |
| A119370 |  | Glanding and termination | 20d | 2018-06-11 | 2018-07-06 | A119340 FF, A119350 FF, A119360 FS-10d |  |  | 11d | 0d | MH-Wtg [31.85 h] | 14,333 |  | 003 |  |
| A119380 |  | Hookup of instruments | 15d | 2018-06-11 | 2018-06-29 | A119360 FF, A119240 FS-10d |  |  | 26d | 15d | MH-Wtg [21.23 h] | 9,554 |  | 003 |  |
| A119390 |  | Testing & calibration | 10d | 2018-07-09 | 2018-07-20 | A119380 FF, A119370 |  |  | 11d |  | MH-Wtg [10.62 h] | 4,779 |  | 003 |  |
|  | 21 | **B108F- DM Storage** |  | 2017-12-13 | 2018-06-13 |  |  |  |  |  |  |  |  |  |  |
|  | 1 | **Civil & Structural Work** |  | 2017-12-13 | 2018-02-16 |  |  |  |  |  |  |  |  |  |  |
| A119400 |  | Equipment foundations | 47d | 2017-12-13 A | 2018-02-16 | 102290, A113870 SS | 28% | 34d | 19d | 0d | MH-Wtg [476.18 h] | 214,281 | 59,269 | 003 | 2018-02-18 |
|  | 2 | **Mechanical Erection & Piping** |  | 2018-02-19 | 2018-05-25 |  |  |  |  |  |  |  |  |  |  |
| A119450 |  | Equipment installation | 40d | 2018-02-19 | 2018-04-13 | A119400, 115750 SS+30d |  |  | 38d | 0d | MH-Wtg [142.85 h] | 64,283 |  | 003 |  |
| A119460 |  | Piping erection | 20d | 2018-04-16 | 2018-05-11 | A119450, 110850 SS+10d, 114510 FF+10d |  |  | 38d | 0d | MH-Wtg [238.09 h] | 107,141 |  | 003 |  |
| A119470 |  | Testing and boxup | 10d | 2018-05-07 | 2018-05-18 | A119460 FS-5d |  |  | 38d | 0d | MH-Wtg [71.43 h] | 32,144 |  | 003 |  |
| A119490 |  | Painting work | 10d | 2018-05-14 | 2018-05-25 | A119470 FS-5d |  |  | 61d |  | MH-Wtg [23.81 h] | 10,715 |  | 003 |  |

| ID | WBS | Activity | Duration | Start | Finish | Predecessors | Complete | Remaining | Total float | Free float | Resources | Cost | Actual cost | UNIT DESCRIPTION | user_end_date1 |
| --- | --- | --- | --- | --- | --- | --- | --- | --- | --- | --- | --- | --- | --- | --- | --- |
|  | 3 | **Electrical Installation** |  | 2018-05-14 | 2018-06-13 |  |  |  |  |  |  |  |  |  |  |
| A119500 |  | Cable tray installation | 10d | 2018-05-14 | 2018-05-25 | A119460 |  |  | 38d | 0d | MH-Wtg [41.18 h] | 18,531 |  | 003 |  |
| A119550 |  | Earthing work | 5d | 2018-05-21 | 2018-05-25 | A119500 FS-5d |  |  | 51d |  | MH-Wtg [30.89 h] | 13,901 |  | 003 |  |
| A119510 |  | Cable laying | 5d | 2018-05-28 | 2018-06-01 | A119500 |  |  | 38d | 0d | MH-Wtg [51.48 h] | 23,166 |  | 003 |  |
| A119540 |  | Installation of light fittings | 5d | 2018-06-04 | 2018-06-08 | A119510 |  |  | 38d | 0d | MH-Wtg [41.18 h] | 18,531 |  | 003 |  |
| A119530 |  | Glanding and termination | 3d | 2018-06-11 | 2018-06-13 | A119540 |  |  | 38d |  | MH-Wtg [41.18 h] | 18,531 |  | 003 |  |
|  | 4 | **Instrument Installation** |  | 2018-05-21 | 2018-06-13 |  |  |  |  |  |  |  |  |  |  |
| A119560 |  | Cable tray installation | 10d | 2018-05-21 | 2018-06-01 | A119500 FS-5d |  |  | 38d | 0d | MH-Wtg [28.31 h] | 12,740 |  | 003 |  |
| A119590 |  | Installation of instruments | 8d | 2018-05-21 | 2018-05-30 | A119470 |  |  | 38d | 0d | MH-Wtg [21.23 h] | 9,554 |  | 003 |  |
| A119610 |  | Hookup of instruments | 10d | 2018-05-31 | 2018-06-13 | A119590 |  |  | 38d | 0d | MH-Wtg [14.16 h] | 6,372 |  | 003 |  |
| A119570 |  | Cable laying | 5d | 2018-06-04 | 2018-06-08 | A119560 |  |  | 38d | 0d | MH-Wtg [35.39 h] | 15,926 |  | 003 |  |
| A119580 |  | Installation of JBs and Air headers | 3d | 2018-06-04 | 2018-06-06 | A119560 |  |  | 40d | 2d | MH-Wtg [14.16 h] | 6,372 |  | 003 |  |
| A119600 |  | Glanding and termination | 5d | 2018-06-04 | 2018-06-08 | A119590, A119570 FF, A119580 FF |  |  | 38d | 0d | MH-Wtg [21.23 h] | 9,554 |  | 003 |  |
| A119620 |  | Testing & calibration | 3d | 2018-06-11 | 2018-06-13 | A119610 FF, A119600 |  |  | 38d |  | MH-Wtg [7.08 h] | 3,186 |  | 003 |  |
|  | 22 | **B109A- Cooling Tower with Pumps** |  | 2017-12-13 | 2018-08-24 |  |  |  |  |  |  |  |  |  |  |
|  | 1 | **Civil & Structural Work** |  | 2017-12-13 | 2018-04-30 |  |  |  |  |  |  |  |  |  |  |
| A119630 |  | Equipment foundations | 98d | 2017-12-13 A | 2018-04-30 | 101631 | 13% | 85d | 15d | 0d | MH-Wtg [999.97 h] | 449,987 | 59,692 | 003 | 2018-04-30 |
| A119640 |  | RCC/Civil construction work | 20d | 2018-03-20 | 2018-04-16 | 101640, A119630 FS-30d |  |  | 142d | 0d | MH-Wtg [428.56 h] | 192,852 |  | 003 | 2018-04-15 |
|  | 2 | **Mechanical Erection & Piping** |  | 2018-04-03 | 2018-08-03 |  |  |  |  |  |  |  |  |  |  |
| A119680 |  | Equipment installation | 40d | 2018-04-03 | 2018-05-28 | A119630 FS-20d, 113880 FS-40d, 114300 FF+10d, 114580 FF+15d |  |  | 15d | 0d | MH-Wtg [571.41 h] | 257,135 |  | 003 |  |
| A119690 |  | Piping erection | 35d | 2018-05-01 | 2018-06-18 | A119680 FF+15d, 106530 SS+10d |  |  | 15d | 14d | MH-Wtg [571.41 h] | 257,135 |  | 003 |  |
| A119700 |  | Testing and boxup | 15d | 2018-07-02 | 2018-07-20 | A119690 FS-5d, 116180 FF+5d |  |  | 1d | 0d | MH-Wtg [214.28 h] | 96,426 |  | 003 |  |
| A119720 |  | Painting work | 10d | 2018-07-23 | 2018-08-03 | A119700 |  |  | 26d |  | MH-Wtg [71.43 h] | 32,144 |  | 003 |  |
|  | 3 | **Electrical Installation** |  | 2018-05-01 | 2018-07-19 |  |  |  |  |  |  |  |  |  |  |
| A119730 |  | Cable tray installation | 20d | 2018-05-01 | 2018-05-28 | A119680 FS-20d |  |  | 27d | 0d | MH-Wtg [123.55 h] | 55,598 |  | 003 |  |
| A119780 |  | Earthing work | 15d | 2018-05-15 | 2018-06-04 | A119730 FS-10d |  |  | 60d |  | MH-Wtg [92.66 h] | 41,697 |  | 003 |  |
| A119740 |  | Cable laying | 15d | 2018-05-29 | 2018-06-18 | A119730 |  |  | 27d | 0d | MH-Wtg [154.44 h] | 69,498 |  | 003 |  |
| A119750 |  | Installation of electrical items | 8d | 2018-06-19 | 2018-06-28 | A119740 |  |  | 27d | 0d | MH-Wtg [92.66 h] | 41,697 |  | 003 |  |
| A119760 |  | Glanding and termination | 15d | 2018-06-29 | 2018-07-19 | A119750 |  |  | 27d |  | MH-Wtg [92.66 h] | 41,697 |  | 003 |  |
| A119770 |  | Installation of light fittings | 10d | 2018-06-29 | 2018-07-12 | A119750 |  |  | 32d |  | MH-Wtg [61.77 h] | 27,797 |  | 003 |  |

| ID | WBS | Activity | Duration | Start | Finish | Predecessors | Total float | Free float | Resources | Cost | UNIT DESCRIPTION |
| --- | --- | --- | --- | --- | --- | --- | --- | --- | --- | --- | --- |
|  | 4 | **Instrument Installation** |  | 2018-05-15 | 2018-08-24 |  |  |  |  |  |  |
| A119790 |  | Cable tray installation | 20d | 2018-05-15 | 2018-06-11 | A119730 FS-10d | 35d | 0d | MH-Wtg [84.94 h] | 38,223 | 003 |
| A119800 |  | Cable laying | 15d | 2018-06-05 | 2018-06-25 | A119790 FS-5d | 35d | 34d | MH-Wtg [106.17 h] | 47,777 | 003 |
| A119810 |  | Installation of JBs and Air headers | 10d | 2018-06-12 | 2018-06-25 | A119790 | 35d | 34d | MH-Wtg [42.47 h] | 19,112 | 003 |
| A119820 |  | Installation of instruments | 15d | 2018-07-02 | 2018-07-20 | A119700 FF | 1d | 0d | MH-Wtg [63.7 h] | 28,665 | 003 |
| A119830 |  | Glanding and termination | 20d | 2018-07-16 | 2018-08-10 | A119800 FF, A119810 FF, A119820 FS-5d | 1d | 0d | MH-Wtg [63.7 h] | 28,665 | 003 |
| A119840 |  | Hookup of instruments | 15d | 2018-07-23 | 2018-08-10 | A119820 FF, A119700 | 11d | 10d | MH-Wtg [42.47 h] | 19,112 | 003 |
| A119850 |  | Testing & calibration | 10d | 2018-08-13 | 2018-08-24 | A119840 FF, A119830 | 1d |  | MH-Wtg [21.23 h] | 9,554 | 003 |
|  | 56 | **B109B- Auxiliary Cooling Tower (HOLD)** |  | 2018-01-01 | 2018-03-26 |  |  |  |  |  |  |
|  | 1 | **Civil & Structural Work** |  | 2018-01-01 | 2018-03-26 |  |  |  |  |  |  |
| A119860 |  | Equipment foundations (Hold) | 20d | 2018-01-01 | 2018-01-29 |  | 197d |  | MH-Wtg |  | 003 |
| A119870 |  | RCC/Civil construction work (Hold) | 60d | 2018-01-01 | 2018-03-26 |  | 157d |  | MH-Wtg |  | 003 |
|  | 2 | **Mechanical Erection & Piping** |  | 2018-01-01 | 2018-02-12 |  |  |  |  |  |  |
| A119910 |  | Equipment installation (Hold) | 30d | 2018-01-01 | 2018-02-12 |  | 187d |  | MH-Wtg |  | 003 |
| A119920 |  | Piping erection (Hold) | 25d | 2018-01-01 | 2018-02-05 |  | 192d |  | MH-Wtg |  | 003 |
| A119930 |  | Testing and boxup (Hold) | 15d | 2018-01-01 | 2018-01-19 |  | 202d |  | MH-Wtg |  | 003 |
| A119950 |  | Painting work (Hold) | 10d | 2018-01-01 | 2018-01-12 |  | 207d |  | MH-Wtg |  | 003 |
|  | 3 | **Electrical Installation** |  | 2018-01-01 | 2018-01-19 |  |  |  |  |  |  |
| A119960 |  | Cable tray installation (Hold) | 15d | 2018-01-01 | 2018-01-19 |  | 202d |  | MH-Wtg |  | 003 |
| A119970 |  | Cable laying (Hold) | 10d | 2018-01-01 | 2018-01-12 |  | 207d |  | MH-Wtg |  | 003 |
| A119980 |  | Installation of electrical items (Hold) | 5d | 2018-01-01 | 2018-01-05 |  | 212d |  | MH-Wtg |  | 003 |
| A119990 |  | Glanding and termination (Hold) | 10d | 2018-01-01 | 2018-01-12 |  | 207d |  | MH-Wtg |  | 003 |
| A120000 |  | Installation of light fittings (Hold) | 5d | 2018-01-01 | 2018-01-05 |  | 212d |  | MH-Wtg |  | 003 |
| A120010 |  | Earthing work (Hold) | 10d | 2018-01-01 | 2018-01-12 |  | 207d |  | MH-Wtg |  | 003 |

| ID | WBS | Activity | Duration | Start | Finish | Total float | Calendar | Resources | UNIT DESCRIPTION |
| --- | --- | --- | --- | --- | --- | --- | --- | --- | --- |
|  | 4 | **Instrument Installation** |  | 2018-01-01 | 2018-01-19 |  |  |  |  |
| A120020 |  | Cable tray installation (Hold) | 15d | 2018-01-01 | 2018-01-19 | 202d |  | MH-Wtg | 003 |
| A120030 |  | Cable laying (Hold) | 10d | 2018-01-01 | 2018-01-12 | 207d |  | MH-Wtg | 003 |
| A120040 |  | Installation of JBs and Air headers (Hold) | 5d | 2018-01-01 | 2018-01-05 | 212d |  | MH-Wtg | 003 |
| A120050 |  | Installation of instruments (Hold) | 10d | 2018-01-01 | 2018-01-12 | 207d |  | MH-Wtg | 003 |
| A120060 |  | Glanding and termination (Hold) | 10d | 2018-01-01 | 2018-01-12 | 207d |  | MH-Wtg | 003 |
| A120070 |  | Hookup of instruments (Hold) | 10d | 2018-01-01 | 2018-01-12 | 207d |  | MH-Wtg | 003 |
| A120080 |  | Testing & calibration (Hold) | 8d | 2018-01-01 | 2018-01-10 | 209d |  | MH-Wtg | 003 |
|  | 23 | **B110A- Metering Room (Deleted)** |  | 2018-01-01 | 2018-03-26 |  |  |  |  |
|  | 1 | **Civil & Structural Work** |  | 2018-01-01 | 2018-03-26 |  |  |  |  |
| A120100 |  | Foundation & columns (Deleted) | 60d | 2018-01-01 | 2018-03-26 | 157d | Monsoon | MH-Wtg | 003 |
| A120101 |  | Plinth beams (Deleted) | 8d | 2018-01-01 | 2018-01-10 | 209d |  | MH-Wtg | 003 |
| A120102 |  | Grade slab (Deleted) | 5d | 2018-01-01 | 2018-01-05 | 212d |  | MH-Wtg | 003 |
| A120103 |  | Brick work & plastering (Deleted) | 45d | 2018-01-01 | 2018-03-05 | 172d |  | MH-Wtg | 003 |
| A120104 |  | Lintel beams (Deleted) | 15d | 2018-01-01 | 2018-01-19 | 202d |  | MH-Wtg | 003 |
| A120105 |  | Floor slabs (Deleted) | 8d | 2018-01-01 | 2018-01-10 | 209d |  | MH-Wtg | 003 |
| A120107 |  | Flooring work (Deleted) | 8d | 2018-01-01 | 2018-01-10 | 209d |  | MH-Wtg | 003 |
| A120109 |  | Doors, windows and handrails (Deleted) | 5d | 2018-01-01 | 2018-01-05 | 212d |  | MH-Wtg | 003 |
| A120110 |  | Painting work (Deleted) | 5d | 2018-01-01 | 2018-01-05 | 212d |  | MH-Wtg | 003 |
|  | 3 | **Electrical Installation** |  | 2018-01-01 | 2018-01-10 |  |  |  |  |
| A120189 |  | Installation of Metering panel (Deleted) | 8d | 2018-01-01 | 2018-01-10 | 209d |  | MH-Wtg | 003 |
| A120190 |  | Cable tray installation (Deleted) | 5d | 2018-01-01 | 2018-01-05 | 212d |  | MH-Wtg | 003 |
| A120200 |  | Cable laying (Deleted) | 8d | 2018-01-01 | 2018-01-10 | 209d |  | MH-Wtg | 003 |
| A120210 |  | Installation of electrical items (Deleted) | 8d | 2018-01-01 | 2018-01-10 | 209d |  | MH-Wtg | 003 |
| A120220 |  | Glanding and termination (Deleted) | 8d | 2018-01-01 | 2018-01-10 | 209d |  | MH-Wtg | 003 |
| A120230 |  | Installation of light fittings (Deleted) | 8d | 2018-01-01 | 2018-01-10 | 209d |  | MH-Wtg | 003 |
| A120240 |  | Earthing work (Deleted) | 5d | 2018-01-01 | 2018-01-05 | 212d |  | MH-Wtg | 003 |

| ID | WBS | Activity | Duration | Start | Finish | Predecessors | Complete | Remaining | Total float | Free float | Constraint | Calendar | Resources | Cost | Actual cost | user_start_date1 | user_end_date1 | UNIT DESCRIPTION |
| --- | --- | --- | --- | --- | --- | --- | --- | --- | --- | --- | --- | --- | --- | --- | --- | --- | --- | --- |
|  | 24 | **B110B- DG Room** |  | 2018-02-28 | 2018-08-07 |  |  |  |  |  |  |  |  |  |  |  |  |  |
|  | 1 | **Civil & Structural Work** |  | 2018-02-28 | 2018-07-10 |  |  |  |  |  |  |  |  |  |  |  |  |  |
| A120320 |  | Equipment foundations | 35d | 2018-02-28 | 2018-04-18 | 101780, 117090 FF-10d |  |  | 30d | 0d |  |  | MH-Wtg [207.97 h] | 93,587 |  | 2018-01-10 | 2018-02-10 | 003 |
| A120330 |  | RCC/Civil construction work | 25d | 2018-03-14 | 2018-04-18 | A120320 FF |  |  | 30d | 25d |  |  | MH-Wtg [155.98 h] | 70,191 |  |  |  | 003 |
| A120340 |  | Structural steel erection | 20d | 2018-05-23 | 2018-06-19 | A120419, A120330 |  |  | 5d | 0d |  |  | MH-Wtg [129.98 h] | 58,491 |  |  |  | 003 |
| A120360 |  | Painting work | 15d | 2018-06-20 | 2018-07-10 | A120340 |  |  | 55d |  |  |  | MH-Wtg [26 h] | 11,700 |  |  |  | 003 |
|  | 3 | **Electrical Installation** |  | 2018-05-02 | 2018-08-07 |  |  |  |  |  |  |  |  |  |  |  |  |  |
| A120419 |  | Installation of DG | 15d | 2018-05-02 | 2018-05-22 | 117090 |  |  | 5d | 0d |  |  | MH-Wtg [180 h] | 81,000 |  |  |  | 003 |
| A120419.1 |  | Installation of Chimney | 20d | 2018-05-23 | 2018-06-19 | A120419 |  |  | 96d |  |  |  |  |  |  |  |  | 003 |
| A120420 |  | Cable tray installation | 10d | 2018-06-20 | 2018-07-03 | A120340, A120419 |  |  | 5d | 0d |  |  | MH-Wtg [80 h] | 36,000 |  |  |  | 003 |
| A120430 |  | Cable laying | 10d | 2018-07-04 | 2018-07-17 | A120420 |  |  | 5d | 0d |  |  | MH-Wtg [90 h] | 40,500 |  |  |  | 003 |
| A120440 |  | Installation of electrical items | 5d | 2018-07-18 | 2018-07-24 | A120430 |  |  | 5d | 0d |  |  | MH-Wtg [80 h] | 36,000 |  |  |  | 003 |
| A120450 |  | Glanding and termination | 10d | 2018-07-25 | 2018-08-07 | A120440 |  |  | 5d |  |  |  | MH-Wtg [90 h] | 40,500 |  |  |  | 003 |
| A120460 |  | Installation of light fittings | 5d | 2018-07-25 | 2018-07-31 | A120440 |  |  | 10d |  |  |  | MH-Wtg [80 h] | 36,000 |  |  |  | 003 |
| A120470 |  | Earthing work | 10d | 2018-07-25 | 2018-08-07 | A120440 |  |  | 5d |  |  |  | MH-Wtg [60 h] | 27,000 |  |  |  | 003 |
|  | 25 | **B110C- Process/Utility Sub-station** |  | 2017-11-08 | 2018-08-28 |  |  |  |  |  |  |  |  |  |  |  |  |  |
|  | 1 | **Civil & Structural Work** |  | 2017-11-08 | 2018-05-14 |  |  |  |  |  |  |  |  |  |  |  |  |  |
| A124480 |  | Subsation foundation & columns | 100d | 2017-11-08 A | 2018-03-28 | 101720, 113120 FS+10d | 38% | 62d | 155d |  |  | Monsoon | MH-Wtg [311.96 h] | 140,382 | 53,345 | 2017-11-21 | 2018-02-19 | 003 |
| A124490 |  | Plinth beams | 20d | 2017-12-13 A | 2018-01-09 | A124480 SS+20d | 65% | 7d | 69d | 0d |  |  | MH-Wtg [155.98 h] | 70,191 | 45,624 | 2017-12-18 | 2018-01-20 | 003 |
| A124500 |  | Grade slab | 22d | 2017-12-21 A | 2018-01-19 | A124490 | 32% | 15d | 109d | 0d |  |  | MH-Wtg [77.99 h] | 35,096 | 11,167 | 2017-01-10 | 2018-02-03 | 003 |
| A124470 |  | Transformer foundations | 23d | 2018-01-15 | 2018-02-15 | 113320 FS+40d |  |  | 124d | 30d | start on or after 2018-01-15 |  | MH-Wtg [155.98 h] | 70,191 |  | 2018-01-15 | 2018-02-15 | 003 |
| A124510 |  | Brick work & plastering | 63d | 2018-01-22 | 2018-04-19 | A124500 |  |  | 109d | 0d |  |  | MH-Wtg [77.99 h] | 35,096 |  | 2018-02-13 | 2018-04-10 | 003 |
| A124520 |  | Lintel beams | 45d | 2018-01-24 | 2018-03-28 | A124490 FS+10d |  |  | 69d | 0d |  |  | MH-Wtg [155.98 h] | 70,191 |  | 2018-02-20 | 2018-04-10 | 003 |
| A124530 |  | Floor slabs | 50d | 2018-02-08 | 2018-04-18 | A124520 SS+10d |  |  | 69d | 0d |  |  | MH-Wtg [311.96 h] | 140,382 |  | 2018-01-04 | 2018-02-28 | 003 |
| A124540 |  | Staircase work | 45d | 2018-02-15 | 2018-04-18 | A124530 FF |  |  | 69d | 0d |  |  | MH-Wtg [155.98 h] | 70,191 |  | 2018-01-18 | 2018-02-28 | 003 |
| A124550 |  | Flooring work | 20d | 2018-04-03 | 2018-04-30 | A124530 FS-20d, A124540 FF+8d |  |  | 69d | 0d |  |  | MH-Wtg [39 h] | 17,550 |  | 2018-02-28 | 2018-03-30 | 003 |
| A124551 |  | Plumbing & sanitary work | 20d | 2018-04-10 | 2018-05-07 | A124550 FS-15d |  |  | 97d |  |  |  | MH-Wtg [39 h] | 17,550 |  | 2018-03-13 | 2018-04-09 | 003 |
| A124570 |  | Painting work | 15d | 2018-04-20 | 2018-05-10 | A124510 |  |  | 109d |  |  |  | MH-Wtg [39 h] | 17,550 |  | 2018-04-10 | 2018-04-30 | 003 |
| A124560 |  | Doors, windows and handrails | 10d | 2018-05-01 | 2018-05-14 | A124550 |  |  | 77d | 0d |  |  | MH-Wtg [39 h] | 17,550 |  | 2018-03-30 | 2018-04-09 | 003 |

| ID | WBS | Activity | Duration | Start | Finish | Predecessors | Total float | Free float | Constraint | Resources | Cost | UNIT DESCRIPTION | user_start_date1 | user_end_date1 |
| --- | --- | --- | --- | --- | --- | --- | --- | --- | --- | --- | --- | --- | --- | --- |
|  | 3 | **Electrical Installation** |  | 2018-03-30 | 2018-08-28 |  |  |  |  |  |  |  |  |  |
| A124580 |  | Installation of tranformers | 15d | 2018-03-30 | 2018-04-19 | A124470, 116670, 117370 FF+10d | 94d | 78d |  | MH-Wtg [233.97 h] | 105,287 | 003 |  |  |
| A124630 |  | Installation of light fittings | 15d | 2018-05-15 | 2018-06-04 | A124560 | 77d |  |  | MH-Wtg [233.97 h] | 105,287 | 003 |  |  |
| A124610 |  | Installation of electrical items | 20d | 2018-07-13 | 2018-08-09 | 116810, 116880 FF+10d, 116950 FF+10d, 117020 FF+10d, 117160 FF+10d, 117230 FF+10d, 117300 FF+10d, 117580 FF+10d, 117021 FF+10d, A124550, 117160.1 FF+10d, 116740 FF+10d | 16d | 0d |  | MH-Wtg [350.96 h] | 157,932 | 003 |  |  |
| A124590 |  | Cable tray installation | 15d | 2018-07-20 | 2018-08-09 | A124610 FF | 16d | 0d |  | MH-Wtg [350.96 h] | 157,932 | 003 |  |  |
| A124640 |  | Earthing work | 20d | 2018-07-27 | 2018-08-23 | A124610 FS-10d | 19d |  |  | MH-Wtg [350.96 h] | 157,932 | 003 |  |  |
| A124600 |  | Cable laying | 13d | 2018-08-03 | 2018-08-21 | A124590 FS-5d, 117650 | 16d | 0d |  | MH-Wtg [467.94 h] | 210,573 | 003 |  |  |
| A124620 |  | Glanding and termination | 15d | 2018-08-08 | 2018-08-28 | A124600 FS-10d, A124580 | 16d |  |  | MH-Wtg [350.96 h] | 157,932 | 003 |  |  |
|  | 27 | **B111- Effluent Treatment Plant** |  | 2018-02-15 | 2018-08-17 |  |  |  |  |  |  |  |  |  |
|  | 1 | **Civil & Structural Work** |  | 2018-02-15 | 2018-08-10 |  |  |  |  |  |  |  |  |  |
| A120780 |  | Equipment foundations & RCC tanks | 40d | 2018-02-15 | 2018-04-11 | A126120 | 27d | 0d | start on or after 2018-02-15 | MH-Wtg [857.12 h] | 385,704 | 003 | 2018-02-15 | 2018-03-15 |
| A120790 |  | RCC/Civil construction work | 76d | 2018-02-15 | 2018-05-31 | A120780 SS | 41d | 0d |  | MH-Wtg [285.71 h] | 128,570 | 003 | 2018-02-01 | 2018-04-02 |
| A120800 |  | Structural steel erection | 15d | 2018-06-01 | 2018-06-21 | A120790 | 41d |  |  | MH-Wtg [142.85 h] | 64,283 | 003 | 2018-03-10 | 2018-04-15 |
| A120820 |  | Painting work | 15d | 2018-07-02 | 2018-07-20 | A120850 SS | 30d |  |  | MH-Wtg [71.43 h] | 32,144 | 003 | 2018-05-04 | 2018-05-25 |
| A120810 |  | Anti-corrosive lining work | 20d | 2018-07-16 | 2018-08-10 | A120840 | 5d |  |  | MH-Wtg [71.43 h] | 32,144 | 003 | 2018-04-15 | 2018-05-15 |
|  | 2 | **Mechanical Erection & Piping** |  | 2018-05-21 | 2018-07-27 |  |  |  |  |  |  |  |  |  |
| A120830 |  | Equipment installation | 20d | 2018-05-21 | 2018-06-15 | A120780, 114160 | 0d |  |  | MH-Wtg [571.41 h] | 257,135 | 003 |  |  |
| A120840 |  | Piping erection | 30d | 2018-06-04 | 2018-07-13 | A120830 FS-10d | 0d |  |  | MH-Wtg [571.41 h] | 257,135 | 003 |  |  |
| A120850 |  | Testing and boxup | 20d | 2018-07-02 | 2018-07-27 | A120840 FS-10d | 0d |  |  | MH-Wtg [214.28 h] | 96,426 | 003 |  |  |
| A120870 |  | Painting work | 15d | 2018-07-09 | 2018-07-27 | A120850 FS-15d | 25d |  |  | MH-Wtg [71.43 h] | 32,144 | 003 |  |  |
|  | 3 | **Electrical Installation** |  | 2018-06-18 | 2018-08-10 |  |  |  |  |  |  |  |  |  |
| A120880 |  | Cable tray installation | 10d | 2018-06-18 | 2018-06-29 | A120830 | 5d | 0d |  | MH-Wtg [123.55 h] | 55,598 | 003 |  |  |
| A120930 |  | Earthing work | 10d | 2018-06-18 | 2018-06-29 | A120830 | 35d |  |  | MH-Wtg [92.66 h] | 41,697 | 003 |  |  |
| A120890 |  | Cable laying | 10d | 2018-06-25 | 2018-07-06 | A120880 FS-5d | 5d | 0d |  | MH-Wtg [154.44 h] | 69,498 | 003 |  |  |
| A120900 |  | Installation of electrical items | 10d | 2018-06-25 | 2018-07-06 | A120890 FS-10d | 5d | 0d |  | MH-Wtg [92.66 h] | 41,697 | 003 |  |  |
| A120910 |  | Glanding and termination | 15d | 2018-07-23 | 2018-08-10 | A120900 FS-5d, A120920 FF | 5d |  |  | MH-Wtg [92.66 h] | 41,697 | 003 |  |  |
| A120920 |  | Installation of light fittings | 10d | 2018-07-30 | 2018-08-10 | A120900 FS+15d | 5d | 0d |  | MH-Wtg [61.77 h] | 27,797 | 003 |  |  |

| ID | WBS | Activity | Duration | Start | Finish | Predecessors | Complete | Remaining | Total float | Free float | Calendar | Resources | Cost | Actual cost | UNIT DESCRIPTION | user_start_date1 | user_end_date1 |
| --- | --- | --- | --- | --- | --- | --- | --- | --- | --- | --- | --- | --- | --- | --- | --- | --- | --- |
|  | 4 | **Instrument Installation** |  | 2018-06-18 | 2018-08-17 |  |  |  |  |  |  |  |  |  |  |  |  |
| A120940 |  | Cable tray installation | 15d | 2018-06-18 | 2018-07-06 | A120880 SS |  |  | 10d | 0d |  | MH-Wtg [84.94 h] | 38,223 |  | 003 |  |  |
| A120950 |  | Cable laying | 15d | 2018-07-02 | 2018-07-20 | A120940 FS-5d |  |  | 10d |  |  | MH-Wtg [106.17 h] | 47,777 |  | 003 |  |  |
| A120970 |  | Installation of instruments | 20d | 2018-07-02 | 2018-07-27 | A120850 FF |  |  | 0d |  |  | MH-Wtg [63.7 h] | 28,665 |  | 003 |  |  |
| A120960 |  | Installation of JBs and Air headers | 10d | 2018-07-09 | 2018-07-20 | A120940 |  |  | 10d |  |  | MH-Wtg [42.47 h] | 19,112 |  | 003 |  |  |
| A120990 |  | Hookup of instruments | 20d | 2018-07-09 | 2018-08-03 | A120970 FF, A120850 FS-15d |  |  | 10d |  |  | MH-Wtg [42.47 h] | 19,112 |  | 003 |  |  |
| A120980 |  | Glanding and termination | 15d | 2018-07-16 | 2018-08-03 | A120950 FF, A120960 FF, A120970 FS-10d |  |  | 0d |  |  | MH-Wtg [63.7 h] | 28,665 |  | 003 |  |  |
| A121000 |  | Testing & calibration | 10d | 2018-08-06 | 2018-08-17 | A120990 FF, A120980 |  |  | 0d |  |  | MH-Wtg [21.23 h] | 9,554 |  | 003 |  |  |
|  | 28 | **B112- Control Room & QC** |  | 2017-11-13 | 2018-08-16 |  |  |  |  |  |  |  |  |  |  |  |  |
|  | 1 | **Civil & Structural Work** |  | 2017-11-13 | 2018-04-17 |  |  |  |  |  |  |  |  |  |  |  |  |
| A124650 |  | Foundation & columns | 70d | 2017-11-13 A | 2018-02-19 | 102120, 113112.1 FS+10d | 50% | 35d | 182d |  | Monsoon | MH-Wtg [259.97 h] | 116,987 | 58,493 | 003 | 2017-11-15 | 2018-02-15 |
| A124660 |  | Plinth beams | 20d | 2017-12-12 A | 2018-01-08 | A124650 SS+20d | 70% | 6d | 81d | 0d |  | MH-Wtg [194.98 h] | 87,741 | 61,419 | 003 | 2017-12-12 | 2017-12-31 |
| A124680 |  | Brick work & plastering | 64d | 2017-12-27 A | 2018-03-27 | A124670, A124700 FF+10d | 41% | 38d | 94d | 0d |  | MH-Wtg [64.99 h] | 29,246 | 11,881 | 003 | 2018-02-12 | 2018-03-15 |
| A124670 |  | Grade slab | 15d | 2018-01-09 | 2018-01-30 | A124660 |  |  | 196d |  |  | MH-Wtg [64.99 h] | 29,246 |  | 003 | 2018-03-10 | 2018-03-25 |
| A124690 |  | Lintel beams | 10d | 2018-01-23 | 2018-02-06 | A124660 FS+10d |  |  | 81d | 0d |  | MH-Wtg [194.98 h] | 87,741 |  | 003 | 2018-02-19 | 2018-03-15 |
| A124710 |  | Staircase work (Deleted) | 20d | 2018-02-14 | 2018-03-13 | A124700 FF |  |  | 166d |  |  | MH-Wtg |  |  | 003 | 2017-12-01 | 2018-02-02 |
| A124700 |  | Floor slabs | 15d | 2018-02-21 | 2018-03-13 | A124690 FS+10d |  |  | 81d | 0d |  | MH-Wtg [259.97 h] | 116,987 |  | 003 | 2017-12-20 | 2018-02-02 |
| A124720 |  | Flooring work | 13d | 2018-03-14 | 2018-03-30 | A124700 |  |  | 81d | 0d |  | MH-Wtg [32.5 h] | 14,625 |  | 003 | 2018-03-15 | 2018-03-31 |
| A124730 |  | Plumbing & sanitary work | 10d | 2018-03-19 | 2018-03-30 | A124720 FF |  |  | 126d |  |  | MH-Wtg [32.5 h] | 14,625 |  | 003 | 2018-03-15 | 2018-03-31 |
| A124740 |  | Doors, windows and handrails | 10d | 2018-03-19 | 2018-03-30 | A124720 FF |  |  | 81d | 15d |  | MH-Wtg [32.5 h] | 14,625 |  | 003 | 2018-03-15 | 2018-03-31 |
| A124750 |  | Painting work | 20d | 2018-03-21 | 2018-04-17 | A124680 FS-5d |  |  | 129d |  |  | MH-Wtg [32.5 h] | 14,625 |  | 003 | 2018-03-15 | 2018-04-15 |
|  | 3 | **Electrical Installation** |  | 2018-03-28 | 2018-05-18 |  |  |  |  |  |  |  |  |  |  |  |  |
| A121110 |  | Cable tray installation | 15d | 2018-03-28 | 2018-04-17 | A124680 |  |  | 94d | 0d |  | MH-Wtg [64.99 h] | 29,246 |  | 003 |  |  |
| A121120 |  | Cable laying | 10d | 2018-04-18 | 2018-05-01 | A121110 |  |  | 94d | 3d |  | MH-Wtg [81.24 h] | 36,558 |  | 003 |  |  |
| A121150 |  | Installation of light fittings | 10d | 2018-04-23 | 2018-05-04 | A124740, A121120 FF, 118160 |  |  | 91d | 0d |  | MH-Wtg [97.49 h] | 43,871 |  | 003 |  |  |
| A121140 |  | Glanding and termination | 10d | 2018-05-07 | 2018-05-18 | A121150 |  |  | 91d |  |  | MH-Wtg [81.24 h] | 36,558 |  | 003 |  |  |

| ID | WBS | Activity | Duration | Start | Finish | Predecessors | Complete | Remaining | Planned start | Planned finish | Total float | Free float | Calendar | Resources | Cost | Actual cost | UNIT DESCRIPTION |
| --- | --- | --- | --- | --- | --- | --- | --- | --- | --- | --- | --- | --- | --- | --- | --- | --- | --- |
|  | 4 | **Instrument Installation** |  | 2018-06-15 | 2018-08-16 |  |  |  |  |  |  |  |  |  |  |  |  |
| A121169 |  | DCS installation | 15d | 2018-06-15 | 2018-07-05 | A124740, 118480, 114230 FS+20d |  |  |  |  | 27d | 0d |  | MH-Wtg [649.92 h] | 292,464 |  | 003 |
| A121170 |  | Cable tray installation | 15d | 2018-07-06 | 2018-07-26 | A121169 |  |  |  |  | 32d | 0d |  | MH-Wtg [162.48 h] | 73,116 |  | 003 |
| A121200 |  | Installation of instrument panels | 10d | 2018-07-06 | 2018-07-19 | A121169 |  |  |  |  | 27d | 0d |  | MH-Wtg [243.72 h] | 109,674 |  | 003 |
| A121210 |  | Glanding and termination | 20d | 2018-07-20 | 2018-08-16 | A121200, A121180 FF |  |  |  |  | 27d |  |  | MH-Wtg [324.96 h] | 146,232 |  | 003 |
| A121180 |  | Cable laying | 10d | 2018-07-27 | 2018-08-09 | A121170 |  |  |  |  | 32d | 5d |  | MH-Wtg [243.72 h] | 109,674 |  | 003 |
|  | 30 | **B113A- Admin Building/Canteen** |  | 2017-05-19 | 2018-08-27 |  |  |  |  |  |  |  |  |  |  |  |  |
|  | 1 | **Civil & Structural Work** |  | 2017-05-19 | 2018-07-30 |  |  |  |  |  |  |  |  |  |  |  |  |
| A124759 |  | Piling work | 18d | 2017-05-19 A | 2017-07-15 A | 102350, 113110 FS+19d | 100% |  | 2017-05-19 | 2017-07-14 |  |  | Monsoon | MH-Wtg [877.39 h] | 394,826 | 394,826 | 003 |
| A124760 |  | Foundation & columns | 180d | 2017-07-06 A | 2018-04-13 | A124759, 113112.1 FS+10d | 59% | 74d | 2017-07-10 | 2018-04-13 | 143d |  | Monsoon | MH-Wtg [877.39 h] | 394,826 | 232,508 | 003 |
| A124770 |  | Plinth beams | 22d | 2017-11-11 A | 2017-12-12 A | A124760 SS+20d | 100% |  | 2017-11-13 | 2017-12-12 |  |  |  | MH-Wtg [584.93 h] | 263,219 | 263,219 | 003 |
| A124780 |  | Grade slab | 30d | 2017-12-08 A | 2018-01-18 | A124770 | 53% | 14d |  |  | 20d | 0d |  | MH-Wtg [292.46 h] | 131,607 | 70,190 | 003 |
| A124820 |  | Staircase work | 131d | 2017-12-15 A | 2018-06-18 | A124810 FF | 39% | 80d |  |  | 0d |  |  | MH-Wtg [584.93 h] | 263,219 | 102,474 | 003 |
| A124800 |  | Lintel beams | 100d | 2018-01-02 | 2018-05-22 | A124770 FS+15d |  |  |  |  | 0d |  |  | MH-Wtg [584.93 h] | 263,219 |  | 003 |
| A124790 |  | Brick work & plastering | 116d | 2018-01-19 | 2018-07-02 | A124780 |  |  |  |  | 20d | 0d |  | MH-Wtg [292.46 h] | 131,607 |  | 003 |
| A124810 |  | Floor slabs | 99d | 2018-01-31 | 2018-06-18 | A124800 SS+20d |  |  |  |  | 0d |  |  | MH-Wtg [1169.85 h] | 526,433 |  | 003 |
| A124830 |  | Flooring work | 25d | 2018-05-29 | 2018-07-02 | A124810 FS-20d, A124820 FF+10d |  |  |  |  | 0d |  |  | MH-Wtg [146.23 h] | 65,804 |  | 003 |
| A124840 |  | Plumbing & sanitary work | 20d | 2018-06-26 | 2018-07-23 | A124830 FS-5d |  |  |  |  | 25d |  |  | MH-Wtg [146.23 h] | 65,804 |  | 003 |
| A124850 |  | Doors, windows and handrails | 20d | 2018-07-03 | 2018-07-30 | A124830 |  |  |  |  | 0d |  |  | MH-Wtg [146.23 h] | 65,804 |  | 003 |
| A124860 |  | Painting work | 20d | 2018-07-03 | 2018-07-30 | A124790 |  |  |  |  | 20d |  |  | MH-Wtg [146.23 h] | 65,804 |  | 003 |
|  | 3 | **Electrical Installation** |  | 2018-06-12 | 2018-08-27 |  |  |  |  |  |  |  |  |  |  |  |  |
| A121350 |  | Concealed wiring for electrification | 15d | 2018-06-12 | 2018-07-02 | A124790 FF |  |  |  |  | 20d |  |  | MH-Wtg [129.98 h] | 58,491 |  | 003 |
| A121390 |  | Installation of light fittings | 15d | 2018-07-24 | 2018-08-13 | A121360 FF |  |  |  |  | 0d |  |  | MH-Wtg [194.98 h] | 87,741 |  | 003 |
| A121360 |  | Installation of switches/plugs | 10d | 2018-07-31 | 2018-08-13 | A121350, A124850 |  |  |  |  | 0d |  |  | MH-Wtg [162.48 h] | 73,116 |  | 003 |
| A121380 |  | Terminations | 10d | 2018-08-14 | 2018-08-27 | A121390 |  |  |  |  | 0d |  |  | MH-Wtg [162.48 h] | 73,116 |  | 003 |

| ID | WBS | Activity | Duration | Start | Finish | Predecessors | Complete | Remaining | Total float | Free float | Calendar | Resources | Cost | Actual cost | user_start_date1 | UNIT DESCRIPTION | user_end_date1 |
| --- | --- | --- | --- | --- | --- | --- | --- | --- | --- | --- | --- | --- | --- | --- | --- | --- | --- |
|  | 42 | **B113B- Security Block, HSE** |  | 2017-11-10 | 2018-05-30 |  |  |  |  |  |  |  |  |  |  |  |  |
|  | 1 | **Civil & Structural Work** |  | 2017-11-10 | 2018-05-23 |  |  |  |  |  |  |  |  |  |  |  |  |
| A125830 |  | Foundation & columns | 84d | 2017-11-10 A | 2018-03-08 | 113120 FS+10d, 103000 | 43% | 48d | 169d |  | Monsoon | MH-Wtg [351 h] | 157,950 | 67,693 | 2017-12-28 | 003 |  |
| A125850 |  | Plinth beams | 23d | 2017-12-15 A | 2018-01-16 | A125830 SS+20d | 48% | 12d | 110d | 0d |  | MH-Wtg [234 h] | 105,300 | 50,361 |  | 003 |  |
| A125860 |  | Grade slab | 11d | 2017-12-26 A | 2018-01-09 | A125850 | 36% | 7d | 140d | 0d |  | MH-Wtg [117 h] | 52,650 | 19,145 |  | 003 |  |
| A125840 |  | Brick work & plastering | 60d | 2018-01-10 | 2018-04-04 | A125860 |  |  | 140d | 0d |  | MH-Wtg [117 h] | 52,650 |  |  | 003 |  |
| A125870 |  | Lintel beams | 20d | 2018-02-08 | 2018-03-07 | A125850 FS+15d |  |  | 110d | 0d |  | MH-Wtg [234 h] | 105,300 |  |  | 003 |  |
| A125880 |  | Floor slabs | 10d | 2018-03-29 | 2018-04-11 | A125870 FS+15d |  |  | 110d | 0d |  | MH-Wtg [468 h] | 210,600 |  |  | 003 |  |
| A125920 |  | Painting work | 10d | 2018-04-05 | 2018-04-18 | A125840 |  |  | 140d |  |  | MH-Wtg [58 h] | 26,100 |  |  | 003 |  |
| A125900 |  | Flooring work | 15d | 2018-04-12 | 2018-05-02 | A125880 |  |  | 110d | 0d |  | MH-Wtg [58 h] | 26,100 |  |  | 003 |  |
| A125930 |  | Plumbing & sanitary work | 20d | 2018-04-26 | 2018-05-23 | A125900 FS-5d |  |  | 115d |  |  | MH-Wtg [58 h] | 26,100 |  |  | 003 | 2018-05-30 |
| A125910 |  | Doors, windows and handrails | 10d | 2018-05-03 | 2018-05-16 | A125900 |  |  | 110d | 0d |  | MH-Wtg [58 h] | 26,100 |  |  | 003 |  |
|  | 3 | **Electrical Installation** |  | 2018-03-26 | 2018-05-30 |  |  |  |  |  |  |  |  |  |  |  |  |
| A125950 |  | Concealed wiring for electrification | 8d | 2018-03-26 | 2018-04-04 | A125840 FF |  |  | 140d | 30d |  | MH-Wtg [52 h] | 23,400 |  |  | 003 |  |
| A125980 |  | Installation of light fittings | 10d | 2018-05-10 | 2018-05-23 | A125960 FF |  |  | 110d | 0d |  | MH-Wtg [78 h] | 35,100 |  |  | 003 |  |
| A125960 |  | Installation of switches/plugs | 5d | 2018-05-17 | 2018-05-23 | A125910, A125950 |  |  | 110d | 0d |  | MH-Wtg [65 h] | 29,250 |  |  | 003 |  |
| A125970 |  | Terminations | 5d | 2018-05-24 | 2018-05-30 | A125980 |  |  | 110d |  |  | MH-Wtg [65 h] | 29,250 |  |  | 003 |  |
|  | 32 | **B114A- Warehouse- Open Space** |  | 2017-11-10 | 2018-01-05 |  |  |  |  |  |  |  |  |  |  |  |  |
|  | 1 | **Civil & Structural Work** |  | 2017-11-10 | 2017-12-06 |  |  |  |  |  |  |  |  |  |  |  |  |
| A121480 |  | RCC/Civil construction work | 6d | 2017-11-10 A | 2017-11-17 A | 102600, 113120 FS+10d | 100% |  |  |  |  | MH-Wtg [187.18 h] | 84,231 | 84,231 |  | 003 |  |
| A121490 |  | Fencing work | 10d | 2017-11-23 A | 2017-12-06 A | A121480 | 100% |  |  |  |  | MH-Wtg [46.79 h] | 21,056 | 21,056 |  | 003 |  |
|  | 3 | **Electrical Installation** |  | 2018-01-01 | 2018-01-05 |  |  |  |  |  |  |  |  |  |  |  |  |
| A121580 |  | Cable tray installation (Deleted) | 5d | 2018-01-01 | 2018-01-05 |  |  |  | 212d |  |  | MH-Wtg |  |  |  | 003 |  |
| A121590 |  | Cable laying (Deleted) | 3d | 2018-01-01 | 2018-01-03 |  |  |  | 214d |  |  | MH-Wtg |  |  |  | 003 |  |
| A121610 |  | Glanding and termination (Deleted) | 5d | 2018-01-01 | 2018-01-05 |  |  |  | 212d |  |  | MH-Wtg |  |  |  | 003 |  |
| A121620 |  | Installation of light fittings (Deleted) | 5d | 2018-01-01 | 2018-01-05 | A121490 |  |  | 212d |  |  | MH-Wtg |  |  |  | 003 |  |

| ID | WBS | Activity | Duration | Start | Finish | Predecessors | Complete | Remaining | Planned start | Planned finish | Total float | Free float | Constraint | Resources | Cost | Actual cost | user_start_date1 | UNIT DESCRIPTION | user_end_date1 |
| --- | --- | --- | --- | --- | --- | --- | --- | --- | --- | --- | --- | --- | --- | --- | --- | --- | --- | --- | --- |
|  | 33 | **B114B- Weighbridge, Logistics** |  | 2017-11-14 | 2018-04-23 |  |  |  |  |  |  |  |  |  |  |  |  |  |  |
|  | 1 | **Civil & Structural Work** |  | 2017-11-14 | 2018-03-26 |  |  |  |  |  |  |  |  |  |  |  |  |  |  |
| A124870 |  | Foundation & columns | 75d | 2017-11-14 A | 2018-02-27 | 102750, 113112.1 FS+10d | 45% | 41d |  |  | 158d | 176d | start on or after 2017-12-01 | MH-Wtg [187.18 h] | 84,231 | 38,185 | 2017-12-11 | 003 |  |
| A124880 |  | Plinth beams | 2d | 2017-12-21 A | 2017-12-23 A | A124870 SS+20d | 100% |  | 2017-12-21 | 2017-12-22 |  |  |  | MH-Wtg [140.38 h] | 63,171 | 63,171 |  | 003 |  |
| A124890 |  | Grade slab | 5d | 2018-01-01 | 2018-01-05 | A124880 |  |  |  |  | 112d | 0d |  | MH-Wtg [46.79 h] | 21,056 |  |  | 003 |  |
| A124900 |  | Brick work & plastering | 43d | 2018-01-08 | 2018-03-08 | A124890 |  |  |  |  | 112d | 0d |  | MH-Wtg [46.79 h] | 21,056 |  |  | 003 |  |
| A124910 |  | Lintel beams | 10d | 2018-01-08 | 2018-01-19 | A124880 FS+10d |  |  |  |  | 96d | 0d |  | MH-Wtg [140.38 h] | 63,171 |  |  | 003 |  |
| A124869 |  | Civil work for weighbridge | 20d | 2018-01-30 | 2018-02-26 | A124920 FF |  |  |  |  | 157d | 0d |  | MH-Wtg [93.59 h] | 42,116 |  |  | 003 |  |
| A124920 |  | Floor slabs | 15d | 2018-02-06 | 2018-02-26 | A124910 FS+10d |  |  |  |  | 96d | 0d |  | MH-Wtg [187.18 h] | 84,231 |  |  | 003 |  |
| A124940 |  | Flooring work | 10d | 2018-02-27 | 2018-03-12 | A124920 |  |  |  |  | 96d | 0d |  | MH-Wtg [23.4 h] | 10,530 |  |  | 003 |  |
| A124950 |  | Plumbing & sanitary work | 15d | 2018-03-06 | 2018-03-26 | A124940 FS-5d |  |  |  |  | 110d |  |  | MH-Wtg [23.4 h] | 10,530 |  |  | 003 |  |
| A124970 |  | Painting work | 10d | 2018-03-09 | 2018-03-22 | A124900 |  |  |  |  | 112d |  |  | MH-Wtg [23.4 h] | 10,530 |  |  | 003 | 2018-05-20 |
| A124960 |  | Doors, windows and handrails | 10d | 2018-03-13 | 2018-03-26 | A124940 |  |  |  |  | 96d | 0d |  | MH-Wtg [23.4 h] | 10,530 |  |  | 003 |  |
|  | 3 | **Electrical Installation** |  | 2018-03-27 | 2018-04-13 |  |  |  |  |  |  |  |  |  |  |  |  |  |  |
| A121850 |  | Installation of light fittings | 5d | 2018-03-27 | 2018-04-02 | A124960, 113540 |  |  |  |  | 96d | 0d |  | MH-Wtg [46.79 h] | 21,056 |  |  | 003 |  |
| A121810 |  | Cable tray installation | 3d | 2018-04-03 | 2018-04-05 | A121850 |  |  |  |  | 96d | 0d |  | MH-Wtg [31.2 h] | 14,040 |  |  | 003 |  |
| A121820 |  | Cable laying | 3d | 2018-04-06 | 2018-04-10 | A121810 |  |  |  |  | 96d | 0d |  | MH-Wtg [39 h] | 17,550 |  |  | 003 |  |
| A121840 |  | Glanding and termination | 3d | 2018-04-11 | 2018-04-13 | A121820 |  |  |  |  | 96d |  |  | MH-Wtg [39 h] | 17,550 |  |  | 003 |  |
|  | 4 | **Instrument Installation** |  | 2018-03-27 | 2018-04-23 |  |  |  |  |  |  |  |  |  |  |  |  |  |  |
| A121870 |  | Installation of weighbridge package | 20d | 2018-03-27 | 2018-04-23 | A124869, 119250, A124960 |  |  |  |  | 137d | 0d |  | MH-Wtg [467.94 h] | 210,573 |  |  | 003 |  |
|  | 26 | **B114C- Weighbridge, Logistics (Hold)** |  | 2018-01-01 | 2018-04-23 |  |  |  |  |  |  |  |  |  |  |  |  |  |  |
|  | 1 | **Civil & Structural Work** |  | 2018-01-01 | 2018-03-23 |  |  |  |  |  |  |  |  |  |  |  |  |  |  |
| A125040 |  | Foundation & columns (Hold) | 59d | 2018-01-01 | 2018-03-23 | A124870 SS |  |  |  |  | 158d |  |  | MH-Wtg |  |  |  | 003 |  |
| A125050 |  | Brick work & plastering (Hold) | 43d | 2018-01-01 | 2018-03-01 |  |  |  |  |  | 174d |  |  | MH-Wtg |  |  |  | 003 |  |
| A125060 |  | Plinth beams (Hold) | 10d | 2018-01-01 | 2018-01-12 |  |  |  |  |  | 207d |  |  | MH-Wtg |  |  |  | 003 |  |
| A125070 |  | Grade slab (Hold) | 5d | 2018-01-01 | 2018-01-05 |  |  |  |  |  | 212d |  |  | MH-Wtg |  |  |  | 003 |  |
| A125080 |  | Lintel beams (Hold) | 8d | 2018-01-01 | 2018-01-10 |  |  |  |  |  | 209d |  |  | MH-Wtg |  |  |  | 003 |  |
| A125090 |  | Floor slabs (Hold) | 8d | 2018-01-01 | 2018-01-10 |  |  |  |  |  | 209d |  |  | MH-Wtg |  |  |  | 003 |  |
| A125100 |  | Flooring work (Hold) | 10d | 2018-01-01 | 2018-01-12 |  |  |  |  |  | 207d |  |  | MH-Wtg |  |  |  | 003 |  |
| A125110 |  | Plumbing & sanitary work (Hold) | 15d | 2018-01-01 | 2018-01-19 |  |  |  |  |  | 202d |  |  | MH-Wtg |  |  |  | 003 |  |
| A125120 |  | Doors, windows and handrails (Hold) | 10d | 2018-01-01 | 2018-01-12 |  |  |  |  |  | 207d |  |  | MH-Wtg |  |  |  | 003 |  |
| A125130 |  | Painting work (Hold) | 10d | 2018-01-01 | 2018-01-12 |  |  |  |  |  | 207d |  |  | MH-Wtg |  |  |  | 003 |  |
| A124980 |  | Civil work for weighbridge (Hold) | 20d | 2018-01-30 | 2018-02-26 | A124869 SS |  |  |  |  | 177d |  |  | MH-Wtg |  |  |  | 003 |  |

| ID | WBS | Activity | Duration | Start | Finish | Predecessors | Total float | Free float | Constraint | Resources | Cost | UNIT DESCRIPTION |
| --- | --- | --- | --- | --- | --- | --- | --- | --- | --- | --- | --- | --- |
|  | 3 | **Electrical Installation** |  | 2018-01-01 | 2018-01-05 |  |  |  |  |  |  |  |
| A124990 |  | Cable tray installation (Hold) | 3d | 2018-01-01 | 2018-01-03 |  | 214d |  |  | MH-Wtg |  | 003 |
| A125000 |  | Cable laying (Hold) | 3d | 2018-01-01 | 2018-01-03 |  | 214d |  |  | MH-Wtg |  | 003 |
| A125010 |  | Glanding and termination (Hold) | 3d | 2018-01-01 | 2018-01-03 |  | 214d |  |  | MH-Wtg |  | 003 |
| A125020 |  | Installation of light fittings (Hold) | 5d | 2018-01-01 | 2018-01-05 |  | 212d |  |  | MH-Wtg |  | 003 |
|  | 4 | **Instrument Installation** |  | 2018-03-27 | 2018-04-23 |  |  |  |  |  |  |  |
| A125030 |  | Installation of weighbridge package (Hold) | 20d | 2018-03-27 | 2018-04-23 | A121870 SS, 119250 | 137d |  |  | MH-Wtg |  | 003 |
|  | 34 | **B115A- Car Parking** |  | 2018-06-20 | 2018-08-07 |  |  |  |  |  |  |  |
|  | 1 | **Civil & Structural Work** |  | 2018-06-20 | 2018-07-31 |  |  |  |  |  |  |  |
| A122170 |  | RCC/Civil construction work | 15d | 2018-06-20 | 2018-07-10 | 102810 | 3d | 0d | start on or after 2018-06-20 | MH-Wtg [163.78 h] | 73,701 | 003 |
| A122180 |  | Structural steel erection | 10d | 2018-07-11 | 2018-07-24 | A122170 | 14d | 0d |  | MH-Wtg [58.49 h] | 26,321 | 003 |
| A122190 |  | Painting work | 5d | 2018-07-25 | 2018-07-31 | A122180 | 19d |  |  | MH-Wtg [11.7 h] | 5,265 | 003 |
|  | 3 | **Electrical Installation** |  | 2018-07-25 | 2018-08-07 |  |  |  |  |  |  |  |
| A122310 |  | Installation of light fittings | 3d | 2018-07-25 | 2018-07-27 | A122180 | 14d | 0d |  | MH-Wtg [11.7 h] | 5,265 | 003 |
| A122270 |  | Cable tray installation | 3d | 2018-07-30 | 2018-08-01 | A122310 | 14d | 0d |  | MH-Wtg [3.9 h] | 1,755 | 003 |
| A122280 |  | Cable laying | 2d | 2018-08-02 | 2018-08-03 | A122270 | 14d | 0d |  | MH-Wtg [2.6 h] | 1,170 | 003 |
| A122300 |  | Glanding and termination | 2d | 2018-08-06 | 2018-08-07 | A122280 | 14d |  |  | MH-Wtg [7.8 h] | 3,510 | 003 |
|  | 35 | **B115B- Two Wheeler Parking** |  | 2018-07-11 | 2018-09-05 |  |  |  |  |  |  |  |
|  | 1 | **Civil & Structural Work** |  | 2018-07-11 | 2018-08-21 |  |  |  |  |  |  |  |
| A125140 |  | RCC/Civil construction work | 15d | 2018-07-11 | 2018-07-31 | 102870 FS-5d, A122170 | 3d | 0d |  | MH-Wtg [163.78 h] | 73,701 | 003 |
| A125150 |  | Structural steel erection | 10d | 2018-08-01 | 2018-08-14 | A125140 | 3d | 0d |  | MH-Wtg [58.49 h] | 26,321 | 003 |
| A125160 |  | Painting work | 5d | 2018-08-15 | 2018-08-21 | A125150 | 4d |  |  | MH-Wtg [11.7 h] | 5,265 | 003 |
|  | 3 | **Electrical Installation** |  | 2018-08-15 | 2018-09-05 |  |  |  |  |  |  |  |
| A125200 |  | Installation of light fittings | 5d | 2018-08-15 | 2018-08-21 | A125150 | 3d | 0d |  | MH-Wtg [11.7 h] | 5,265 | 003 |
| A125170 |  | Cable tray installation | 5d | 2018-08-22 | 2018-08-28 | A125200 | 3d | 0d |  | MH-Wtg [3.9 h] | 1,755 | 003 |
| A125180 |  | Cable laying | 3d | 2018-08-29 | 2018-08-31 | A125170 | 3d | 0d |  | MH-Wtg [2.6 h] | 1,170 | 003 |
| A125190 |  | Glanding and termination | 3d | 2018-09-03 | 2018-09-05 | A125180 | 3d |  |  | MH-Wtg [7.8 h] | 3,510 | 003 |

| ID | WBS | Activity | Duration | Start | Finish | Predecessors | Total float | Free float | Constraint | Resources | Cost | UNIT DESCRIPTION |
| --- | --- | --- | --- | --- | --- | --- | --- | --- | --- | --- | --- | --- |
|  | 31 | **B115C- Truck Parking** |  | 2018-08-01 | 2018-08-21 |  |  |  |  |  |  |  |
|  | 1 | **Civil & Structural Work** |  | 2018-08-01 | 2018-08-21 |  |  |  |  |  |  |  |
| A125210 |  | RCC/Civil construction work | 15d | 2018-08-01 | 2018-08-21 | 102921, A125140 | 4d |  |  | MH-Wtg [259.97 h] | 116,987 | 003 |
|  | 38 | **B116A- Security Guard House** |  | 2018-03-06 | 2018-06-14 |  |  |  |  |  |  |  |
|  | 1 | **Civil & Structural Work** |  | 2018-03-06 | 2018-05-31 |  |  |  |  |  |  |  |
| A125270 |  | Foundation & columns | 43d | 2018-03-06 | 2018-05-03 | 103100, 113112.1 FS+10d, A125780 FF | 52d | 0d | start on or after 2018-03-06 | MH-Wtg [58.49 h] | 26,321 | 003 |
| A125290 |  | Plinth beams | 5d | 2018-03-20 | 2018-03-26 | A125270 FS-33d | 52d | 0d |  | MH-Wtg [46.79 h] | 21,056 | 003 |
| A125300 |  | Grade slab | 5d | 2018-03-27 | 2018-04-02 | A125290 | 66.88d | 0d |  | MH-Wtg [5.85 h] | 2,633 | 003 |
| A125280 |  | Brick work & plastering | 33.12d | 2018-04-03 | 2018-05-18 | A125300 | 66.88d | 0d |  | MH-Wtg [11.7 h] | 5,265 | 003 |
| A125310 |  | Lintel beams | 5d | 2018-04-10 | 2018-04-16 | A125290 FS+10d | 52d | 0d |  | MH-Wtg [46.79 h] | 21,056 | 003 |
| A125320 |  | Floor slabs | 5d | 2018-04-27 | 2018-05-03 | A125310 FS+8d | 52d | 0d |  | MH-Wtg [46.79 h] | 21,056 | 003 |
| A125330 |  | Flooring work | 5d | 2018-05-11 | 2018-05-17 | A125320 FS+5d | 52d | 0d |  | MH-Wtg [5.85 h] | 2,633 | 003 |
| A125340 |  | Doors, windows and handrails | 10d | 2018-05-18 | 2018-05-31 | A125330 | 52d | 0d |  | MH-Wtg [5.85 h] | 2,633 | 003 |
| A125350 |  | Painting work | 5d | 2018-05-18 | 2018-05-25 | A125280 | 66.88d |  |  | MH-Wtg [5.85 h] | 2,633 | 003 |
|  | 3 | **Electrical Installation** |  | 2018-06-01 | 2018-06-14 |  |  |  |  |  |  |  |
| A125260 |  | Installation of light fittings | 4d | 2018-06-01 | 2018-06-06 | A125340 | 52d | 0d |  | MH-Wtg [7.8 h] | 3,510 | 003 |
| A125230 |  | Cable tray installation | 2d | 2018-06-07 | 2018-06-08 | A125260 | 52d | 0d |  | MH-Wtg [5.2 h] | 2,340 | 003 |
| A125240 |  | Cable laying | 2d | 2018-06-11 | 2018-06-12 | A125230 | 52d | 0d |  | MH-Wtg [6.5 h] | 2,925 | 003 |
| A125250 |  | Glanding and termination | 2d | 2018-06-13 | 2018-06-14 | A125240 | 52d |  |  | MH-Wtg [6.5 h] | 2,925 | 003 |
|  | 36 | **B116B- Security Guard House** |  | 2018-03-06 | 2018-06-14 |  |  |  |  |  |  |  |
|  | 1 | **Civil & Structural Work** |  | 2018-03-06 | 2018-05-31 |  |  |  |  |  |  |  |
| A125400 |  | Foundation & columns | 43d | 2018-03-06 | 2018-05-03 | A125270 SS | 52d | 0d |  | MH-Wtg [58.49 h] | 26,321 | 003 |
| A125420 |  | Plinth beams | 5d | 2018-03-20 | 2018-03-26 | A125400 FS-33d | 52d | 0d |  | MH-Wtg [46.79 h] | 21,056 | 003 |
| A125430 |  | Grade slab | 5d | 2018-03-27 | 2018-04-02 | A125420 | 66.88d | 0d |  | MH-Wtg [5.85 h] | 2,633 | 003 |
| A125410 |  | Brick work & plastering | 33.12d | 2018-04-03 | 2018-05-18 | A125430 | 66.88d | 0d |  | MH-Wtg [11.7 h] | 5,265 | 003 |
| A125440 |  | Lintel beams | 5d | 2018-04-10 | 2018-04-16 | A125420 FS+10d | 52d | 0d |  | MH-Wtg [46.79 h] | 21,056 | 003 |
| A125450 |  | Floor slabs | 5d | 2018-04-27 | 2018-05-03 | A125440 FS+8d | 52d | 0d |  | MH-Wtg [46.79 h] | 21,056 | 003 |
| A125460 |  | Flooring work | 5d | 2018-05-11 | 2018-05-17 | A125450 FS+5d | 52d | 0d |  | MH-Wtg [5.85 h] | 2,633 | 003 |
| A125470 |  | Doors, windows and handrails | 10d | 2018-05-18 | 2018-05-31 | A125460 | 52d | 0d |  | MH-Wtg [5.85 h] | 2,633 | 003 |
| A125480 |  | Painting work | 5d | 2018-05-18 | 2018-05-25 | A125410 | 66.88d |  |  | MH-Wtg [5.85 h] | 2,633 | 003 |

| ID | WBS | Activity | Duration | Start | Finish | Predecessors | Complete | Remaining | Total float | Free float | Calendar | Resources | Cost | Actual cost | UNIT DESCRIPTION | user_start_date1 | user_end_date1 |
| --- | --- | --- | --- | --- | --- | --- | --- | --- | --- | --- | --- | --- | --- | --- | --- | --- | --- |
|  | 3 | **Electrical Installation** |  | 2018-06-01 | 2018-06-14 |  |  |  |  |  |  |  |  |  |  |  |  |
| A125390 |  | Installation of light fittings | 4d | 2018-06-01 | 2018-06-06 | A125470 |  |  | 52d | 0d |  | MH-Wtg [7.8 h] | 3,510 |  | 003 |  |  |
| A125360 |  | Cable tray installation | 2d | 2018-06-07 | 2018-06-08 | A125390 |  |  | 52d | 0d |  | MH-Wtg [5.2 h] | 2,340 |  | 003 |  |  |
| A125370 |  | Cable laying | 2d | 2018-06-11 | 2018-06-12 | A125360 |  |  | 52d | 0d |  | MH-Wtg [6.5 h] | 2,925 |  | 003 |  |  |
| A125380 |  | Glanding and termination | 2d | 2018-06-13 | 2018-06-14 | A125370 |  |  | 52d |  |  | MH-Wtg [6.5 h] | 2,925 |  | 003 |  |  |
|  | 39 | **B117- Piperack** |  | 2017-09-26 | 2018-08-14 |  |  |  |  |  |  |  |  |  |  |  |  |
|  | 1 | **Civil & Structural Work** |  | 2017-09-26 | 2018-07-03 |  |  |  |  |  |  |  |  |  |  |  |  |
| A123330 |  | RCC/Civil construction work | 65d | 2017-09-26 A | 2017-12-25 A | 103160, 113112.1 FS+10d | 100% |  |  |  | Monsoon | MH-Wtg [952.36 h] | 428,562 | 428,562 | 003 | 2017-09-20 | 2018-01-30 |
| A123340 |  | Structural steel erection | 92d | 2017-10-13 A | 2018-02-20 | A123330 FS-40d | 61% | 36d | 33d | 0d |  | MH-Wtg [1309.49 h] | 589,271 | 358,686 | 003 | 2017-11-10 | 2018-02-20 |
| A123360 |  | Painting work | 40d | 2018-05-09 | 2018-07-03 | A123390 SS |  |  | 78d |  |  | MH-Wtg [119.04 h] | 53,568 |  | 003 | 2018-02-20 | 2018-04-05 |
|  | 2 | **Mechanical Erection & Piping** |  | 2018-02-21 | 2018-08-14 |  |  |  |  |  |  |  |  |  |  |  |  |
| A123380 |  | Piping erection | 80d | 2018-02-21 | 2018-06-12 | A123340, 106550 SS+10d |  |  | 33d | 0d |  | MH-Wtg [1666.62 h] | 749,979 |  | 003 |  |  |
| A123390 |  | Testing and boxup | 60d | 2018-05-09 | 2018-07-31 | A123380 FS-25d |  |  | 33d | 0d |  | MH-Wtg [357.13 h] | 160,709 |  | 003 |  |  |
| A123400 |  | Insulation of equipments and piping | 40d | 2018-06-20 | 2018-08-14 | A123390 FS-30d |  |  | 33d |  |  | MH-Wtg [238.09 h] | 107,141 |  | 003 |  |  |
| A123410 |  | Painting work | 30d | 2018-07-04 | 2018-08-14 | A123390 FS-20d |  |  | 48d |  |  | MH-Wtg [119.04 h] | 53,568 |  | 003 |  |  |
|  | 3 | **Electrical Installation** |  | 2018-04-30 | 2018-07-20 |  |  |  |  |  |  |  |  |  |  |  |  |
| A123420 |  | Cable tray installation | 45d | 2018-04-30 | 2018-06-29 | A123380 FS-40d, 118100 FS-20d |  |  | 35d | 0d |  | MH-Wtg [411.83 h] | 185,324 |  | 003 |  |  |
| A123470 |  | Earthing work | 20d | 2018-05-21 | 2018-06-15 | A123420 FS-30d |  |  | 75d |  |  | MH-Wtg [154.44 h] | 69,498 |  | 003 |  |  |
| A123430 |  | Cable laying | 30d | 2018-06-11 | 2018-07-20 | A123420 FS-15d, 117710 FS-20d |  |  | 50d |  |  | MH-Wtg [463.31 h] | 208,490 |  | 003 |  |  |
|  | 4 | **Instrument Installation** |  | 2018-05-21 | 2018-08-10 |  |  |  |  |  |  |  |  |  |  |  |  |
| A123480 |  | Cable tray installation | 45d | 2018-05-21 | 2018-07-20 | A123420 FS-30d, 119101 FS-20d |  |  | 35d | 0d |  | MH-Wtg [318.52 h] | 143,334 |  | 003 |  |  |
| A123490 |  | Cable laying | 30d | 2018-07-02 | 2018-08-10 | A123480 FS-15d, 119108 FS-20d |  |  | 35d |  |  | MH-Wtg [389.31 h] | 175,190 |  | 003 |  |  |
|  | 44 | **B120- Gas Metering Station (Deleted)** |  | 2018-01-01 | 2018-01-29 |  |  |  |  |  |  |  |  |  |  |  |  |
|  | 1 | **Civil & Structural Work** |  | 2018-01-01 | 2018-01-29 |  |  |  |  |  |  |  |  |  |  |  |  |
| A123550 |  | Equipment foundations (Deleted) | 20d | 2018-01-01 | 2018-01-29 |  |  |  | 197d |  |  | MH-Wtg |  |  | 003 |  |  |
| A123560 |  | RCC/Civil construction work (Deleted) | 15d | 2018-01-01 | 2018-01-19 |  |  |  | 202d |  |  | MH-Wtg |  |  | 003 |  |  |

| ID | WBS | Activity | Duration | Start | Finish | Predecessors | Complete | Remaining | Planned start | Planned finish | Total float | Constraint | Resources | Cost | Actual cost | UNIT DESCRIPTION |
| --- | --- | --- | --- | --- | --- | --- | --- | --- | --- | --- | --- | --- | --- | --- | --- | --- |
|  | 2 | **Mechanical Erection & Piping** |  | 2018-01-01 | 2018-01-19 |  |  |  |  |  |  |  |  |  |  |  |
| A123600 |  | Installation of metering skid (Deleted) | 10d | 2018-01-01 | 2018-01-12 |  |  |  |  |  | 207d |  | MH-Wtg |  |  | 003 |
| A123610 |  | Piping hookup (Deleted) | 15d | 2018-01-01 | 2018-01-19 |  |  |  |  |  | 202d |  | MH-Wtg |  |  | 003 |
|  | 3 | **Electrical Installation** |  | 2018-01-01 | 2018-01-05 |  |  |  |  |  |  |  |  |  |  |  |
| A123650 |  | Cable tray installation (Deleted) | 3d | 2018-01-01 | 2018-01-03 |  |  |  |  |  | 214d |  | MH-Wtg |  |  | 003 |
| A123660 |  | Cable laying (Deleted) | 3d | 2018-01-01 | 2018-01-03 |  |  |  |  |  | 214d |  | MH-Wtg |  |  | 003 |
| A123680 |  | Glanding and termination (Deleted) | 3d | 2018-01-01 | 2018-01-03 |  |  |  |  |  | 214d |  | MH-Wtg |  |  | 003 |
| A123690 |  | Installation of light fittings (Deleted) | 3d | 2018-01-01 | 2018-01-03 |  |  |  |  |  | 214d |  | MH-Wtg |  |  | 003 |
| A123700 |  | Earthing work (Deleted) | 5d | 2018-01-01 | 2018-01-05 |  |  |  |  |  | 212d |  | MH-Wtg |  |  | 003 |
|  | 4 | **Instrument Installation** |  | 2018-01-01 | 2018-01-10 |  |  |  |  |  |  |  |  |  |  |  |
| A123710 |  | Cable tray installation (Deleted) | 3d | 2018-01-01 | 2018-01-03 |  |  |  |  |  | 214d |  | MH-Wtg |  |  | 003 |
| A123720 |  | Cable laying (Deleted) | 3d | 2018-01-01 | 2018-01-03 |  |  |  |  |  | 214d |  | MH-Wtg |  |  | 003 |
| A123740 |  | Installation of instruments (Deleted) | 8d | 2018-01-01 | 2018-01-10 |  |  |  |  |  | 209d |  | MH-Wtg |  |  | 003 |
| A123750 |  | Glanding and termination (Deleted) | 5d | 2018-01-01 | 2018-01-05 |  |  |  |  |  | 212d |  | MH-Wtg |  |  | 003 |
| A123760 |  | Hookup of instruments (Deleted) | 5d | 2018-01-01 | 2018-01-05 |  |  |  |  |  | 212d |  | MH-Wtg |  |  | 003 |
| A123770 |  | Testing & calibration (Deleted) | 3d | 2018-01-01 | 2018-01-03 |  |  |  |  |  | 214d |  | MH-Wtg |  |  | 003 |
|  | 45 | **B121- Engineering Store** |  | 2017-06-02 | 2018-01-12 |  |  |  |  |  |  |  |  |  |  |  |
|  | 1 | **Civil & Structural Work** |  | 2017-06-02 | 2018-01-12 |  |  |  |  |  |  |  |  |  |  |  |
| A125490 |  | Foundation & columns | 50d | 2017-06-02 A | 2017-08-10 A | 119500, 113112.1 FS+5d | 100% |  |  |  |  |  | MH-Wtg [584.93 h] | 263,219 | 263,219 | 003 |
| A125510 |  | Plinth beams | 24d | 2017-07-10 A | 2017-08-10 A | A125490 FS-15d | 100% |  |  |  |  |  | MH-Wtg [233.97 h] | 105,287 | 105,287 | 003 |
| A125520 |  | Grade slab | 40d | 2017-08-03 A | 2017-09-28 A | A125510 | 100% |  |  |  |  |  | MH-Wtg [58.49 h] | 26,321 | 26,321 | 003 |
| A125530 |  | PEB Structure installation | 104d | 2017-08-05 A | 2017-12-29 A | A125490 FS+10d, 113112 FS+50d, 115790 FF+10d | 100% |  | 2017-08-07 | 2017-12-29 |  | start on 2017-07-03 | MH-Wtg [935.88 h] | 421,146 | 421,146 | 003 |
| A125500 |  | Brick work & plastering | 64d | 2017-08-13 A | 2017-11-10 A | A125520 | 100% |  | 2017-08-14 | 2017-11-10 |  |  | MH-Wtg [116.99 h] | 52,646 | 52,646 | 003 |
| A125560 |  | Doors, windows and handrails | 9d | 2017-09-15 A | 2017-09-27 A | A125550 | 100% |  |  |  |  |  | MH-Wtg [58.49 h] | 26,321 | 26,321 | 003 |
| A125550 |  | Flooring work | 7d | 2017-09-20 A | 2017-09-28 A | A125530 | 100% |  |  |  |  |  | MH-Wtg [58.49 h] | 26,321 | 26,321 | 003 |
| A125540 |  | Slab for office cabins (Deleted) | 8d | 2017-10-27 A | 2018-01-10 | A125530 FS-20d |  | 8d | 2017-10-27 | 2017-11-07 | 209d |  | MH-Wtg |  |  | 003 |
| A125570 |  | Painting work | 28d | 2017-12-06 A | 2018-01-12 | A125500 | 64% | 10d |  |  | 160d |  | MH-Wtg [58.49 h] | 26,321 | 16,920 | 003 |

| ID | WBS | Activity | Duration | Start | Finish | Predecessors | Complete | Planned start | Planned finish | Total float | Constraint | Resources | Cost | Actual cost | UNIT DESCRIPTION |
| --- | --- | --- | --- | --- | --- | --- | --- | --- | --- | --- | --- | --- | --- | --- | --- |
|  | 3 | **Electrical Installation** |  | 2017-12-12 | 2017-12-30 |  |  |  |  |  |  |  |  |  |  |
| A123880 |  | Cable tray installation | 4d | 2017-12-12 A | 2017-12-16 A | A123920 | 100% | 2017-12-12 | 2017-12-15 |  |  | MH-Wtg [51.99 h] | 23,396 | 23,396 | 003 |
| A123890 |  | Cable laying | 5d | 2017-12-18 A | 2017-12-22 A | A123880 | 100% |  |  |  |  | MH-Wtg [64.99 h] | 29,246 | 29,246 | 003 |
| A123910 |  | Glanding and termination | 3d | 2017-12-23 A | 2017-12-27 A | A123890 | 100% | 2017-12-25 | 2017-12-27 |  |  | MH-Wtg [64.99 h] | 29,246 | 29,246 | 003 |
| A123920 |  | Installation of light fittings | 3d | 2017-12-27 A | 2017-12-30 A | A125560 | 100% | 2017-12-27 | 2017-12-29 |  |  | MH-Wtg [77.99 h] | 35,096 | 35,096 | 003 |
|  | 46 | **B122- Engineering Workshop** |  | 2017-06-02 | 2018-01-12 |  |  |  |  |  |  |  |  |  |  |
|  | 1 | **Civil & Structural Work** |  | 2017-06-02 | 2018-01-12 |  |  |  |  |  |  |  |  |  |  |
| A125620 |  | Foundation & columns | 103d | 2017-06-02 A | 2017-10-25 A | 119650, 113112.1 FS+5d | 100% |  |  |  |  | MH-Wtg [467.94 h] | 210,573 | 210,573 | 003 |
| A125630 |  | Plinth beams | 24d | 2017-07-10 A | 2017-08-10 A | A125620 FS-55d | 100% |  |  |  |  | MH-Wtg [116.99 h] | 52,646 | 52,646 | 003 |
| A125640 |  | Grade slab | 40d | 2017-08-03 A | 2017-09-28 A | A125630 | 100% |  |  |  |  | MH-Wtg [58.49 h] | 26,321 | 26,321 | 003 |
| A125641 |  | PEB Structure installation | 104d | 2017-08-05 A | 2017-12-29 A | A125620 FS-40d, 113112 FS+50d | 100% | 2017-08-07 | 2017-12-29 |  | start on 2017-07-03 | MH-Wtg [935.88 h] | 421,146 | 421,146 | 003 |
| A125650 |  | Brick work & plastering | 99d | 2017-08-13 A | 2017-12-30 A | A125640 | 100% | 2017-08-14 | 2017-12-29 |  |  | MH-Wtg [58.49 h] | 26,321 | 26,321 | 003 |
| A125660 |  | Lintel beams | 25d | 2017-08-20 A | 2017-09-23 A | A125630 FS+10d | 100% | 2017-08-21 | 2017-09-22 |  |  | MH-Wtg [116.99 h] | 52,646 | 52,646 | 003 |
| A125680 |  | Staircase work | 19d | 2017-09-02 A | 2017-09-28 A | A125670 FF | 100% | 2017-09-04 | 2017-09-28 |  |  | MH-Wtg [116.99 h] | 52,646 | 52,646 | 003 |
| A125670 |  | Floor slabs | 41d | 2017-09-05 A | 2017-10-31 A | A125660 FS-20d | 100% |  |  |  |  | MH-Wtg [233.97 h] | 105,287 | 105,287 | 003 |
| A125710 |  | Doors, windows and handrails | 33d | 2017-09-15 A | 2017-10-31 A | A125690 | 100% |  |  |  |  | MH-Wtg [58.49 h] | 26,321 | 26,321 | 003 |
| A125690 |  | Flooring work | 33d | 2017-09-20 A | 2017-11-04 A | A125670, A125641, A125680 FF+10d | 100% | 2017-09-20 | 2017-11-03 |  |  | MH-Wtg [58.49 h] | 26,321 | 26,321 | 003 |
| A125700 |  | Plumbing & sanitary work | 10d | 2018-01-01 | 2018-01-12 | A125690 FS-5d |  |  |  | 160d |  | MH-Wtg [58.49 h] | 26,321 |  | 003 |
| A125720 |  | Painting work | 10d | 2018-01-01 | 2018-01-12 | A125650 |  |  |  | 160d |  | MH-Wtg [58.49 h] | 26,321 |  | 003 |
|  | 3 | **Electrical Installation** |  | 2017-12-12 | 2017-12-30 |  |  |  |  |  |  |  |  |  |  |
| A125580 |  | Cable tray installation | 4d | 2017-12-12 A | 2017-12-16 A | A125610 | 100% | 2017-12-12 | 2017-12-15 |  |  | MH-Wtg [51.99 h] | 23,396 | 23,396 | 003 |
| A125590 |  | Cable laying | 5d | 2017-12-18 A | 2017-12-22 A | A125580 | 100% |  |  |  |  | MH-Wtg [64.99 h] | 29,246 | 29,246 | 003 |
| A125600 |  | Glanding and termination | 3d | 2017-12-23 A | 2017-12-27 A | A125590 | 100% | 2017-12-25 | 2017-12-27 |  |  | MH-Wtg [64.99 h] | 29,246 | 29,246 | 003 |
| A125610 |  | Installation of light fittings | 3d | 2017-12-27 A | 2017-12-30 A | A125710 | 100% | 2017-12-27 | 2017-12-29 |  |  | MH-Wtg [77.99 h] | 35,096 | 35,096 | 003 |

| ID | WBS | Activity | Duration | Start | Finish | Predecessors | Total float | Free float | Resources | Cost | UNIT DESCRIPTION |
| --- | --- | --- | --- | --- | --- | --- | --- | --- | --- | --- | --- |
|  | 48 | **B123- Ammonia Scrubber** |  | 2018-02-27 | 2018-08-07 |  |  |  |  |  |  |
|  | 1 | **Civil & Structural Work** |  | 2018-02-27 | 2018-07-12 |  |  |  |  |  |  |
| A113180 |  | RCC/Civil construction work | 25d | 2018-02-27 | 2018-04-02 | A126580 | 51d | 0d | MH-Wtg [180 h] | 81,000 | 003 |
| A113170 |  | Equipment foundations | 15d | 2018-04-03 | 2018-04-23 | A113180, A126590 | 51d | 13d | MH-Wtg [95.24 h] | 42,858 | 003 |
| A113190 |  | Structural steel erection | 20d | 2018-04-03 | 2018-04-30 | A113180 | 51d | 0d | MH-Wtg [220 h] | 99,000 | 003 |
| A113210 |  | Painting work | 10d | 2018-06-29 | 2018-07-12 | A113240 SS | 79d |  | MH-Wtg [47.62 h] | 21,429 | 003 |
|  | 2 | **Mechanical Erection & Piping** |  | 2018-05-11 | 2018-08-02 |  |  |  |  |  |  |
| A113220 |  | Equipment installation | 20d | 2018-05-11 | 2018-06-07 | A113220.1 FF, A113170 | 38d | 0d | MH-Wtg [140 h] | 63,000 | 003 |
| A113220.1 |  | Installation of Ammonia scrubber | 15d | 2018-05-18 | 2018-06-07 | 119590, A113190 | 38d | 0d |  |  | 003 |
| A113230 |  | Piping erection | 20d | 2018-06-08 | 2018-07-05 | A113190, A113220 | 38d | 0d | MH-Wtg [180 h] | 81,000 | 003 |
| A113240 |  | Testing and boxup | 15d | 2018-06-29 | 2018-07-19 | A113230 FS-5d | 38d | 0d | MH-Wtg [110 h] | 49,500 | 003 |
| A113250 |  | Insulation of equipments and piping | 15d | 2018-07-13 | 2018-08-02 | A113240 FS-5d | 41d |  | MH-Wtg [95.24 h] | 42,858 | 003 |
| A113260 |  | Painting work | 10d | 2018-07-20 | 2018-08-02 | A113240 | 56d |  | MH-Wtg [47.62 h] | 21,429 | 003 |
|  | 3 | **Electrical Installation** |  | 2018-05-01 | 2018-06-14 |  |  |  |  |  |  |
| A113270 |  | Cable tray installation | 15d | 2018-05-01 | 2018-05-21 | A113190 | 76d | 0d | MH-Wtg [45 h] | 20,250 | 003 |
| A113320 |  | Earthing work | 8d | 2018-05-08 | 2018-05-17 | A113270 FS-10d | 96d |  | MH-Wtg [20 h] | 9,000 | 003 |
| A113280 |  | Cable laying | 10d | 2018-05-15 | 2018-05-28 | A113270 FS-5d | 76d | 0d | MH-Wtg [60 h] | 27,000 | 003 |
| A113290 |  | Installation of electrical items | 5d | 2018-05-29 | 2018-06-04 | A113280 | 76d | 0d | MH-Wtg [40 h] | 18,000 | 003 |
| A113300 |  | Glanding and termination | 8d | 2018-06-05 | 2018-06-14 | A113290 | 76d |  | MH-Wtg [45 h] | 20,250 | 003 |
| A113310 |  | Installation of light fittings | 5d | 2018-06-05 | 2018-06-11 | A113290 | 79d |  | MH-Wtg [25 h] | 11,250 | 003 |
|  | 4 | **Instrument Installation** |  | 2018-05-01 | 2018-08-07 |  |  |  |  |  |  |
| A113330 |  | Cable tray installation | 15d | 2018-05-01 | 2018-05-21 | A113270 SS | 84d | 0d | MH-Wtg [40 h] | 18,000 | 003 |
| A113340 |  | Cable laying | 10d | 2018-05-15 | 2018-05-28 | A113330 FS-5d | 84d | 46d | MH-Wtg [60 h] | 27,000 | 003 |
| A113350 |  | Installation of JBs and Air headers | 5d | 2018-05-22 | 2018-05-28 | A113330 | 84d | 46d | MH-Wtg [15 h] | 6,750 | 003 |
| A113360 |  | Installation of instruments | 10d | 2018-07-06 | 2018-07-19 | A113240 FF | 38d | 0d | MH-Wtg [20 h] | 9,000 | 003 |
| A113370 |  | Glanding and termination | 8d | 2018-07-20 | 2018-07-31 | A113340 FF, A113350 FF, A113360 | 38d | 0d | MH-Wtg [30 h] | 13,500 | 003 |
| A113380 |  | Hookup of instruments | 8d | 2018-07-20 | 2018-07-31 | A113360 FF, A113240 | 43d | 5d | MH-Wtg [15 h] | 6,750 | 003 |
| A113390 |  | Testing & calibration | 5d | 2018-08-01 | 2018-08-07 | A113380 FF, A113370 | 38d |  | MH-Wtg [10 h] | 4,500 | 003 |

| ID | WBS | Activity | Duration | Start | Finish | Predecessors | Complete | Remaining | Planned start | Planned finish | Total float | Free float | Constraint | Calendar | Resources | Cost | Actual cost | UNIT DESCRIPTION |
| --- | --- | --- | --- | --- | --- | --- | --- | --- | --- | --- | --- | --- | --- | --- | --- | --- | --- | --- |
|  | 40 | **BXXX- Fire Hydrant & Cooling Water Network** |  | 2018-01-15 | 2018-07-02 |  |  |  |  |  |  |  |  |  |  |  |  |  |
| A100000 |  | Installation of UG/AG fire hydrant network | 120d | 2018-01-15 | 2018-07-02 | A100010 FF+20d, A100050 FF+20d |  |  |  |  | 33d | 0d | start on or after 2018-01-15 |  | MH-Wtg [2180 h] | 981,000 |  | 003 |
| A100050 |  | Pedestals for fire hydrant network | 60d | 2018-01-25 | 2018-04-19 |  |  |  |  |  | 65d | 32d | start on or after 2018-01-25 |  | MH-Wtg [670 h] | 301,500 |  | 003 |
| A100050.1 |  | Hume pipe laying for road crossings | 60d | 2018-02-13 | 2018-05-08 | A100000 FF-40d |  |  |  |  | 127d |  |  |  |  |  |  | 003 |
| A100040 |  | UG/AG cooling water headers | 60d | 2018-02-27 | 2018-05-21 | 113190 FS+10d, 115940 SS+40d |  |  |  |  | 70d |  |  |  | MH-Wtg [1870 h] | 841,500 |  | 003 |
|  | 47 | **BXXX- Road/Drains/Culverts & Trenches** |  | 2017-06-06 | 2018-06-18 |  |  |  |  |  |  |  |  |  |  |  |  |  |
| A100010 |  | Construction of WBM roads | 151d | 2017-06-06 A | 2018-02-26 | 113121 FS+10d, 103200, 113112.1 FS+10d | 74% | 40d | 2017-06-07 | 2018-02-26 | 103d | 0d |  | Monsoon | MH-Wtg [1559.8 h] | 701,910 | 515,974 | 003 |
| A100020 |  | Construction of drains & culverts | 184d | 2017-07-10 A | 2018-03-26 | 103220, A100010 FS-26d | 67% | 60d |  |  | 97d | 0d |  |  | MH-Wtg [1559.8 h] | 701,910 | 473,026 | 003 |
| A100060 |  | Construction of RCC trenches (Deleted) | 40d | 2018-01-01 | 2018-02-26 | A100020 FS-60d |  |  |  |  | 177d |  |  |  | MH-Wtg |  |  | 003 |
| A100030 |  | Construction of RCC roads (Deleted) | 60d | 2018-03-27 | 2018-06-18 | A100020 |  |  |  |  | 97d |  |  |  | MH-Wtg |  |  | 003 |
|  | 37 | **BXXX- Compound Wall & Hardstrata** |  | 2017-04-19 | 2018-01-29 |  |  |  |  |  |  |  |  |  |  |  |  |  |
| A125730 |  | Piling work | 78d | 2017-04-19 A | 2017-08-05 A | 113111 FS+10d | 100% |  | 2017-04-19 | 2017-08-04 |  |  |  |  | MH-Wtg [520 h] | 234,000 | 234,000 | 003 |
| A125740 |  | Pile caps | 70d | 2017-05-03 A | 2017-08-08 A | A125730 FS-25d | 100% |  |  |  |  |  |  |  | MH-Wtg [260 h] | 117,000 | 117,000 | 003 |
| A125770 |  | Precasting of panels | 63d | 2017-05-12 A | 2017-08-08 A | A125730 FS-20d | 100% |  |  |  |  |  |  |  | MH-Wtg [520 h] | 234,000 | 234,000 | 003 |
| A125750 |  | Plinth beam | 64d | 2017-05-14 A | 2017-08-10 A | A125740 FS-10d | 100% |  | 2017-05-15 | 2017-08-10 |  |  |  |  | MH-Wtg [260 h] | 117,000 | 117,000 | 003 |
| A125810 |  | Construction of Hardstrata | 22d | 2017-05-16 A | 2017-06-14 A | A125740 SS | 100% |  |  |  |  |  |  |  | MH-Wtg [480 h] | 216,000 | 216,000 | 003 |
| A125760 |  | RCC columns | 61d | 2017-05-18 A | 2017-08-10 A | A125750 FS-10d | 100% |  |  |  |  |  |  |  | MH-Wtg [390 h] | 175,500 | 175,500 | 003 |
| A125780 |  | Installation of precast panel | 67d | 2017-05-24 A | 2017-08-25 A | A125760 FS-15d, A125770 SS+15d | 100% |  |  |  |  |  |  |  | MH-Wtg [390 h] | 175,500 | 175,500 | 003 |
| A125790 |  | Concertina fencing installation | 115d | 2017-08-04 A | 2018-01-12 | A125780 FS-20d | 91% | 10d |  |  | 150d | 0d |  |  | MH-Wtg [260 h] | 117,000 | 106,826 | 003 |
| A125800 |  | Installation of gates | 10d | 2018-01-15 | 2018-01-29 | A125790 |  |  |  |  | 150d |  |  |  | MH-Wtg [120 h] | 54,000 |  | 003 |
|  | 29 | **BXXX- Construction Power** |  | 2017-07-03 | 2018-01-19 |  |  |  |  |  |  |  |  |  |  |  |  |  |
| A125991 |  | Civil work for Transformer foundation | 12d | 2017-07-03 A | 2017-07-18 A | A126040, A126050 | 100% |  |  |  |  |  |  |  |  |  |  | 003 |
| A125992 |  | Civil work for ICOG Panel | 12d | 2017-07-03 A | 2017-07-18 A | A126050 | 100% |  |  |  |  |  |  |  |  |  |  | 003 |
| A125993 |  | Installation of Transformers | 2d | 2017-08-03 A | 2017-08-05 A | A125991 FS+10d, A126000 SF | 100% |  | 2017-08-03 | 2017-08-04 |  |  |  |  |  |  |  | 003 |
| A125994 |  | Installation of ICOG Panel | 4d | 2017-08-05 A | 2017-08-10 A | A125992 FS+10d | 100% |  | 2017-08-07 | 2017-08-10 |  |  |  |  |  |  |  | 003 |
| A125992.1 |  | Civil work for High mast lighting | 25d | 2017-09-04 A | 2017-10-07 A |  | 100% |  | 2017-09-04 | 2017-10-06 |  |  |  |  |  |  |  | 003 |
| A125990 |  | Civil work for Compact Substation | 16d | 2017-09-13 A | 2017-10-04 A | 118420 FS-22d | 100% |  |  |  |  |  |  |  |  |  |  | 003 |
| A126000 |  | Installation of Compact Substation | 4d | 2017-11-10 A | 2017-11-15 A | A125990 FS+7d, 113580.2 FS+10d | 100% |  |  |  |  |  |  |  |  |  |  | 003 |
| A126010 |  | HT Cable laying | 3d | 2017-11-15 A | 2017-11-18 A | A126000 SS | 100% |  | 2017-11-15 | 2017-11-17 |  |  |  |  |  |  |  | 003 |
| A126030 |  | LT Cable laying (UG) | 5d | 2017-11-18 A | 2017-11-25 A | A126020 | 100% |  | 2017-11-20 | 2017-11-24 |  |  |  |  |  |  |  | 003 |
| A126000.1 |  | Installation of High mast lighting | 40d | 2017-11-27 A | 2018-01-19 | A125992.1 | 62% | 15d |  |  | 202d |  |  |  |  |  |  | 003 |
| A126020 |  | Installation of Distribution boards | 3d | 2017-11-28 A | 2017-11-30 A | A126000 | 100% |  |  |  |  |  |  |  |  |  |  | 003 |

Notes:
- A100020: Explanation: Consider 30% wtg for / culvert
- A126000: Explanation: Dates not available. Only tentative / intallation dates
- A126010: Explanation: Dates not available. Only tentative / intallation dates
- A126030: Explanation: Dates not available. Only tentative / intallation dates
- A126000.1: Explanation: Dates not available. Only tentative / intallation dates
- A126020: Explanation: Dates not available. Only tentative / intallation dates

| ID | WBS | Activity | Type | Duration | Start | Finish | Predecessors | Total float | Free float | Constraint | Resources | Cost | UNIT DESCRIPTION |
| --- | --- | --- | --- | --- | --- | --- | --- | --- | --- | --- | --- | --- | --- |
|  | 5 | **Mechanical Clearence & Handover** |  |  | 2018-06-28 | 2018-10-31 |  |  |  |  |  |  |  |
|  | 1 | **Operation & Maint. Checklist/Mechanical Completion** |  |  | 2018-06-28 | 2018-10-31 |  |  |  |  |  |  |  |
| 120665.9 |  | OOMCL & MCC of Air system |  | 28d | 2018-06-28 | 2018-08-06 | A116490 FF, A116640, A116650, A116670 FF, A116720 FF, A116730, A116740, A116750, A116760, A116770, A116780, A116790, A116800, A116810, A116820, A116830, A116840, A116850 | 0d | 62d | finish on 2018-08-06 | MH-Wtg [203.82 h] | 91,719 | 003 |
| 120665.8 |  | OOMCL & MCC of Chilled water system |  | 45d | 2018-07-16 | 2018-09-14 | A116880, A116900 FF, A116940, A116950 FF, A116990, A117000, A117010, A117080, A117130 FF, A117170, A117180 FF, A117220, A117230, A117240, A117310 | 0d | 33d | finish on 2018-09-14 | MH-Wtg [203.82 h] | 91,719 | 003 |
| 120665.4 |  | OOMCL & MCC of Raw water system |  | 10d | 2018-07-30 | 2018-08-10 | A118110 FF, A118150, A118240 | 0d | 58d | finish on 2018-08-10 | MH-Wtg [203.82 h] | 91,719 | 003 |
| 120665.5 |  | OOMCL & MCC of Teated water system |  | 10d | 2018-08-02 | 2018-08-15 | A118260, A118340 FF, A118380, A118390, A118400, A118470, A118950 | 0d | 55d | finish on 2018-08-15 | MH-Wtg [203.82 h] | 91,719 | 003 |
| 120666 |  | OOMCL & MCC of DM water system |  | 10d | 2018-08-07 | 2018-08-20 | A119190, A119210 FF, A119260 FF, A119300, A119310, A119320, A119390, A119490 FF, A119530, A119550, A119620 | 0d | 52d | finish on 2018-08-20 | MH-Wtg [203.82 h] | 91,719 | 003 |
| 120666.1 |  | OOMCL & MCC of Power generation system |  | 30d | 2018-08-15 | 2018-09-25 | A117600 FF, A117640, A117650 FF, A117690, A117700, A117710, A117780, A120360 FF, A120450, A120460, A120470, A117810, A117830 FF, A117870, A117880 FF, A117920, A117930, A117940, A118010, 115350 FF+15d, A117560.2 | 0d | 26d | finish on 2018-09-25 | MH-Wtg [679.4 h] | 305,730 | 003 |
| 120665.6 |  | OOMCL & MCC of Fire water system |  | 10d | 2018-08-17 | 2018-08-30 | A118720, A118700, A100000, A118570 FF, A118610, A118620, A118630 | 0d | 44d | finish on 2018-08-30 | MH-Wtg [339.7 h] | 152,865 | 003 |
| 120665.2 |  | OOMCL & MCC of CNA Plant |  | 10d | 2018-08-20 | 2018-08-31 | A113440, A113450 FF, A113490, A113500 FF, A113540, A113550, A113560, A113630, A113660, A113680 FF, A113720, A113730 FF, A113770, A113780, A113790, A113860, 119590.97 FF+20d | 0d | 43d | finish on 2018-08-31 | MH-Wtg [679.4 h] | 305,730 | 002 |
| 120666.3 |  | OOMCL & MCC of Effluent treatment system |  | 10d | 2018-08-20 | 2018-08-31 | A120800, A120810, A120820 FF, A120870 FF, A120910, A120920, A120930, A121000 | 0d | 43d | finish on 2018-08-31 | MH-Wtg [203.82 h] | 91,719 | 003 |
| 120665.7 |  | OOMCL & MCC of Cooling water system |  | 10d | 2018-08-28 | 2018-09-10 | A119720 FF, A119760, A119770, A119780, A119850, A100040 | 0d | 37d | finish on 2018-09-10 | MH-Wtg [339.7 h] | 152,865 | 003 |
| 120666.5 |  | OOMCL & MCC of General & miscellaneous buildings |  | 10d | 2018-08-28 | 2018-09-10 | A124840, A124860, A121380, A124950, A124970, A121840, A122190, A122300, A125160, A125190 FF, A125210, A125350, A125250, A125480, A125380, A125570, A123910, A125700, A125720, A125600, A125800, A125810, 114230 FF+30d | 0d | 37d | finish on 2018-09-10 | MH-Wtg [543.52 h] | 244,584 | 003 |
| 120666.2 |  | OOMCL & MCC of Power distribution system |  | 15d | 2018-09-20 | 2018-10-10 | A124551, A124570 FF, A124620, A124630, A124640 | 0d | 15d | finish on 2018-10-10 | MH-Wtg [407.64 h] | 183,438 | 003 |
| 120666.4 |  | OOMCL & MCC of Control system |  | 15d | 2018-09-25 | 2018-10-15 | A124730, A124750 FF, A121140, A121210, 118340 FF+20d, 118410 FF+15d, 119320 FF+15d, A113130, A117690, A115450, A118610, 118340.1 FF+15d | 0d | 12d | finish on 2018-10-15 | MH-Wtg [407.64 h] | 183,438 | 003 |
| 120665.3 |  | OOMCL & MCC of Offsite storages |  | 15d | 2018-10-01 | 2018-10-19 | A113890, A113900, A113910 FF, A113960 FF, A114000, A114010, A114020, A114090, A114130, A114140 FF, A114180, A114190 FF, A114230, A114240, A114250, A114320, A114340, A114420 FF, A114460, A114470, A114480, A114550, A114590, A114600 FF, A114650 FF, A114690, A114710, A114780, A114820, A114830 FF, A114880 FF, A114920, A114940, A115010, A115050, A115060 FF, A115110 FF, A115150, A115160, A115170, A115240, A115280 FF, A115330, A115340 FF, A115380, A115390, A115400, A115470, A115510, A115520 FF, A115570 FF, A115610, A115630, A115700, A115740, A115750 FF, A115800 FF, A115840, A115850, A115860, A115930, A115970, A115980 FF, A116030 FF, A116070, A116090, A116160, A116210 FF, A116250, A116260 FF, A116300, A116320, A116390, A123360 FF, A123410 FF, A123430, A123470, A123490, A123400, A113250, A113260 FF, A113300, A113310, A113320, A113390 | 0d | 8d | finish on 2018-10-19 | MH-Wtg [815.28 h] | 366,876 | 003 |
| 120665.1 |  | OOMCL & MCC of WNA Plant |  | 20d | 2018-10-04 | 2018-10-31 | A112960, A112970 FF, A113010, A113020 FF, A113070, A113080, A113150, A113060, A113210 FF | 0d |  | finish on 2018-10-31 | MH-Wtg [1358.8 h] | 611,460 | 002 |
|  | 2 | **Commencement of Commissioning** |  |  | 2018-10-31 | 2018-10-31 |  |  |  |  |  |  |  |
| A125820 |  | Mechanical Completion & Ready for Commissioning | milestone | 0d | 2018-10-31 | 2018-10-31 | 120665.1 FF, 120665.2 FF, 120665.3 FF, 120665.4 FF, 120665.5 FF, 120665.6 FF, 120665.7 FF, 120665.8 FF, 120665.9 FF, 120666 FF, 120666.1 FF, 120666.2 FF, 120666.3 FF, 120666.4 FF | 0d |  | finish on 2018-10-31 |  |  |  |

## Activity codes

| Code | Value | Meaning |
| --- | --- | --- |
| UNIT DESCRIPTION | 001 | WNA PLANT |
| UNIT DESCRIPTION | 002 | CNA PLANTS |
| UNIT DESCRIPTION | 003 | OSBL & UTILITIES |
